# Harbour Point District Cooling Plant DCP-03

How a schedule from Primavera P6 changed from version to version. A marks actual dates.

## Version 1 (data date 2024-01-08, saved 2024-01-08, file Harbour Point DCP-03 - Baseline Programme Rev 0.xer)

Note of the change: Two copies by design: NVIDIA-free AWS package; dev copy untouched

| ID | WBS | Task | Duration | Start | Finish | Predecessors | Total float |
| --- | --- | --- | --- | --- | --- | --- | --- |
|  | ENG | **Engineering & Design** |  | 2024-01-08 | 2024-05-27 |  |  |
|  | CONCEPT | **Concept & Approvals** |  | 2024-01-08 | 2024-03-04 |  |  |
| E-1000 |  | Notice to Proceed | 0d | 2024-01-08 | 2024-01-08 |  | 0d |
| E-1010 |  | Mobilise Design Team & Design Kick-off | 10d | 2024-01-09 | 2024-01-22 | E-1000 | 0d |
| E-1020 |  | Concept Design & Basis of Design | 20d | 2024-01-23 | 2024-02-19 | E-1010 | 0d |
| E-1030 |  | Employer Review & Comment - Concept Design | 10d | 2024-02-20 | 2024-03-04 | E-1020 | 0d |
|  | DETAIL | **Detailed Design & IFC** |  | 2024-03-05 | 2024-05-27 |  |  |
| E-1040 |  | Detailed Design - Chiller Plant Mechanical | 30d | 2024-03-05 | 2024-04-18 | E-1030 | 0d |
| E-1050 |  | Detailed Design - Electrical, LV & Controls | 25d | 2024-03-05 | 2024-04-11 | E-1030 | 5d |
| E-1060 |  | Consultant Review & Approval - Detailed Design | 15d | 2024-04-19 | 2024-05-09 | E-1040, E-1050 | 0d |
| E-1070 |  | Issue IFC Drawings - Mechanical Package | 12d | 2024-05-10 | 2024-05-27 | E-1060 | 0d |
| E-1075 |  | Issue IFC Drawings - Electrical Package | 10d | 2024-05-10 | 2024-05-23 | E-1060 | 2d |
| E-1090 |  | Builder's Work & Openings Information Issued | 8d | 2024-05-10 | 2024-05-21 | E-1060 | 129d |
| E-1080 |  | Design Freeze - IFC Drawings Issued | 0d | 2024-05-27 | 2024-05-27 | E-1070, E-1075 | 0d |
|  | PROC | **Procurement** |  | 2024-05-24 | 2024-12-31 |  |  |
|  | CHILLER | **Chiller Package (Long Lead)** |  | 2024-05-28 | 2024-12-31 |  |  |
| P-2000 |  | Chiller Package - Tender & Technical Evaluation | 20d | 2024-05-28 | 2024-06-26 | E-1080 | 0d |
| P-2010 |  | Chiller Package - Award & Purchase Order | 10d | 2024-06-27 | 2024-07-10 | P-2000 | 0d |
| P-2020 |  | Chiller - Vendor Drawings & Approval | 25d | 2024-07-11 | 2024-08-14 | P-2010 | 0d |
| P-2030 |  | Chiller - Manufacture & Assembly | 90d | 2024-08-15 | 2024-11-12 | P-2020 | 0d |
| P-2040 |  | Chiller - Factory Acceptance Testing | 10d | 2024-11-13 | 2024-11-26 | P-2030 | 0d |
| P-2050 |  | Chiller - Shipping & Delivery to Site | 35d | 2024-11-27 | 2024-12-31 | P-2040 | 0d |
| P-2060 |  | Chillers Delivered to Site | 0d | 2024-12-31 | 2024-12-31 | P-2050 | 0d |
|  | SECOND | **Secondary Packages** |  | 2024-05-24 | 2024-08-01 |  |  |
| P-2100 |  | LV Switchgear - Procure & Deliver | 70d | 2024-05-24 | 2024-08-01 | E-1075 | 179d |
| P-2130 |  | BMS & Controls Package - Procure & Deliver | 55d | 2024-05-24 | 2024-07-17 | E-1075 | 246d |
| P-2110 |  | Chilled Water Pumps - Procure & Deliver | 60d | 2024-05-28 | 2024-07-26 | E-1070 | 353d |
| P-2120 |  | Pipework, Valves & Fittings - Procure & Deliver | 45d | 2024-05-28 | 2024-07-11 | E-1070 | 186d |
| P-2140 |  | Cooling Towers - Procure & Deliver | 65d | 2024-05-28 | 2024-07-31 | E-1070 | 342d |
| P-2150 |  | Standby Chiller Package - Procure & Deliver | 40d | 2024-05-28 | 2024-07-06 | E-1070 | 432d |
|  | CONST | **Construction & Installation** |  | 2024-01-09 | 2025-04-21 |  |  |
|  | CIVIL | **Civil & Structural** |  | 2024-01-09 | 2025-04-16 |  |  |
| C-3000 |  | Site Establishment & Temporary Works | 15d | 2024-01-09 | 2024-01-25 | E-1000 | 183d |
| C-3010 |  | Plant Room Civil Works & Equipment Plinths | 25d | 2024-05-22 | 2024-06-21 | C-3000, E-1090 | 155d |
| C-3250 |  | Access Platforms, Ladders & Handrails | 10d | 2024-06-22 | 2024-07-03 | C-3010 | 245d |
| C-3240 |  | Plant Room Painting & Finishes | 8d | 2025-04-08 | 2025-04-16 | C-3050 | 4d |
|  | MECH | **Mechanical Installation** |  | 2024-06-22 | 2025-04-21 |  |  |
| C-3230 |  | HVAC Ductwork & Plant Room Ventilation | 20d | 2024-06-22 | 2024-07-15 | C-3010 | 235d |
| C-3210 |  | Chilled Water Pump Installation | 15d | 2024-07-27 | 2024-08-13 | P-2110, C-3010 | 295d |
| C-3200 |  | Cooling Tower Installation & Alignment | 20d | 2024-08-01 | 2024-08-23 | P-2140, C-3010 | 286d |
| C-3020 |  | Chiller Offloading, Rigging & Setting to Position | 10d | 2025-01-02 | 2025-01-13 | P-2060, C-3010 | 0d |
| C-3030 |  | Primary Chilled Water Pipework Installation | 35d | 2025-01-14 | 2025-02-22 | C-3020, P-2120 | 0d |
| C-3040 |  | Chiller Mechanical Connections & Valve Sets | 20d | 2025-02-24 | 2025-03-18 | C-3030 | 0d |
| C-3050 |  | Pipework Insulation & Identification | 15d | 2025-03-19 | 2025-04-07 | C-3040 | 0d |
| C-3060 |  | Pipework Flushing & Chemical Cleaning | 12d | 2025-04-08 | 2025-04-21 | C-3050 | 0d |
| C-3070 |  | Mechanical Completion | 0d | 2025-04-21 | 2025-04-21 | C-3060, C-3130, C-3230, C-3240, C-3250 | 0d |
|  | ELEC | **Electrical & Controls Installation** |  | 2024-06-22 | 2024-10-22 |  |  |
| C-3100 |  | Electrical Containment & Cable Tray Installation | 30d | 2024-06-22 | 2024-07-26 | C-3010 | 155d |
| C-3220 |  | Fire Protection & Detection Installation | 18d | 2024-06-22 | 2024-07-12 | C-3010 | 324d |
| C-3110 |  | LV Switchgear Installation & Alignment | 20d | 2024-08-02 | 2024-08-24 | C-3100, P-2100 | 150d |
| C-3120 |  | Power Cabling, Glanding & Termination | 25d | 2024-08-26 | 2024-09-23 | C-3110 | 150d |
| C-3130 |  | BMS Field Devices & Control Wiring | 25d | 2024-09-24 | 2024-10-22 | C-3120, P-2130 | 150d |
|  | TCS | **Testing, Commissioning & Snagging** |  | 2024-07-13 | 2025-08-12 |  |  |
| T-4110 |  | Fire System Testing & Certification | 8d | 2024-07-13 | 2024-07-22 | C-3220 | 324d |
| T-4100 |  | Secondary Systems Testing - Towers & Pumps | 10d | 2024-08-24 | 2024-09-04 | C-3200, C-3210 | 286d |
| T-4000 |  | Static & Pressure Testing | 12d | 2025-04-22 | 2025-05-05 | C-3070 | 0d |
| T-4010 |  | Energisation & Pre-Commissioning Checks | 10d | 2025-05-06 | 2025-05-16 | T-4000 | 0d |
| T-4020 |  | Chiller Commissioning - Vendor Attendance | 20d | 2025-05-17 | 2025-06-11 | T-4010 | 0d |
| T-4030 |  | Integrated System & Performance Testing | 15d | 2025-06-12 | 2025-06-28 | T-4020 | 0d |
| T-4040 |  | Snagging Inspection - Client & Consultant | 10d | 2025-06-30 | 2025-07-10 | T-4030 | 0d |
| T-4050 |  | Snag Rectification Works | 20d | 2025-07-11 | 2025-08-02 | T-4040 | 0d |
| T-4060 |  | Re-inspection & Snag Close-out | 8d | 2025-08-04 | 2025-08-12 | T-4050 | 0d |
| T-4070 |  | Systems Accepted - Commissioning Complete | 0d | 2025-08-12 | 2025-08-12 | T-4060, T-4100, T-4110 | 0d |
|  | HAND | **Handover & Close-out** |  | 2025-06-30 | 2025-09-11 |  |  |
| H-5000 |  | O&M Manuals & As-Built Drawings Submission | 20d | 2025-06-30 | 2025-07-25 | T-4030 | 12d |
| H-5010 |  | Operator Training | 10d | 2025-08-13 | 2025-08-26 | T-4070 | 12d |
| H-5020 |  | Authority Inspection & Approval | 12d | 2025-08-13 | 2025-08-28 | T-4070, H-5000 | 0d |
| H-5045 |  | Spares & Special Tools Handover | 8d | 2025-08-13 | 2025-08-22 | T-4070 | 14d |
| H-5030 |  | Taking-Over Certificate Documentation | 10d | 2025-08-29 | 2025-09-11 | H-5020 | 0d |
| H-5040 |  | Substantial Completion & Taking Over | 0d | 2025-09-11 | 2025-09-11 | H-5030, H-5010, H-5045 | 0d |

| ID | WBS | Task | Duration | Start | Finish | Predecessors | Total float |
| --- | --- | --- | --- | --- | --- | --- | --- |
|  | PM | **Project Management** |  | 2024-01-08 | 2025-05-09 |  |  |
| Z-9000 |  | Project Management & Site Supervision | 340d | 2024-01-08 | 2025-05-09 | E-1000 SS | 88d |
| Z-9010 |  | Site Facilities, Welfare & Security | 330d | 2024-01-09 | 2025-02-05 | C-3000 SS | 183d |

## Version 2 (data date 2025-09-01, saved 2025-12-12, file Harbour Point DCP-03 - Update Programme Rev 8.xer)

Note of the change: Ship the Harbour Point demo XERs: the gitignore allowlist still named the removed files

Last finish 2025-09-11 → 2025-12-12 (+92d). Complete tasks 0 → 50.

Added:

| ID | Task | Duration | Start | Finish | Predecessors | Resources |
| --- | --- | --- | --- | --- | --- | --- |
| C-3035 | Additional Pipework - Revised Chiller Layout (VO-07) | 8d | 2025-04-10 A | 2025-04-18 A | C-3030 | Mechanical Fitter [320 h] |
| T-4055 | Second Snag Rectification Pass | 6d | 2025-10-07 | 2025-10-13 | T-4050 | Mechanical Fitter [120 h] |

Removed: P-2150 Standby Chiller Package - Procure & Deliver

Changed:

| ID | Task | Start | Finish | Duration | Complete | Total float | Predecessors |
| --- | --- | --- | --- | --- | --- | --- | --- |
| ENG | **Engineering & Design** |  | 2024-05-27 → 2024-06-24 (+28d) |  |  |  |  |
| CONCEPT | **Concept & Approvals** |  | 2024-03-04 → 2024-03-14 (+10d) |  |  |  |  |
| E-1000 | Notice to Proceed | 2024-01-08 A | 2024-01-08 A |  | 0% → 100% | 0d → none |  |
| E-1010 | Mobilise Design Team & Design Kick-off | 2024-01-09 A | 2024-01-22 A |  | 0% → 100% | 0d → none |  |
| E-1020 | Concept Design & Basis of Design | 2024-01-23 A | 2024-02-19 A |  | 0% → 100% | 0d → none |  |
| E-1030 | Employer Review & Comment - Concept Design | 2024-02-20 A | 2024-03-04 → 2024-03-14 A (+10d) |  | 0% → 100% | 0d → none |  |
| DETAIL | **Detailed Design & IFC** | 2024-03-05 → 2024-03-15 (+10d) | 2024-05-27 → 2024-06-24 (+28d) |  |  |  |  |
| E-1040 | Detailed Design - Chiller Plant Mechanical | 2024-03-05 → 2024-03-15 A (+10d) | 2024-04-18 → 2024-05-02 A (+14d) | 30d → 32d | 0% → 100% | 0d → none |  |
| E-1050 | Detailed Design - Electrical, LV & Controls | 2024-03-05 → 2024-03-15 A (+10d) | 2024-04-11 → 2024-04-29 A (+18d) |  | 0% → 100% | 5d → none |  |
| E-1060 | Consultant Review & Approval - Detailed Design | 2024-04-19 → 2024-05-03 A (+14d) | 2024-05-09 → 2024-05-23 A (+14d) |  | 0% → 100% | 0d → none |  |
| E-1070 | Issue IFC Drawings - Mechanical Package | 2024-05-10 → 2024-05-24 A (+14d) | 2024-05-27 → 2024-06-10 A (+14d) |  | 0% → 100% | 0d → none |  |
| E-1075 | Issue IFC Drawings - Electrical Package | 2024-05-10 → 2024-05-24 A (+14d) | 2024-05-23 → 2024-06-11 A (+19d) |  | 0% → 100% | 2d → none |  |
| E-1090 | Builder's Work & Openings Information Issued | 2024-05-10 → 2024-05-24 A (+14d) | 2024-05-21 → 2024-06-24 A (+34d) |  | 0% → 100% | 129d → none |  |
| E-1080 | Design Freeze - IFC Drawings Issued | 2024-05-27 → 2024-06-11 A (+15d) | 2024-05-27 → 2024-06-11 A (+15d) |  | 0% → 100% | 0d → none |  |
| PROC | **Procurement** | 2024-05-24 → 2024-06-11 (+18d) | 2024-12-31 → 2025-02-03 (+34d) |  |  |  |  |
| CHILLER | **Chiller Package (Long Lead)** | 2024-05-28 → 2024-06-12 (+15d) | 2024-12-31 → 2025-02-03 (+34d) |  |  |  |  |
| P-2000 | Chiller Package - Tender & Technical Evaluation | 2024-05-28 → 2024-06-12 A (+15d) | 2024-06-26 → 2024-07-11 A (+15d) |  | 0% → 100% | 0d → none |  |
| P-2010 | Chiller Package - Award & Purchase Order | 2024-06-27 → 2024-07-12 A (+15d) | 2024-07-10 → 2024-07-25 A (+15d) |  | 0% → 100% | 0d → none |  |
| P-2020 | Chiller - Vendor Drawings & Approval | 2024-07-11 → 2024-07-26 A (+15d) | 2024-08-14 → 2024-08-29 A (+15d) |  | 0% → 100% | 0d → none |  |
| P-2030 | Chiller - Manufacture & Assembly | 2024-08-15 → 2024-08-30 A (+15d) | 2024-11-12 → 2024-12-11 A (+29d) |  | 0% → 100% | 0d → none |  |
| P-2040 | Chiller - Factory Acceptance Testing | 2024-11-13 → 2024-12-12 A (+29d) | 2024-11-26 → 2024-12-25 A (+29d) |  | 0% → 100% | 0d → none |  |
| P-2050 | Chiller - Shipping & Delivery to Site | 2024-11-27 → 2024-12-26 A (+29d) | 2024-12-31 → 2025-02-03 A (+34d) |  | 0% → 100% | 0d → none |  |
| P-2060 | Chillers Delivered to Site | 2024-12-31 → 2025-02-03 A (+34d) | 2024-12-31 → 2025-02-03 A (+34d) |  | 0% → 100% | 0d → none |  |
| SECOND | **Secondary Packages** | 2024-05-24 → 2024-06-11 (+18d) | 2024-08-01 → 2024-08-30 (+29d) |  |  |  |  |
| P-2110 | Chilled Water Pumps - Procure & Deliver | 2024-05-28 → 2024-06-11 A (+14d) | 2024-07-26 → 2024-08-09 A (+14d) |  | 0% → 100% | 353d → none |  |
| P-2120 | Pipework, Valves & Fittings - Procure & Deliver | 2024-05-28 → 2024-06-11 A (+14d) | 2024-07-11 → 2024-07-25 A (+14d) |  | 0% → 100% | 186d → none |  |
| P-2140 | Cooling Towers - Procure & Deliver | 2024-05-28 → 2024-06-11 A (+14d) | 2024-07-31 → 2024-08-14 A (+14d) |  | 0% → 100% | 342d → none |  |
| P-2100 | LV Switchgear - Procure & Deliver | 2024-05-24 → 2024-06-12 A (+19d) | 2024-08-01 → 2024-08-30 A (+29d) |  | 0% → 100% | 179d → none |  |
| P-2130 | BMS & Controls Package - Procure & Deliver | 2024-05-24 → 2024-06-12 A (+19d) | 2024-07-17 → 2024-08-05 A (+19d) |  | 0% → 100% | 246d → none |  |
| CONST | **Construction & Installation** |  | 2025-04-21 → 2025-06-11 (+51d) |  |  |  |  |
| CIVIL | **Civil & Structural** |  | 2025-04-16 → 2025-06-04 (+49d) |  |  |  |  |
| C-3000 | Site Establishment & Temporary Works | 2024-01-09 A | 2024-01-25 A |  | 0% → 100% | 183d → none |  |
| C-3010 | Plant Room Civil Works & Equipment Plinths | 2024-05-22 → 2024-06-25 A (+34d) | 2024-06-21 → 2024-08-01 A (+41d) |  | 0% → 100% | 155d → none |  |
| C-3250 | Access Platforms, Ladders & Handrails | 2024-06-22 → 2024-08-02 A (+41d) | 2024-07-03 → 2024-08-13 A (+41d) |  | 0% → 100% | 245d → none |  |
| C-3240 | Plant Room Painting & Finishes | 2025-04-08 → 2025-05-27 A (+49d) | 2025-04-16 → 2025-06-04 A (+49d) |  | 0% → 100% | 4d → none |  |
| MECH | **Mechanical Installation** | 2024-06-22 → 2024-08-02 (+41d) | 2025-04-21 → 2025-06-11 (+51d) |  |  |  |  |
| C-3230 | HVAC Ductwork & Plant Room Ventilation | 2024-06-22 → 2024-08-02 A (+41d) | 2024-07-15 → 2024-08-24 A (+40d) |  | 0% → 100% | 235d → none |  |
| C-3210 | Chilled Water Pump Installation | 2024-07-27 → 2024-08-10 A (+14d) | 2024-08-13 → 2024-08-27 A (+14d) |  | 0% → 100% | 295d → none |  |
| C-3200 | Cooling Tower Installation & Alignment | 2024-08-01 → 2024-08-15 A (+14d) | 2024-08-23 → 2024-09-06 A (+14d) |  | 0% → 100% | 286d → none |  |
| C-3020 | Chiller Offloading, Rigging & Setting to Position | 2025-01-02 → 2025-02-04 A (+33d) | 2025-01-13 → 2025-02-14 A (+32d) |  | 0% → 100% | 0d → none |  |
| C-3030 | Primary Chilled Water Pipework Installation | 2025-01-14 → 2025-02-15 A (+32d) | 2025-02-22 → 2025-04-09 A (+46d) |  | 0% → 100% | 0d → none |  |
| C-3040 | Chiller Mechanical Connections & Valve Sets | 2025-02-24 → 2025-04-19 A (+54d) | 2025-03-18 → 2025-05-12 A (+55d) |  | 0% → 100% | 0d → none | C-3030 → C-3035 |
| C-3050 | Pipework Insulation & Identification | 2025-03-19 → 2025-05-09 A (+51d) | 2025-04-07 → 2025-05-26 A (+49d) |  | 0% → 100% | 0d → none |  |
| C-3060 | Pipework Flushing & Chemical Cleaning | 2025-04-08 → 2025-05-27 A (+49d) | 2025-04-21 → 2025-06-11 A (+51d) |  | 0% → 100% | 0d → none |  |
| C-3070 | Mechanical Completion | 2025-04-21 → 2025-06-11 A (+51d) | 2025-04-21 → 2025-06-11 A (+51d) |  | 0% → 100% | 0d → none |  |
| ELEC | **Electrical & Controls Installation** | 2024-06-22 → 2024-08-02 (+41d) | 2024-10-22 → 2024-12-11 (+50d) |  |  |  |  |
| C-3100 | Electrical Containment & Cable Tray Installation | 2024-06-22 → 2024-08-02 A (+41d) | 2024-07-26 → 2024-08-31 A (+36d) |  | 0% → 100% | 155d → none |  |
| C-3220 | Fire Protection & Detection Installation | 2024-06-22 → 2024-08-02 A (+41d) | 2024-07-12 → 2024-08-22 A (+41d) |  | 0% → 100% | 324d → none |  |
| C-3110 | LV Switchgear Installation & Alignment | 2024-08-02 → 2024-09-02 A (+31d) | 2024-08-24 → 2024-10-01 A (+38d) |  | 0% → 100% | 150d → none |  |
| C-3120 | Power Cabling, Glanding & Termination | 2024-08-26 → 2024-10-02 A (+37d) | 2024-09-23 → 2024-11-05 A (+43d) |  | 0% → 100% | 150d → none |  |
| C-3130 | BMS Field Devices & Control Wiring | 2024-09-24 → 2024-11-06 A (+43d) | 2024-10-22 → 2024-12-11 A (+50d) |  | 0% → 100% | 150d → none |  |
| TCS | **Testing, Commissioning & Snagging** | 2024-07-13 → 2024-08-23 (+41d) | 2025-08-12 → 2025-10-22 (+71d) |  |  |  |  |
| T-4110 | Fire System Testing & Certification | 2024-07-13 → 2024-08-23 A (+41d) | 2024-07-22 → 2024-08-31 A (+40d) |  | 0% → 100% | 324d → none |  |
| T-4100 | Secondary Systems Testing - Towers & Pumps | 2024-08-24 → 2024-09-07 A (+14d) | 2024-09-04 → 2024-09-18 A (+14d) |  | 0% → 100% | 286d → none |  |
| T-4000 | Static & Pressure Testing | 2025-04-22 → 2025-06-12 A (+51d) | 2025-05-05 → 2025-06-25 A (+51d) |  | 0% → 100% | 0d → none |  |
| T-4010 | Energisation & Pre-Commissioning Checks | 2025-05-06 → 2025-06-23 A (+48d) | 2025-05-16 → 2025-07-03 A (+48d) |  | 0% → 100% | 0d → none |  |
| T-4020 | Chiller Commissioning - Vendor Attendance | 2025-05-17 → 2025-07-04 A (+48d) | 2025-06-11 → 2025-08-04 A (+54d) |  | 0% → 100% | 0d → none |  |
| T-4030 | Integrated System & Performance Testing | 2025-06-12 → 2025-08-05 A (+54d) | 2025-06-28 → 2025-08-21 A (+54d) |  | 0% → 100% | 0d → none |  |
| T-4040 | Snagging Inspection - Client & Consultant | 2025-06-30 → 2025-08-22 A (+53d) | 2025-07-10 → 2025-09-02 (+54d) |  | 0% → 50% |  |  |
| T-4050 | Snag Rectification Works | 2025-07-11 → 2025-09-03 (+54d) | 2025-08-02 → 2025-10-06 (+65d) |  |  |  |  |
| T-4060 | Re-inspection & Snag Close-out | 2025-08-04 → 2025-10-14 (+71d) | 2025-08-12 → 2025-10-22 (+71d) |  |  |  | T-4050 → T-4055 |
| T-4070 | Systems Accepted - Commissioning Complete | 2025-08-12 → 2025-10-22 (+71d) | 2025-08-12 → 2025-10-22 (+71d) |  |  |  |  |
| HAND | **Handover & Close-out** | 2025-06-30 → 2025-08-22 (+53d) | 2025-09-11 → 2025-12-12 (+92d) |  |  |  |  |
| H-5000 | O&M Manuals & As-Built Drawings Submission | 2025-06-30 → 2025-08-22 A (+53d) | 2025-07-25 → 2025-09-18 (+55d) |  | 0% → 50% | 12d → 0d |  |
| H-5010 | Operator Training | 2025-08-13 → 2025-10-23 (+71d) | 2025-08-26 → 2025-11-05 (+71d) |  |  | 12d → 0d |  |
| H-5020 | Authority Inspection & Approval | 2025-08-13 → 2025-10-23 (+71d) | 2025-08-28 → 2025-11-21 (+85d) |  |  |  |  |
| H-5045 | Spares & Special Tools Handover | 2025-08-13 → 2025-10-23 (+71d) | 2025-08-22 → 2025-11-03 (+73d) |  |  | 14d → 0d |  |
| H-5030 | Taking-Over Certificate Documentation | 2025-08-29 → 2025-11-24 (+87d) | 2025-09-11 → 2025-12-12 (+92d) |  |  |  |  |
| H-5040 | Substantial Completion & Taking Over | 2025-09-11 → 2025-12-12 (+92d) | 2025-09-11 → 2025-12-12 (+92d) |  |  |  |  |
| Z-9000 | Project Management & Site Supervision | 2024-01-08 A | 2025-05-09 A |  | 0% → 100% | 88d → none |  |

| ID | Task | Start | Finish | Complete | Total float |
| --- | --- | --- | --- | --- | --- |
| Z-9010 | Site Facilities, Welfare & Security | 2024-01-09 A | 2025-02-05 A | 0% → 100% | 183d → none |

## Version 3 (data date 2025-12-12, saved 2025-12-12, file Harbour Point DCP-03 - As-Built Programme Rev 12.xer)

Note of the change: Two copies by design: NVIDIA-free AWS package; dev copy untouched

Last finish stays 2025-12-12. Complete tasks 50 → 61.

Changed:

| ID | Task | Start | Finish | Complete | Total float |
| --- | --- | --- | --- | --- | --- |
| T-4040 | Snagging Inspection - Client & Consultant |  | 2025-09-02 A | 50% → 100% | 0d → none |
| T-4050 | Snag Rectification Works | 2025-09-03 A | 2025-10-06 A | 0% → 100% | 0d → none |
| T-4055 | Second Snag Rectification Pass | 2025-10-07 A | 2025-10-13 A | 0% → 100% | 0d → none |
| T-4060 | Re-inspection & Snag Close-out | 2025-10-14 A | 2025-10-22 A | 0% → 100% | 0d → none |
| T-4070 | Systems Accepted - Commissioning Complete | 2025-10-22 A | 2025-10-22 A | 0% → 100% | 0d → none |
| H-5000 | O&M Manuals & As-Built Drawings Submission |  | 2025-09-18 A | 50% → 100% | 0d → none |
| H-5010 | Operator Training | 2025-10-23 A | 2025-11-05 A | 0% → 100% | 0d → none |
| H-5020 | Authority Inspection & Approval | 2025-10-23 A | 2025-11-21 A | 0% → 100% | 0d → none |
| H-5045 | Spares & Special Tools Handover | 2025-10-23 A | 2025-11-03 A | 0% → 100% | 0d → none |
| H-5030 | Taking-Over Certificate Documentation | 2025-11-24 A | 2025-12-12 A | 0% → 100% | 0d → none |
| H-5040 | Substantial Completion & Taking Over | 2025-12-12 A | 2025-12-12 A | 0% → 100% | 0d → none |
