# DAMAC Towers by Paramount BLRev4.3

How a schedule from Primavera P6 changed from version to version. A marks actual dates.

## Version 1 (data date 2016-07-05, saved 2026-07-24, file Sample Baseline.xer)

Note of the change: OOS its own module (Module 18) with as-built .xer repair; ship demo samples

| ID | WBS | Task | Duration | Start | Finish | Predecessors | Complete | Total float | Constraint |
| --- | --- | --- | --- | --- | --- | --- | --- | --- | --- |
|  | 1 | **Project Key Dates** |  | 2016-04-04 | 2017-02-15 |  |  |  |  |
| KD01 |  | Project Commencement (Nomination) | 0d | 2016-04-04 A | 2016-04-04 A |  | 100% |  |  |
| KD15 |  | Project Completion (TOC) | 0d | 2017-02-15 | 2017-02-15 | TOC01, TOC02, TOC03, TOC04, TOC05, TOC06, TOC07, TOC08, TOC09, TOC10, TOC11, TOC12, TOC15, TOC16, TOC17, TOC19, TOC20, TOC21, KD05, KD25, KD35, A3400, A3590, A3780, A3970, A4160, A4350, A4540, A4730, A4920, A5110, B14-P1PF-S012, B15-P1RPF-C010, B33-P1SR-S020, A5530, A5770, B2-UPHL-S13, B3-UPHR-S012, B4-UPVP-S013, B5-UPSD-S009, B6-UPHLL-S006, B7-UPRLL-S009, B8-UPFO-S007, B9-UPCB-S13, B10-UPRT-S007, B11-UPRR-S011, B12-UPPR-S010, B13-UPRL-S010, B20-UPCB-C004, B28-TsLC-S010, B29-SPALC-S018, B34-UPSEB-S018, B35-TCSR-S007, B39-LGLL-S009, A6040 |  | 0d |  |
|  | 2 | **Project Milestones** |  | 2016-04-06 | 2017-02-15 |  |  |  |  |
|  | 1 | **Required Milestones** |  | 2016-04-06 | 2016-10-02 |  |  |  |  |
|  | 4 | **Advance Payment** |  | 2016-04-06 | 2016-07-04 |  |  |  |  |
| KD02 |  | Contract Sing off | 0d | 2016-04-06 A | 2016-04-06 A | KD01 FS+7d | 100% |  |  |
| KD03 |  | Receipt of Advance Payment | 0d | 2016-07-04 A | 2016-07-04 A | KD02 FS+14d | 100% |  |  |
|  | 1 | **Design Freeze** |  | 2016-04-06 | 2016-06-26 |  |  |  |  |
| RM-DF-013 |  | Design Freeze & Receipt of IFC Drawing Bill 14 P1-PRE-FUNCTION | 0d | 2016-04-06 A | 2016-04-07 A | KD01 | 100% |  |  |
| RM-DF-014 |  | Design Freeze & Receipt of IFC Drawing Bill 15 P1-REST ROOMS (PRE-FUNTION) | 0d | 2016-04-06 A | 2016-04-07 A | KD01 | 100% |  |  |
| RM-DF-015 |  | Design Freeze & Receipt of IFC Drawing Bill 20 UP-COFFEE BAR | 0d | 2016-04-06 A | 2016-04-07 A | KD01 | 100% |  |  |
| RM-DF-019 |  | Design Freeze & Receipt of IFC Drawing Bill 33 P1-SCREENING ROOM | 0d | 2016-04-06 A | 2016-04-07 A | KD01 | 100% |  |  |
| RM-DF-011 |  | Design Freeze & Receipt of IFC Drawing Bill 12 UP-PRAYER ROOMS | 0d | 2016-04-25 A | 2016-04-25 A | KD01, KD01 SS | 100% |  |  |
| RM-DF-001 |  | Design Freeze & Receipt of IFC Drawing Bill 2 UP-HOTEL LOBBY | 0d | 2016-05-11 A | 2016-05-11 A | KD01, KD01 SS | 100% |  |  |
| RM-DF-002 |  | Design Freeze & Receipt of IFC Drawing Bill 3 UP-HOTEL RECEPTION | 0d | 2016-05-11 A | 2016-05-11 A | KD01, KD01 SS | 100% |  |  |
| RM-DF-003 |  | Design Freeze & Receipt of IFC Drawing Bill 4 UP-VIP PROTOCOL | 0d | 2016-05-11 A | 2016-05-11 A | KD01, KD01 SS | 100% |  |  |
| RM-DF-004 |  | Design Freeze & Receipt of IFC Drawing Bill 5 UP-SAFE DEPOSIT | 0d | 2016-05-11 A | 2016-05-11 A | KD01, KD01 SS | 100% |  |  |
| RM-DF-005 |  | Design Freeze & Receipt of IFC Drawing Bill 6 UP-HOTEL LIFT LOBBY | 0d | 2016-05-11 A | 2016-05-11 A | KD01, KD01 SS | 100% |  |  |
| RM-DF-006 |  | Design Freeze & Receipt of IFC Drawing Bill 7 UP-RESIDENCE'S LIFT LOBBY | 0d | 2016-05-11 A | 2016-05-11 A | KD01, KD01 SS | 100% |  |  |
| RM-DF-007 |  | Design Freeze & Receipt of IFC Drawing Bill 8 UP-FRONT OFFICE | 0d | 2016-05-11 A | 2016-05-11 A | KD01, KD01 SS | 100% |  |  |
| RM-DF-009 |  | Design Freeze & Receipt of IFC Drawing Bill 10 UP-RETAIL | 0d | 2016-05-11 A | 2016-05-11 A | KD01, KD01 SS | 100% |  |  |
| RM-DF-010 |  | Design Freeze & Receipt of IFC Drawing Bill 11 UP-REST ROOMS | 0d | 2016-05-11 A | 2016-05-11 A | KD01, KD01 SS | 100% |  |  |
| RM-DF-012 |  | Design Freeze & Receipt of IFC Drawing Bill 13 UP-RESIDENCES LOBBY | 0d | 2016-05-11 A | 2016-05-11 A | KD01, KD01 SS | 100% |  |  |
| RM-DF-020 |  | Design Freeze & Receipt of IFC Drawing Bill 34 UP-SPEAK EASY BAR | 0d | 2016-05-11 A | 2016-05-11 A | KD01, KD01 SS | 100% |  |  |
| RM-DF-017 |  | Design Freeze & Receipt of IFC Drawing Bill 29 SPA | 0d | 2016-05-23 A | 2016-05-23 A | KD01, KD01 SS | 100% |  |  |
| RM-DF-008 |  | Design Freeze & Receipt of IFC Drawing Bill 9 UP-CHOCOLATE BOUTIQUE | 0d | 2016-06-07 A | 2016-06-07 A | KD01, KD01 SS | 100% |  |  |
| RM-DF-022 |  | Design Freeze & Receipt of IFC Drawing Bill 39 LG- LIFT LOBBY | 0d | 2016-06-12 A | 2016-06-12 A | KD01, KD01 SS | 100% |  |  |
| RM-DF-016 |  | Design Freeze & Receipt of IFC Drawing Bill 28 LIFT CAR - TOWER A, B & D | 0d | 2016-06-26 A | 2016-06-26 A | KD01 | 100% |  |  |
| RM-DF-021 |  | Design Freeze & Receipt of IFC Drawing Bill 35 LIFT CAR - TOWER C | 0d | 2016-06-26 A | 2016-06-26 A | KD01, KD01 SS | 100% |  |  |
|  | 3 | **Site Access** |  | 2016-05-25 | 2016-08-21 |  |  |  |  |
| RM-SA-000 |  | Site Acess to Mobilize | 0d | 2016-05-25 A | 2016-05-25 A | KD01 | 100% |  |  |
| RM-SA-003 |  | Site Acess Bill 4 UP-VIP PROTOCOL | 0d | 2016-07-03 A | 2016-07-03 A | KD01 | 100% |  |  |
| RM-SA-011 |  | Site Acess Bill 12 UP-PRAYER ROOMS | 0d | 2016-07-03 A | 2016-07-03 A | KD01 | 100% |  |  |
| RM-SA-020 |  | Site Acess Bill 34 UP-SPEAK EASY BAR | 0d | 2016-07-03 A | 2016-07-03 A | KD01 | 100% |  |  |
| RM-SA-015 |  | Site Acess Bill 20 UP-COFFEE BAR | 0d | 2016-07-10 | 2016-07-10 | KD01 |  | 59d | start on or after 2016-07-10 |
| RM-SA-008 |  | Site Acess Bill 9 UP-CHOCOLATE BOUTIQUE | 0d | 2016-07-17 | 2016-07-17 | KD01 |  | 34d | start on or after 2016-07-17 |
| RM-SA-006 |  | Site Acess Bill 7 UP-RESIDENCE'S LIFT LOBBY | 0d | 2016-07-24 | 2016-07-24 | KD01 |  | 13d | start on or after 2016-07-24 |
| RM-SA-010 |  | Site Acess Bill 11 UP-REST ROOMS | 0d | 2016-07-24 | 2016-07-24 | KD01 |  | 9d | start on or after 2016-07-24 |
| RM-SA-007 |  | Site Acess Bill 8 UP-FRONT OFFICE | 0d | 2016-07-31 | 2016-07-31 | KD01 |  | 12d | start on or after 2016-07-31 |
| RM-SA-009 |  | Site Acess Bill 10 UP-RETAIL | 0d | 2016-07-31 | 2016-07-31 | KD01 |  | 12d | start on or after 2016-07-31 |
| RM-SA-001 |  | Site Acess Bill 2 UP-HOTEL LOBBY | 0d | 2016-08-07 | 2016-08-07 | KD01 |  | 3d | start on or after 2016-08-07 |
| RM-SA-004 |  | Site Acess Bill 5 UP-SAFE DEPOSIT | 0d | 2016-08-07 | 2016-08-07 | KD01 |  | 1d | start on or after 2016-08-07 |
| RM-SA-012 |  | Site Acess Bill 13 UP-RESIDENCES LOBBY | 0d | 2016-08-07 | 2016-08-07 | KD01 |  | 1d | start on or after 2016-08-07 |
| RM-SA-017 |  | Site Acess Bill 29 SPA | 0d | 2016-08-07 | 2016-08-07 | KD01 |  | 12d | start on or after 2016-08-07 |
| RM-SA-021 |  | Site Acess Bill 35 LIFT CAR - TOWER C | 0d | 2016-08-07 | 2016-08-07 | KD01 |  | 20d | start on or after 2016-08-07 |
| RM-SA-002 |  | Site Acess Bill 3 UP-HOTEL RECEPTION | 0d | 2016-08-14 | 2016-08-14 | KD01 |  | 5d | start on or after 2016-08-14 |
| RM-SA-016 |  | Site Acess Bill 28 LIFT CAR - TOWER A, B & D | 0d | 2016-08-14 | 2016-08-14 | KD01 |  | 5d | start on or after 2016-08-14 |
| RM-SA-022 |  | Site Acess Bill 39 LG- LIFT LOBBY | 0d | 2016-08-14 | 2016-08-14 | KD01 |  | 9d | start on or after 2016-08-14 |
| RM-SA-005 |  | Site Acess Bill 6 UP-HOTEL LIFT LOBBY | 0d | 2016-08-21 | 2016-08-21 | KD01 |  | 9d | start on or after 2016-08-21 |
|  | 2 | **Wild Air Milestones** |  | 2016-09-11 | 2016-10-02 |  |  |  |  |
| RM-AC-015 |  | A/C on Bill 20 UP-COFFEE BAR | 0d | 2016-09-11 | 2016-09-11 | KD01, RM-SA-015 |  | 71.3d | start on or after 2016-09-11 |
| RM-AC-001 |  | A/C on Bill 2 UP-HOTEL LOBBY | 0d | 2016-10-02 | 2016-10-02 | KD01, RM-SA-001 |  | 85.3d | start on or after 2016-10-02 |
| RM-AC-002 |  | A/C on Bill 3 UP-HOTEL RECEPTION | 0d | 2016-10-02 | 2016-10-02 | KD01, RM-SA-002 |  | 80.3d | start on or after 2016-10-02 |
| RM-AC-003 |  | A/C on Bill 4 UP-VIP PROTOCOL | 0d | 2016-10-02 | 2016-10-02 | KD01, RM-SA-003 |  | 29.3d | start on or after 2016-10-02 |
| RM-AC-004 |  | A/C on Bill 5 UP-SAFE DEPOSIT | 0d | 2016-10-02 | 2016-10-02 | KD01, RM-SA-004 |  | 85.3d | start on or after 2016-10-02 |
| RM-AC-005 |  | A/C on Bill 6 UP-HOTEL LIFT LOBBY | 0d | 2016-10-02 | 2016-10-02 | KD01, RM-SA-005 FS+21d |  | 105.3d | start on or after 2016-10-02 |
| RM-AC-006 |  | A/C on Bill 7 UP-RESIDENCE'S LIFT LOBBY | 0d | 2016-10-02 | 2016-10-02 | KD01, RM-SA-006 |  | 72.3d | start on or after 2016-10-02 |
| RM-AC-007 |  | A/C on Bill 8 UP-FRONT OFFICE | 0d | 2016-10-02 | 2016-10-02 | KD01, RM-SA-007 FS+21d |  | 74.3d | start on or after 2016-10-02 |
| RM-AC-008 |  | A/C on Bill 9 UP-CHOCOLATE BOUTIQUE | 0d | 2016-10-02 | 2016-10-02 | KD01, RM-SA-008 FS+21d |  | 108.3d | start on or after 2016-10-02 |
| RM-AC-009 |  | A/C on Bill 10 UP-RETAIL | 0d | 2016-10-02 | 2016-10-02 | KD01, RM-SA-009 |  | 97.3d | start on or after 2016-10-02 |
| RM-AC-010 |  | A/C on Bill 11 UP-REST ROOMS | 0d | 2016-10-02 | 2016-10-02 | KD01, RM-SA-010 FS+21d |  | 64.3d | start on or after 2016-10-02 |
| RM-AC-011 |  | A/C on Bill 12 UP-PRAYER ROOMS | 0d | 2016-10-02 | 2016-10-02 | KD01, RM-SA-011 FS+21d |  | 63.3d | start on or after 2016-10-02 |
| RM-AC-012 |  | A/C on Bill 13 UP-RESIDENCES LOBBY | 0d | 2016-10-02 | 2016-10-02 | KD01, RM-SA-012 FS+21d |  | 83.3d | start on or after 2016-10-02 |
| RM-AC-016 |  | A/C on Bill 28 LIFT CAR - TOWER A, B & D | 0d | 2016-10-02 | 2016-10-02 | KD01, RM-SA-016 FS+21d |  | 99.3d | start on or after 2016-10-02 |
| RM-AC-017 |  | A/C on Bill 29 SPA | 0d | 2016-10-02 | 2016-10-02 | KD01, RM-SA-017 FS+21d |  | 78.3d | start on or after 2016-10-02 |
| RM-AC-020 |  | A/C on Bill 34 UP-SPEAK EASY BAR | 0d | 2016-10-02 | 2016-10-02 | KD01, RM-SA-020 FS+21d |  | 63.3d | start on or after 2016-10-02 |
| RM-AC-021 |  | A/C on Bill 35 LIFT CAR - TOWER C | 0d | 2016-10-02 | 2016-10-02 | KD01, RM-SA-021 FS+21d |  | 113.3d | start on or after 2016-10-02 |
| RM-AC-022 |  | A/C on Bill 39 LG- LIFT LOBBY | 0d | 2016-10-02 | 2016-10-02 | KD01, RM-SA-022 FS+21d |  | 98.3d | start on or after 2016-10-02 |
|  | 3 | **Control Milestones** |  | 2016-12-10 | 2017-02-15 |  |  |  |  |

| ID | WBS | Task | Duration | Start | Finish | Predecessors | Complete | Total float |
| --- | --- | --- | --- | --- | --- | --- | --- | --- |
|  | 2 | **Phases** |  | 2016-12-29 | 2017-02-15 |  |  |  |
| KD25 |  | Completion of Engineering Phase | 0d | 2016-12-29 | 2016-12-29 | B2-UPHL-SDS160, B2-UPHL-SDS170, B2-UPHL-SDS180, B2-UPHL-SDS190, B2-UPHL-SDS200, B2-UPHL-SDS210, B2-UPHL-SDS135, B2-UPHL-SDA170, B2-UPHL-SDA180, B2-UPHL-SDA190, B2-UPHL-SDA200, B2-UPHL-SDA210, B2-UPHL-SDA220, B2-UPHL-SDA230, B3-UPHR-SDS110, B3-UPHR-SDS130, B3-UPHR-SDS150, B3-UPHR-SDA110, B3-UPHR-SDA130, B3-UPHR-SDA150, B4-UPVP-SDS140, B4-UPVP-SDS150, B4-UPVP-SDS170, B4-UPVP-SDS180, B4-UPVP-SDS175, B4-UPVP-SDS190, B4-UPVP-SDA140, B4-UPVP-SDA170, B4-UPVP-SDA180, B4-UPVP-SDA190, B4-UPVP-SDA200, B4-UPVP-SDA210, B5-UPSD-SDS160, B5-UPSD-SDS170, B5-UPSD-SDS180, B5-UPSD-SDS190, B5-UPSD-SDS200, B5-UPSD-SDS210, B5-UPSD-SDS155, B5-UPSD-SDA170, B5-UPSD-SDA180, B5-UPSD-SDA190, B5-UPSD-SDA200, B5-UPSD-SDA210, B5-UPSD-SDA220, B5-UPSD-SDA230, B6-UPHLL-SDS110, B6-UPHLL-SDS130, B6-UPHLL-SDS150, B6-UPHLL-SDS135, B6-UPHLL-SDA110, B6-UPHLL-SDA130, B6-UPHLL-SDA160, B6-UPHLL-SDA170, B7-UPRLL-SDS110, B7-UPRLL-SDS130, B7-UPRLL-SDS150, B7-UPRLL-SDS135, B7-UPRLL-SDA110, B7-UPRLL-SDA130, B7-UPRLL-SDA160, B7-UPRLL-SDA170, B8-UPFO-SDS160, B8-UPFO-SDS170, B8-UPFO-SDS180, B8-UPFO-SDS190, B8-UPFO-SDS200, B8-UPFO-SDS210, B8-UPFO-SDS135, B8-UPFO-SDA170, B8-UPFO-SDA180, B8-UPFO-SDA190, B8-UPFO-SDA200, B8-UPFO-SDA210, B8-UPFO-SDA220, B8-UPFO-SDA230, B9-UPCB-SDS150, B9-UPCB-SDS160, B9-UPCB-SDS170, B9-UPCB-SDS180, B9-UPCB-SDS190, B9-UPCB-SDS135, B9-UPCB-SDA160, B9-UPCB-SDA170, B9-UPCB-SDA180, B9-UPCB-SDA190, B9-UPCB-SDA200, B9-UPCB-SDA210, B10-UPRT-SDS110, B10-UPRT-SDS130, B10-UPRT-SDS150, B10-UPRT-SDS135, B10-UPRT-SDA110, B10-UPRT-SDA130, B10-UPRT-SDA160, B10-UPRT-SDA170, B11-UPRER-SDS110, B11-UPRER-SDS160, B11-UPRER-SDS170, B11-UPRER-SDS180, B11-UPRER-SDS190, B11-UPRER-SDA110, B11-UPRER-SDA160, B11-UPRER-SDA170, B11-UPRER-SDA180, B11-UPRER-SDA190, B12-UPPR-SDS160, B12-UPPR-SDS170, B12-UPPR-SDS180, B12-UPPR-SDS190, B12-UPPR-SDS200, B12-UPPR-SDS210, B12-UPPR-SDA160, B12-UPPR-SDA170, B12-UPPR-SDA180, B12-UPPR-SDA190, B12-UPPR-SDA200, B12-UPPR-SDA210, B13-UPRL-SDS110, B13-UPRL-SDS150, B13-UPRL-SDS160, B13-UPRL-SDS170, B13-UPRL-SDS135, B13-UPRL-SDA110, B13-UPRL-SDA160, B13-UPRL-SDA170, B13-UPRL-SDA180, B13-UPRL-SDA190, B20-UPCB-SDS150, B20-UPCB-SDS160, B20-UPCB-SDS170, B20-UPCB-SDS180, B20-UPCB-SDA150, B20-UPCB-SDA160, B20-UPCB-SDA170, B20-UPCB-SDA180, B28-TsLC-SDS110, B28-TsLC-SDS150, B28-TsLC-SDS160, B28-TsLC-SDS170, B28-TsLC-SDS135, B28-TsLC-SDA110, B28-TsLC-SDA160, B28-TsLC-SDA170, B28-TsLC-SDA180, B28-TsLC-SDA190, B29-SPA-SDS160, B29-SPA-SDS170, B29-SPA-SDS180, B29-SPA-SDS190, B29-SPA-SDS200, B29-SPA-SDS210, B29-SPA-SDS135, B29-SPA-SDA170, B29-SPA-SDA180, B29-SPA-SDA190, B29-SPA-SDA200, B29-SPA-SDA210, B29-SPA-SDA220, B29-SPA-SDA230, B34-UPSEB-SDS160, B34-UPSEB-SDS170, B34-UPSEB-SDS180, B34-UPSEB-SDS190, B34-UPSEB-SDS200, B34-UPSEB-SDS210, B34-UPSEB-SDS135, B34-UPSEB-SDA170, B34-UPSEB-SDA180, B34-UPSEB-SDA190, B34-UPSEB-SDA200, B34-UPSEB-SDA210, B34-UPSEB-SDA220, B34-UPSEB-SDA230, B35-TCLC-SDS110, B35-TCLC-SDS150, B35-TCLC-SDS160, B35-TCLC-SDS170, B35-TCLC-SDA110, B35-TCLC-SDA150, B35-TCLC-SDA160, B35-TCLC-SDA170, B39-LGLL-SDS110, B39-LGLL-SDS150, B39-LGLL-SDS160, B39-LGLL-SDS170, B39-LGLL-SDS135, B39-LGLL-SDA110, B39-LGLL-SDA160, B39-LGLL-SDA170, B39-LGLL-SDA180, B39-LGLL-SDA190, B2-UPHL-MS110, B2-UPHL-MS150, B2-UPHL-MS160, B2-UPHL-MS200, B2-UPHL-MS210, B2-UPHL-MS220, B2-UPHL-MS230, B2-UPHL-MS270, B2-UPHL-MA110, B2-UPHL-MA150, B2-UPHL-MA160, B2-UPHL-MA200, B2-UPHL-MA210, B2-UPHL-MA220, B2-UPHL-MA230, B2-UPHL-MA270, B3-UPHR-MS150, B3-UPHR-MS160, B3-UPHR-MS190, B3-UPHR-MA150, B3-UPHR-MA160, B3-UPHR-MA190, B4-UPVP-MS110, B4-UPVP-MS140, B4-UPVP-MS170, B4-UPVP-MS190, B4-UPVP-MS270, B4-UPVP-MA110, B4-UPVP-MA140, B4-UPVP-MA170, B4-UPVP-MA190, B4-UPVP-MA270, B5-UPSD-MS110, B5-UPSD-MS190, B5-UPSD-MS270, B5-UPSD-MA110, B5-UPSD-MA190, B5-UPSD-MA270, B6-UPHLL-MS150, B6-UPHLL-MS160, B6-UPHLL-MS190, B6-UPHLL-MA150, B6-UPHLL-MA160, B6-UPHLL-MA190, B7-UPRLL-MS190, B7-UPRLL-MA190, B8-UPFO-MS110, B8-UPFO-MS190, B8-UPFO-MS210, B8-UPFO-MS270, B8-UPFO-MA110, B8-UPFO-MA190, B8-UPFO-MA210, B8-UPFO-MA270, B9-UPCB-MS110, B9-UPCB-MS150, B9-UPCB-MS160, B9-UPCB-MS190, B9-UPCB-MS200, B9-UPCB-MS210, B9-UPCB-MA110, B9-UPCB-MA150, B9-UPCB-MA160, B9-UPCB-MA190, B9-UPCB-MA200, B9-UPCB-MA210, B10-UPRT-MS140, B10-UPRT-MS150, B10-UPRT-MS180, B10-UPRT-MA140, B10-UPRT-MA150, B10-UPRT-MA180, B11-UPRR-MS110, B11-UPRR-MS150, B11-UPRR-MS170, B11-UPRR-MS190, B11-UPRR-MS200, B11-UPRR-MS280, B11-UPRR-MS290, B11-UPRR-MA110, B11-UPRR-MA150, B11-UPRR-MA170, B11-UPRR-MA190, B11-UPRR-MA200, B11-UPRR-MA280, B11-UPRR-MA290, B12-UPPR-MS110, B12-UPPR-MS140, B12-UPPR-MS170, B12-UPPR-MS190, B12-UPPR-MS210, B12-UPPR-MS270, B12-UPPR-MA110, B12-UPPR-MA140, B12-UPPR-MA170, B12-UPPR-MA190, B12-UPPR-MA210, B12-UPPR-MA270, B13-UPRL-MS110, B13-UPRL-MS150, B13-UPRL-MS190, B13-UPRL-MA110, B13-UPRL-MA150, B13-UPRL-MA190, B20-UPCB-MS110, B20-UPCB-MA110, B28-TsLC-MS110, B28-TsLC-MS150, B28-TsLC-MS160, B28-TsLC-MS190, B28-TsLC-MS230, B28-TsLC-MA110, B28-TsLC-MA150, B28-TsLC-MA160, B28-TsLC-MA190, B28-TsLC-MA230, B29-SPALC-MS110, B29-SPALC-MS150, B29-SPALC-MS200, B29-SPALC-MS220, B29-SPALC-MS230, B29-SPALC-MS240, B29-SPALC-MS250, B29-SPALC-MS270, B29-SPALC-MS280, B29-SPALC-MS290, B29-SPALC-MA110, B29-SPALC-MA150, B29-SPALC-MA200, B29-SPALC-MA220, B29-SPALC-MA230, B29-SPALC-MA240, B29-SPALC-MA250, B29-SPALC-MA270, B29-SPALC-MA280, B29-SPALC-MA290, B35-TCSR-MS150, B35-TCSR-MS190, B35-TCSR-MA150, B35-TCSR-MA190, B39-LGLL-MS110, B39-LGLL-MS150, B39-LGLL-MS160, B39-LGLL-MS190, B39-LGLL-MA110, B39-LGLL-MA150, B39-LGLL-MA160, B39-LGLL-MA190, B34-UPSEB-MS150, B34-UPSEB-MS200, B34-UPSEB-MS220, B34-UPSEB-MS230, B34-UPSEB-MS240, B34-UPSEB-MS250, B34-UPSEB-MS270, B34-UPSEB-MS280, B34-UPSEB-MS290, B34-UPSEB-MS300, B34-UPSEB-MS310, B34-UPSEB-MA150, B34-UPSEB-MA200, B34-UPSEB-MA220, B34-UPSEB-MA230, B34-UPSEB-MA240, B34-UPSEB-MA250, B34-UPSEB-MA270, B34-UPSEB-MA280, B34-UPSEB-MA290, B34-UPSEB-MA300, B34-UPSEB-MA310, RM-DF-009 |  | 48d |
| KD05 |  | Completion of Procurement Phase | 0d | 2017-01-17 | 2017-01-17 | B2-UPHL-PR100, B2-UPHL-PR120, B2-UPHL-PR130, B2-UPHL-PR140, B2-UPHL-PR170, B2-UPHL-PR180, B2-UPHL-PR190, B2-UPHL-PR260, B3-UPHR-PR130, B3-UPHR-PR140, B3-UPHR-PR180, B4-UPVP-PR100, B4-UPVP-PR110, B4-UPVP-PR130, B4-UPVP-PR160, B4-UPVP-PR180, B4-UPVP-PR260, B5-UPSD-PR100, B5-UPSD-PR180, B5-UPSD-PR260, B6-UPHLL-PR130, B6-UPHLL-PR140, B6-UPHLL-PR180, B7-UPRLL-PR180, B8-UPFO-PR100, B8-UPFO-PR180, B8-UPFO-PR200, B8-UPFO-PR260, B9-UPCB-PR100, B9-UPCB-PR120, B9-UPCB-PR130, B9-UPCB-PR140, B9-UPCB-PR170, B9-UPCB-PR180, B10-UPRT-PR120, B10-UPRT-PR130, B10-UPRT-PR170, B11-UPRR-PR100, B11-UPRR-PR130, B11-UPRR-PR140, B11-UPRR-PR160, B11-UPRR-PR180, B11-UPRR-PR260, B11-UPRR-PR270, B12-UPPR-PR100, B12-UPPR-PR160, B12-UPPR-PR180, B12-UPPR-PR200, B12-UPPR-PR260, B13-UPRL-PR100, B13-UPRL-PR140, B13-UPRL-PR180, B20-UPCB-PR100, B28-TsLC-PR100, B28-TsLC-PR130, B28-TsLC-PR140, B28-TsLC-PR180, B28-TsLC-PR220, B29-SPALC-PR100, B29-SPALC-PR120, B29-SPALC-PR130, B29-SPALC-PR140, B29-SPALC-PR160, B29-SPALC-PR170, B29-SPALC-PR180, B29-SPALC-PR190, B29-SPALC-PR210, B29-SPALC-PR260, B35-TCSR-PR140, B35-TCSR-PR180, B39-LGLL-PR100, B39-LGLL-PR130, B39-LGLL-PR140, B39-LGLL-PR180, B34-UPSEB-PR100, B34-UPSEB-PR110, B34-UPSEB-PR120, B34-UPSEB-PR130, B34-UPSEB-PR140, B34-UPSEB-PR160, B34-UPSEB-PR170, B34-UPSEB-PR180, B34-UPSEB-PR190, B34-UPSEB-PR210, B34-UPSEB-PR260 |  | 29.14d |
| KD35 |  | Completion of Construction Phase | 0d | 2017-02-15 | 2017-02-15 | TOC01, TOC02, TOC03, TOC04, TOC05, TOC06, TOC07, TOC08, TOC09, TOC10, TOC11, TOC12, TOC15, TOC16, TOC17, TOC19, TOC20, TOC21 |  | 0d |
|  | 1 | **Areas Substantial Completion** |  | 2016-12-10 | 2017-02-15 |  |  |  |
| TOC15 |  | Substantial Completion of Bill 20-UP-COFFEE BAR | 0d | 2016-12-10 | 2016-12-10 | B20-UPCB-1stP001, B20-UPCB-3rdP003, B20-UPCB-C001, B20-UPCB-C002, B20-UPCB-C003, B20-UPCB-C004, B5-UPSD-C221, B5-UPSD-C231 |  | 67d |
| TOC03 |  | Substantial Completion of Bill 4-UP-VIP PROTOCOL | 0d | 2017-01-22 | 2017-01-22 | B4-UPVP-1stP001, B4-UPVP-C001, B4-UPVP-2ndP002, B4-UPVP-C002, B4-UPVP-C003, B4-UPVP-C004, B4-UPVP-C005, B4-UPVP-C006, B4-UPVP-C007, B4-UPVP-C008, B4-UPVP-C009, B4-UPVP-C010, B4-UPVP-C011, B4-UPVP-C012, B4-UPVP-S013, B4-UPVP-C021, B4-UPVP-C031, B4-UPVP-C013, RM-SA-003 |  | 24.08d |
| TOC06 |  | Substantial Completion of Bill 7-UP-RESIDENCE'S LIFT LOBBY | 0d | 2017-01-30 | 2017-01-30 | B7-UPRLL-1stP001, B7-UPRLL-2ndP002, B7-UPRLL-3rdP003, B7-UPRLL-C001, B7-UPRLL-C002, B7-UPRLL-C003, B7-UPRLL-C004, B7-UPRLL-C005, B7-UPRLL-C006, B7-UPRLL-C007, B7-UPRLL-C008, B7-UPRLL-S009, B5-UPSD-C41, B5-UPSD-C51, B7-UPRLL-C012 |  | 16d |
| TOC07 |  | Substantial Completion of Bill 8-UP-FRONT OFFICE | 0d | 2017-01-30 | 2017-01-30 | B8-UPFO-1stP001, B8-UPFO-2ndP002, B8-UPFO-C001, B8-UPFO-C002, B8-UPFO-C003, B8-UPFO-C004, B8-UPFO-C005, B8-UPFO-C006, B8-UPFO-S007, B8-UPFO-C014, B5-UPSD-C61, B5-UPSD-C71, B8-UPFO-C013, RM-SA-007 |  | 16d |
| TOC09 |  | Substantial Completion of Bill 10-UP-RETAIL | 0d | 2017-02-02 | 2017-02-02 | B10-UPRT-1stP001, B10-UPRT-3rdP003, B10-UPRT-C001, B10-UPRT-C002, B10-UPRT-C003, B10-UPRT-C004, B10-UPRT-C005, B10-UPRT-C006, B10-UPRT-S007, B5-UPSD-C101, B5-UPSD-C111 |  | 13d |
| TOC11 |  | Substantial Completion of Bill 12-UP-PRAYER ROOMS | 0d | 2017-02-02 | 2017-02-02 | B12-UPPR-1stP001, B12-UPPR-2ndP002, B12-UPPR-3rdP003, B12-UPPR-C001, B12-UPPR-C002, B12-UPPR-C003, B12-UPPR-C004, B12-UPPR-C005, B12-UPPR-C006, B12-UPPR-C007, B12-UPPR-C008, B12-UPPR-C009, B12-UPPR-S010, B5-UPSD-C141, B5-UPSD-C151 |  | 13d |
| TOC05 |  | Substantial Completion of Bill 6-UP-HOTEL LIFT LOBBY | 0d | 2017-02-04 | 2017-02-04 | B6-UPHLL-1stP001, B6-UPHLL-2ndP002, B6-UPHLL-3rdP003, B6-UPHLL-C001, B6-UPHLL-C002, B6-UPHLL-C003, B6-UPHLL-C004, B6-UPHLL-C005, B6-UPHLL-S006, B5-UPSD-C21, B5-UPSD-C31 |  | 11d |
| TOC10 |  | Substantial Completion of Bill 11-UP-REST ROOMS | 0d | 2017-02-04 | 2017-02-04 | B11-UPRR-1stP001, B11-UPRR-2ndP002, B11-UPRR3rdP003, B11-UPRR-C001, B11-UPRR-C002, B11-UPRR-C003, B11-UPRR-C004, B11-UPRR-C005, B11-UPRR-C006, B11-UPRR-C007, B11-UPRR-C008, B11-UPRR-C009, B11-UPRR-C010, B11-UPRR-S011, B5-UPSD-C121, B5-UPSD-C131 |  | 11d |
| TOC17 |  | Substantial Completion of Bill 29-SPA | 0d | 2017-02-06 | 2017-02-06 | B29-SPALC-1stP001, B29-SPALC-2ndP002, B29-SPALC-3rdP003, B29-SPALC-C001, B29-SPALC-C002, B29-SPALC-C003, B29-SPALC-C004, B29-SPALC-C005, B29-SPALC-C006, B29-SPALC-C007, B29-SPALC-C008, B29-SPALC-C009, B29-SPALC-C010, B29-SPALC-C011, B29-SPALC-C012, B29-SPALC-C013, B29-SPALC-C014, B29-SPALC-C015, B29-SPALC-C017, B29-SPALC-S018, B5-UPSD-C261, B5-UPSD-C271 |  | 9d |
| TOC19 |  | Substantial Completion of Bill 34-UP-SPEAK EASY BAR | 0d | 2017-02-07 | 2017-02-07 | B34-UPSEB-1stP001, B34-UPSEB-2ndP002, B34-UPSEB-3rdP003, B34-UPSEB-C001, B34-UPSEB-C002, B34-UPSEB-C003, B34-UPSEB-C004, B34-UPSEB-C005, B34-UPSEB-C006, B34-UPSEB-C007, B34-UPSEB-C008, B34-UPSEB-C009, B34-UPSEB-C010, B34-UPSEB-C011, B34-UPSEB-C012, B34-UPSEB-C013, B34-UPSEB-C014, B34-UPSEB-C015, B34-UPSEB-C016, B34-UPSEB-C017, B34-UPSEB-S018, B5-UPSD-C301, B5-UPSD-C311 |  | 8.2d |
| TOC02 |  | Substantial Completion of Bill 3-UP-HOTEL RECEPTION | 0d | 2017-02-08 | 2017-02-08 | B3-UPHR-1stP001, B3-UPHR-C001, B3-UPHR-2ndP002, B3-UPHR-C002, B3-UPHR-3rdP003, B3-UPHR-C003, B3-UPHR-C004, B3-UPHR-C007, B3-UPHR-C008, B3-UPHR-C010, B3-UPHR-C011, B3-UPHR-S012, B3-UPHR-C021, B3-UPHR-C031 |  | 7d |
| TOC21 |  | Substantial Completion of Bill 39-LG- LIFT LOBBY | 0d | 2017-02-11 | 2017-02-11 | B39-LGLL-1stP001, B39-LGLL-2ndP002, B39-LGLL-3rdP003, B39-LGLL-C001, B39-LGLL-C002, B39-LGLL-C003, B39-LGLL-C004, B39-LGLL-C005, B39-LGLL-C006, B39-LGLL-C007, B39-LGLL-C008, B39-LGLL-S009, B5-UPSD-C341, B5-UPSD-C351 |  | 4d |
| TOC08 |  | Substantial Completion of Bill 9-UP-CHOCOLATE BOUTIQUE | 0d | 2017-02-12 | 2017-02-12 | B9-UPCB-1stP001, B9-UPCB-2ndP002, B9-UPCB-3rdP003, B9-UPCB-C001, B9-UPCB-C002, B9-UPCB-C003, B9-UPCB-C004, B9-UPCB-C005, B9-UPCB-C006, B9-UPCB-C007, B9-UPCB-C008, B9-UPCB-C009, B9-UPCB-C010, B9-UPCB-C011, B9-UPCB-C012, B9-UPCB-S13, B9-UPCB-C013, B9-UPCB-C014, B5-UPSD-C81, B5-UPSD-C91 |  | 3.24d |
| TOC01 |  | Substantial Completion of Bill 2 UP-HOTEL LOBBY | 0d | 2017-02-14 | 2017-02-14 | B2-UPHL-1stP001, B2-UPHL-C001, B2-UPHL-2ndP002, B2-UPHL-C002, B2-UPHL-C003, B2-UPHL-3rdP003, B2-UPHL-C004, B2-UPHL-C005, B2-UPHL-C006, B2-UPHL-C007, B2-UPHL-C008, B2-UPHL-C009, B2-UPHL-C010, B2-UPHL-C011, B2-UPHL-C012, B2-UPHL-S13, B2-UPHL-C021, B2-UPHL-C031, B2-UPHL-C014 |  | 1d |
| TOC04 |  | Substantial Completion of Bill 5-UP-SAFE DEPOSIT | 0d | 2017-02-14 | 2017-02-14 | B5-UPSD-1stP001, B5-UPSD-2ndP002, B5-UPSD-3rdP003, B5-UPSD-C001, B5-UPSD-C002, B5-UPSD-C003, B5-UPSD-C004, B5-UPSD-C005, B5-UPSD-C006, B5-UPSD-C007, B5-UPSD-C008, B5-UPSD-S009, B5-UPSD-C011, B5-UPSD-C021, B5-UPSD-C013 |  | 1d |
| TOC12 |  | Substantial Completion of Bill 13-UP-RESIDENCES LOBBY | 0d | 2017-02-14 | 2017-02-14 | B13-UPRL-1stP001, B13-UPRL-2ndP002, B13-UPRL-3rdP003, B13-UPRL-C001, B13-UPRL-C002, B13-UPRL-C003, B13-UPRL-C004, B13-UPRL-C005, B13-UPRL-C006, B13-UPRL-C007, B13-UPRL-C008, B13-UPRL-C009, B13-UPRL-S010, B5-UPSD-C161, B5-UPSD-C171 |  | 1d |
| TOC20 |  | Substantial Completion of Bill 35-LIFT CAR - TOWER C | 0d | 2017-02-14 | 2017-02-14 | B35-TCSR-1stP001, B35-TCSR-2ndP002, B35-TCSR-3rdP003, B35-TCSR-C001, B35-TCSR-C002, B35-TCSR-C003, B35-TCSR-C004, B35-TCSR-C005, B35-TCSR-C006, B35-TCSR-S007, B5-UPSD-C321, B5-UPSD-C331 |  | 1d |
| TOC16 |  | Substantial Completion of Bill 28-LIFT CAR - TOWER A, B & D | 0d | 2017-02-15 | 2017-02-15 | B28-TsLC-1stP001, B28-TsLC-2ndP002, B28-TsLC-3rdP003, B28-TsLC-C001, B28-TsLC-C002, B28-TsLC-C003, B28-TsLC-C004, B28-TsLC-C005, B28-TsLC-C006, B28-TsLC-C007, B28-TsLC-C008, B28-TsLC-C009, B28-TsLC-S010, B5-UPSD-C241, B5-UPSD-C251 |  | 0d |
|  | 3 | **Engineering Phase** |  | 2016-04-04 | 2016-12-29 |  |  |  |
|  | 1 | **Shop Drawing Process** |  | 2016-04-04 | 2016-12-29 |  |  |  |
|  | 1 | **Shop Drawing Process Bill 2 UP-HOTEL LOBBY** |  | 2016-05-11 | 2016-10-12 |  |  |  |
|  | 1 | **SD Preparation and Submission of Bill 2 UP-HOTEL LOBBY** |  | 2016-05-11 | 2016-09-20 |  |  |  |
| B2-UPHL-SDS210 |  | Preparation and Submission of Details Layout | 14d | 2016-05-11 A | 2016-07-10 | RM-DF-001, B2-UPHL-SDS180 SS | 90% | 67.6d |
| B2-UPHL-SDS160 |  | Preparation and Submission of RCP Layout | 21d | 2016-05-12 A | 2016-08-02 | RM-DF-001 | 10% | 5.1d |
| B2-UPHL-SDS170 |  | Preparation and Submission of Floor Layout | 14d | 2016-05-12 A | 2016-07-25 | RM-DF-001 | 10% | 3.4d |
| B2-UPHL-SDS180 |  | Preparation and Submission of Elevation Layout | 14d | 2016-05-12 A | 2016-07-25 | RM-DF-001 | 10% | 3.4d |
| B2-UPHL-SDS135 |  | Preparation and Submission of Furniture Layout | 14d | 2016-05-15 A | 2016-08-11 | B2-UPHL-SDS180, RM-DF-001 | 10% | 34.2d |
| B2-UPHL-SDS190 |  | Preparation and Submission of Joinery Layout | 14d | 2016-05-15 A | 2016-08-29 | B2-UPHL-SDS135, RM-DF-001 | 10% | 34.2d |
| B2-UPHL-SDS200 |  | Preparation and Submission of Doors Shop Drawing | 14d | 2016-06-02 A | 2016-09-20 | B2-UPHL-SDS190, RM-DF-001 | 10% | 37.6d |
|  | 2 | **SD Approval of Bill 2 UP-HOTEL LOBBY** |  | 2016-07-10 | 2016-10-12 |  |  |  |
| B2-UPHL-SDA220 |  | Review & Approval of Details Layout | 21d | 2016-07-10 | 2016-08-03 | B2-UPHL-SDS210 |  | 81.6d |
| B2-UPHL-SDA180 |  | Review & Approval of Floor Layout | 21d | 2016-07-25 | 2016-08-15 | B2-UPHL-SDS170 |  | 4.4d |
| B2-UPHL-SDA190 |  | Review & Approval of Elevation Layout | 21d | 2016-07-25 | 2016-08-15 | B2-UPHL-SDS180 |  | 4.4d |
| B2-UPHL-SDA170 |  | Review & Approval of RCP Layout | 21d | 2016-08-02 | 2016-08-23 | B2-UPHL-SDS160 |  | 7.1d |
| B2-UPHL-SDA230 |  | Review & Approval of Furniture Layout | 21d | 2016-08-11 | 2016-09-01 | B2-UPHL-SDS135 |  | 67.8d |
| B2-UPHL-SDA200 |  | Review & Approval of Joinery Layout | 21d | 2016-08-29 | 2016-09-22 | B2-UPHL-SDS190 |  | 49.2d |
| B2-UPHL-SDA210 |  | Review & Approval of Doors Shop Drawing | 21d | 2016-09-20 | 2016-10-12 | B2-UPHL-SDS200 |  | 53.6d |
|  | 2 | **Shop Drawing Process Bill 3-UP-HOTEL RECEPTION** |  | 2016-05-15 | 2016-07-25 |  |  |  |
|  | 1 | **SD Preparation and Submission of Bill 3-UP-HOTEL RECEPTION** |  | 2016-05-15 | 2016-05-31 |  |  |  |
| B3-UPHR-SDS110 |  | Preparation and Submission of RCP Layout | 21d | 2016-05-15 A | 2016-05-31 A | RM-DF-002 | 100% |  |
| B3-UPHR-SDS130 |  | Preparation and Submission of Elevation Layout | 21d | 2016-05-15 A | 2016-05-31 A | RM-DF-002, B3-UPHR-SDS110 | 100% |  |
| B3-UPHR-SDS150 |  | Preparation and Submission of Details Layout | 21d | 2016-05-15 A | 2016-05-31 A | RM-DF-002, B3-UPHR-SDS130 SS | 100% |  |
|  | 2 | **SD Approval of Bill 3-UP-HOTEL RECEPTION** |  | 2016-06-01 | 2016-07-25 |  |  |  |
| B3-UPHR-SDA110 |  | Review & Approval of RCP Layout | 21d | 2016-06-01 A | 2016-07-25 | B3-UPHR-SDS110 | 10% | 19.1d |
| B3-UPHR-SDA130 |  | Review & Approval of Elevation Layout | 21d | 2016-06-01 A | 2016-07-25 | B3-UPHR-SDS130 | 10% | 59.1d |
| B3-UPHR-SDA150 |  | Review & Approval of Details Layout | 21d | 2016-06-01 A | 2016-07-25 | B3-UPHR-SDS150 | 10% | 59.1d |
|  | 3 | **Shop Drawing Process Bill 4-UP-VIP PROTOCOL** |  | 2016-05-01 | 2016-09-14 |  |  |  |
|  | 1 | **SD Preparation and Submission of Bill 4-UP-VIP PROTOCOL** |  | 2016-05-01 | 2016-08-25 |  |  |  |
| B4-UPVP-SDS150 |  | Preparation and Submission of Floor Layout | 21d | 2016-05-01 A | 2016-05-10 A | RM-DF-003 | 100% |  |
| B4-UPVP-SDS170 |  | Preparation and Submission of Elevation Layout | 21d | 2016-05-01 A | 2016-05-10 A | RM-DF-003 | 100% |  |
| B4-UPVP-SDS180 |  | Preparation and Submission of Joinery Layout | 21d | 2016-05-01 A | 2016-07-05 | B4-UPVP-SDS170, RM-DF-003 | 100% | 31.3d |
| B4-UPVP-SDS140 |  | Preparation and Submission of RCP Layout | 21d | 2016-05-15 A | 2016-07-11 | RM-DF-003 | 90% | 27.1d |
| B4-UPVP-SDS175 |  | Preparation and Submission of Details Layout | 28d | 2016-06-01 A | 2016-08-25 | B4-UPVP-SDS190, RM-DF-003 | 10% | 31.3d |
| B4-UPVP-SDS190 |  | Preparation and Submission of Furniture Layout | 21d | 2016-06-06 A | 2016-07-21 | B4-UPVP-SDS180, RM-DF-003 | 50% | 31.3d |
|  | 2 | **SD Approval of Bill 4-UP-VIP PROTOCOL** |  | 2016-05-11 | 2016-09-14 |  |  |  |
| B4-UPVP-SDA140 |  | Review & Approval of RCP Layout | 21d | 2016-05-11 A | 2016-07-27 | B4-UPVP-SDS140 | 20% | 37.1d |
| B4-UPVP-SDA170 |  | Review & Approval of Floor Layout | 21d | 2016-05-11 A | 2016-07-23 | B4-UPVP-SDS150 | 20% | 56.2d |
| B4-UPVP-SDA180 |  | Review & Approval of Elevation Layout | 21d | 2016-05-11 A | 2016-07-23 | B4-UPVP-SDS170 | 20% | 96.2d |
| B4-UPVP-SDA190 |  | Review & Approval of Joinery Layout | 21d | 2016-05-12 A | 2016-07-23 | B4-UPVP-SDS180 | 20% | 89.2d |
| B4-UPVP-SDA200 |  | Review & Approval of Details Layout | 21d | 2016-06-30 A | 2016-09-14 | B4-UPVP-SDS175 | 20% | 46.5d |
| B4-UPVP-SDA210 |  | Review & Approval of Furniture Layout | 21d | 2016-07-21 | 2016-08-11 | B4-UPVP-SDS190 |  | 70.5d |
|  | 4 | **Shop Drawing Process Bill 5-UP-SAFE DEPOSIT** |  | 2016-05-12 | 2016-08-30 |  |  |  |
|  | 1 | **SD Preparation and Submission of Bill 5-UP-SAFE DEPOSIT** |  | 2016-05-12 | 2016-08-11 |  |  |  |
| B5-UPSD-SDS155 |  | Preparation and Submission of Furniture Layout | 21d | 2016-05-12 A | 2016-05-19 A | RM-DF-004, B5-UPSD-SDS180 | 100% |  |
| B5-UPSD-SDS160 |  | Preparation and Submission of RCP Layout | 28d | 2016-05-12 A | 2016-07-11 | RM-DF-004 | 90% | 21.97d |

| ID | WBS | Task | Duration | Start | Finish | Predecessors | Complete | Total float |
| --- | --- | --- | --- | --- | --- | --- | --- | --- |
| B5-UPSD-SDS170 |  | Preparation and Submission of Floor Layout | 14d | 2016-05-12 A | 2016-05-19 A | B5-UPSD-SDS160, RM-DF-004 | 100% |  |
| B5-UPSD-SDS180 |  | Preparation and Submission of Elevation Layout | 14d | 2016-05-12 A | 2016-05-19 A | B5-UPSD-SDS170, RM-DF-004 | 100% |  |
| B5-UPSD-SDS190 |  | Preparation and Submission of Joinery Layout | 28d | 2016-05-12 A | 2016-08-11 | B5-UPSD-SDS180 SS, RM-DF-004 | 20% | 46.3d |
| B5-UPSD-SDS200 |  | Preparation and Submission of Doors Shop Drawing | 21d | 2016-05-12 A | 2016-05-19 A | B5-UPSD-SDS190, RM-DF-004 | 100% |  |
| B5-UPSD-SDS210 |  | Preparation and Submission of Details Layout | 28d | 2016-05-12 A | 2016-05-19 A | RM-DF-004, B5-UPSD-SDS180 SS | 100% |  |
|  | 2 | **SD Approval of Bill 5-UP-SAFE DEPOSIT** |  | 2016-05-22 | 2016-08-30 |  |  |  |
| B5-UPSD-SDA180 |  | Review & Approval of Floor Layout | 21d | 2016-05-22 A | 2016-07-30 | B5-UPSD-SDS170 | 10% | 194.3d |
| B5-UPSD-SDA190 |  | Review & Approval of Elevation Layout | 21d | 2016-05-22 A | 2016-07-30 | B5-UPSD-SDS180 | 10% | 88.3d |
| B5-UPSD-SDA210 |  | Review & Approval of Doors Shop Drawing | 21d | 2016-05-22 A | 2016-08-30 | B5-UPSD-SDS200 | 10% | 78.9d |
| B5-UPSD-SDA220 |  | Review & Approval of Details Layout | 21d | 2016-05-22 A | 2016-07-30 | B5-UPSD-SDS210 | 10% | 132.63d |
| B5-UPSD-SDA230 |  | Review & Approval of Furniture Layout | 21d | 2016-05-22 A | 2016-07-30 | B5-UPSD-SDS155 SS | 10% | 107.2d |
| B5-UPSD-SDA170 |  | Review & Approval of RCP Layout | 21d | 2016-06-12 A | 2016-07-30 | B5-UPSD-SDS160 | 10% | 29.97d |
| B5-UPSD-SDA200 |  | Review & Approval of Joinery Layout | 21d | 2016-06-24 A | 2016-08-21 | B5-UPSD-SDS190 | 50% | 66.3d |
|  | 5 | **Shop Drawing Process Bill 6-UP-HOTEL LIFT LOBBY** |  | 2016-05-15 | 2016-08-15 |  |  |  |
|  | 1 | **SD Preparation and Submission of Bill 6-UP-HOTEL LIFT LOBBY** |  | 2016-05-15 | 2016-07-27 |  |  |  |
| B6-UPHLL-SDS110 |  | Preparation and Submission of RCP Layout | 21d | 2016-05-15 A | 2016-07-21 | RM-DF-005, RM-DF-005 SS | 50% | 17.6d |
| B6-UPHLL-SDS130 |  | Preparation and Submission of Elevation Layout | 21d | 2016-05-15 A | 2016-07-25 | B6-UPHLL-SDS110, RM-DF-005 | 90% | 36.5d |
| B6-UPHLL-SDS135 |  | Preparation and Submission of Furniture Layout | 21d | 2016-05-15 A | 2016-07-27 | B6-UPHLL-SDS130, RM-DF-005 | 90% | 59.4d |
| B6-UPHLL-SDS150 |  | Preparation and Submission of Details Layout | 21d | 2016-06-02 A | 2016-07-27 | RM-DF-005, B6-UPHLL-SDS130 | 90% | 62.4d |
|  | 2 | **SD Approval of Bill 6-UP-HOTEL LIFT LOBBY** |  | 2016-05-16 | 2016-08-15 |  |  |  |
| B6-UPHLL-SDA110 |  | Review & Approval of RCP Layout | 21d | 2016-05-16 A | 2016-08-09 | B6-UPHLL-SDS110 | 10% | 25.6d |
| B6-UPHLL-SDA130 |  | Review & Approval of Elevation Layout | 21d | 2016-06-06 A | 2016-08-13 | B6-UPHLL-SDS130 | 10% | 52.5d |
| B6-UPHLL-SDA160 |  | Review & Approval of Details Layout | 21d | 2016-07-03 A | 2016-08-15 | B6-UPHLL-SDS150 | 10% | 90.4d |
| B6-UPHLL-SDA170 |  | Review & Approval of Furniture Layout | 21d | 2016-07-03 A | 2016-08-15 | B6-UPHLL-SDS135 | 10% | 85.4d |
|  | 6 | **Shop Drawing Process Bill 7-UP-RESIDENCE'S LIFT LOBBY** |  | 2016-05-15 | 2016-09-03 |  |  |  |
|  | 1 | **SD Preparation and Submission of Bill 7-UP-RESIDENCE'S LIFT LOBBY** |  | 2016-05-15 | 2016-08-15 |  |  |  |
| B7-UPRLL-SDS110 |  | Preparation and Submission of RCP Layout | 14d | 2016-05-15 A | 2016-07-17 | RM-DF-006, RM-DF-006 SS | 50% | 17.1d |
| B7-UPRLL-SDS130 |  | Preparation and Submission of Elevation Layout | 14d | 2016-05-15 A | 2016-07-26 | RM-DF-006, B7-UPRLL-SDS110, RM-DF-006 SS | 50% | 49.1d |
| B7-UPRLL-SDS135 |  | Preparation and Submission of Furniture Layout | 14d | 2016-05-15 A | 2016-08-04 | RM-DF-006, B7-UPRLL-SDS130, RM-DF-006 SS | 50% | 49.1d |
| B7-UPRLL-SDS150 |  | Preparation and Submission of Details Layout | 14d | 2016-06-06 A | 2016-08-15 | RM-DF-006, B7-UPRLL-SDS135, RM-DF-006 SS | 50% | 49.1d |
|  | 2 | **SD Approval of Bill 7-UP-RESIDENCE'S LIFT LOBBY** |  | 2016-05-16 | 2016-09-03 |  |  |  |
| B7-UPRLL-SDA110 |  | Review & Approval of RCP Layout | 21d | 2016-05-16 A | 2016-08-05 | B7-UPRLL-SDS110 | 10% | 23.1d |
| B7-UPRLL-SDA130 |  | Review & Approval of Elevation Layout | 21d | 2016-05-17 A | 2016-08-14 | B7-UPRLL-SDS130 | 10% | 114.1d |
| B7-UPRLL-SDA170 |  | Review & Approval of Furniture Layout | 21d | 2016-06-06 A | 2016-08-23 | B7-UPRLL-SDS135 | 10% | 75.1d |
| B7-UPRLL-SDA160 |  | Review & Approval of Details Layout | 21d | 2016-06-24 A | 2016-09-03 | B7-UPRLL-SDS150 | 10% | 71.1d |
|  | 7 | **Shop Drawing Process Bill 8-UP-FRONT OFFICE** |  | 2016-05-12 | 2016-08-23 |  |  |  |
|  | 1 | **SD Preparation and Submission of Bill 8-UP-FRONT OFFICE** |  | 2016-05-12 | 2016-08-04 |  |  |  |
| B8-UPFO-SDS135 |  | Preparation and Submission of Furniture Layout | 7d | 2016-05-12 A | 2016-05-19 A | B8-UPFO-SDS180, RM-DF-007 | 100% |  |
| B8-UPFO-SDS170 |  | Preparation and Submission of Floor Layout | 7d | 2016-05-12 A | 2016-05-19 A | B8-UPFO-SDS160, RM-DF-007 | 100% |  |
| B8-UPFO-SDS180 |  | Preparation and Submission of Elevation Layout | 7d | 2016-05-12 A | 2016-05-19 A | B8-UPFO-SDS170, RM-DF-007 | 100% |  |
| B8-UPFO-SDS160 |  | Preparation and Submission of RCP Layout | 14d | 2016-05-15 A | 2016-07-10 | RM-DF-007, RM-DF-007 SS | 90% | 19.6d |
| B8-UPFO-SDS190 |  | Preparation and Submission of Joinery Layout | 14d | 2016-05-15 A | 2016-07-11 | B8-UPFO-SDS135, RM-DF-007 | 90% | 45.7d |
| B8-UPFO-SDS200 |  | Preparation and Submission of Doors Shop Drawing | 14d | 2016-06-15 A | 2016-07-28 | B8-UPFO-SDS190, RM-DF-007 | 10% | 45.7d |
| B8-UPFO-SDS210 |  | Preparation and Submission of Details Layout | 21d | 2016-06-15 A | 2016-08-04 | RM-DF-007, B8-UPFO-SDS180 | 10% | 40.8d |
|  | 2 | **SD Approval of Bill 8-UP-FRONT OFFICE** |  | 2016-05-22 | 2016-08-23 |  |  |  |
| B8-UPFO-SDA180 |  | Review & Approval of Floor Layout | 21d | 2016-05-22 A | 2016-07-27 | B8-UPFO-SDS170 | 20% | 115.8d |
| B8-UPFO-SDA190 |  | Review & Approval of Elevation Layout | 21d | 2016-05-22 A | 2016-07-20 | B8-UPFO-SDS180 | 50% | 100.1d |
| B8-UPFO-SDA230 |  | Review & Approval of Furniture Layout | 21d | 2016-05-22 A | 2016-07-29 | B8-UPFO-SDS135 | 10% | 91.7d |
| B8-UPFO-SDA170 |  | Review & Approval of RCP Layout | 21d | 2016-06-12 A | 2016-07-27 | B8-UPFO-SDS160 | 20% | 26.8d |
| B8-UPFO-SDA200 |  | Review & Approval of Joinery Layout | 21d | 2016-06-12 A | 2016-07-30 | B8-UPFO-SDS190 | 10% | 90.3d |
| B8-UPFO-SDA210 |  | Review & Approval of Doors Shop Drawing | 21d | 2016-07-03 A | 2016-08-16 | B8-UPFO-SDS200 | 10% | 65.7d |
| B8-UPFO-SDA220 |  | Review & Approval of Details Layout | 21d | 2016-07-03 A | 2016-08-23 | B8-UPFO-SDS210 | 10% | 58.8d |
|  | 8 | **Shop Drawing Process Bill 9-UP-CHOCOLATE BOUTIQUE** |  | 2016-07-03 | 2016-10-30 |  |  |  |
|  | 1 | **SD Preparation and Submission of Bill 9-UP-CHOCOLATE BOUTIQUE** |  | 2016-07-03 | 2016-10-09 |  |  |  |
| B9-UPCB-SDS135 |  | Preparation and Submission of Furniture Layout | 10d | 2016-07-03 A | 2016-08-23 | B9-UPCB-SDS170, RM-DF-008 | 10% | 44.7d |
| B9-UPCB-SDS150 |  | Preparation and Submission of RCP Layout | 9d | 2016-07-03 A | 2016-07-19 | RM-DF-008 | 10% | 1.7d |
| B9-UPCB-SDS160 |  | Preparation and Submission of Floor Layout | 9d | 2016-07-03 A | 2016-07-31 | B9-UPCB-SDS150, RM-DF-008 | 10% | 1.7d |
| B9-UPCB-SDS170 |  | Preparation and Submission of Elevation Layout | 9d | 2016-07-03 A | 2016-08-10 | B9-UPCB-SDS160, RM-DF-008 | 10% | 1.7d |
| B9-UPCB-SDS180 |  | Preparation and Submission of Joinery Layout | 21d | 2016-07-03 A | 2016-09-06 | RM-DF-008, B9-UPCB-SDS170 | 10% | 34.8d |
| B9-UPCB-SDS190 |  | Preparation and Submission of Details Layout | 21d | 2016-07-03 A | 2016-10-09 | B9-UPCB-SDS180, RM-DF-008 | 10% | 43.9d |
|  | 2 | **SD Approval of Bill 9-UP-CHOCOLATE BOUTIQUE** |  | 2016-07-19 | 2016-10-30 |  |  |  |
| B9-UPCB-SDA160 |  | Review & Approval of RCP Layout | 21d | 2016-07-19 | 2016-08-09 | B9-UPCB-SDS150 |  | 50.9d |
| B9-UPCB-SDA170 |  | Review & Approval of Floor Layout | 21d | 2016-07-31 | 2016-08-21 | B9-UPCB-SDS160 |  | 51.8d |
| B9-UPCB-SDA180 |  | Review & Approval of Elevation Layout | 21d | 2016-08-10 | 2016-08-31 | B9-UPCB-SDS170 |  | 3.7d |
| B9-UPCB-SDA210 |  | Review & Approval of Furniture Layout | 21d | 2016-08-23 | 2016-09-16 | B9-UPCB-SDS135 |  | 64.7d |
| B9-UPCB-SDA190 |  | Review & Approval of Joinery Layout | 21d | 2016-09-06 | 2016-09-30 | B9-UPCB-SDS180 |  | 50.8d |
| B9-UPCB-SDA200 |  | Review & Approval of Details Layout | 21d | 2016-10-09 | 2016-10-30 | B9-UPCB-SDS190 |  | 59.9d |
|  | 9 | **Shop Drawing Process Bill 10-UP-RETAIL** |  | 2016-05-15 | 2016-08-17 |  |  |  |
|  | 1 | **SD Preparation and Submission of Bill 10-UP-RETAIL** |  | 2016-05-15 | 2016-07-31 |  |  |  |
| B10-UPRT-SDS110 |  | Preparation and Submission of RCP Layout | 21d | 2016-05-15 A | 2016-07-17 | RM-DF-009, RM-DF-009 SS | 70% | 56.3d |

| ID | WBS | Task | Duration | Start | Finish | Predecessors | Complete | Total float |
| --- | --- | --- | --- | --- | --- | --- | --- | --- |
| B10-UPRT-SDS130 |  | Preparation and Submission of Elevation Layout | 21d | 2016-05-15 A | 2016-07-27 | RM-DF-009, B10-UPRT-SDS110 | 60% | 56.3d |
| B10-UPRT-SDS135 |  | Preparation and Submission of Furniture Layout | 21d | 2016-05-15 A | 2016-07-31 | B10-UPRT-SDS130, RM-DF-009 | 90% | 113.2d |
| B10-UPRT-SDS150 |  | Preparation and Submission of Details Layout | 21d | 2016-06-19 A | 2016-07-03 A | RM-DF-009, B10-UPRT-SDS130 SS, B10-UPRT-SDS110 SS, B10-UPRT-SDS110 | 100% |  |
|  | 2 | **SD Approval of Bill 10-UP-RETAIL** |  | 2016-06-12 | 2016-08-17 |  |  |  |
| B10-UPRT-SDA130 |  | Review & Approval of Elevation Layout | 21d | 2016-06-12 A | 2016-08-15 | B10-UPRT-SDS130 | 10% | 80.3d |
| B10-UPRT-SDA170 |  | Review & Approval of Furniture Layout | 21d | 2016-06-12 A | 2016-08-17 | B10-UPRT-SDS135 | 20% | 160.4d |
| B10-UPRT-SDA160 |  | Review & Approval of Details Layout | 21d | 2016-07-03 A | 2016-07-03 A | B10-UPRT-SDS150 | 100% |  |
| B10-UPRT-SDA110 |  | Review & Approval of RCP Layout | 21d | 2016-07-17 | 2016-08-07 | B10-UPRT-SDS110 |  | 90.7d |
|  | 10 | **Shop Drawing Process Bill 11-UP-REST ROOMS** |  | 2016-05-12 | 2016-07-31 |  |  |  |
|  | 1 | **SD Preparation and Submission of Bill 11-UP-REST ROOMS** |  | 2016-05-12 | 2016-07-14 |  |  |  |
| B11-UPRER-SDS110 |  | Preparation and Submission of RCP Layout | 21d | 2016-05-12 A | 2016-07-11 | RM-DF-010, RM-DF-010 SS | 90% | 18.1d |
| B11-UPRER-SDS160 |  | Preparation and Submission of Elevation Layout | 14d | 2016-05-15 A | 2016-07-12 | RM-DF-010, B11-UPRER-SDS110 | 90% | 42.4d |
| B11-UPRER-SDS170 |  | Preparation and Submission of Joinery Layout | 21d | 2016-05-15 A | 2016-07-14 | RM-DF-010, B11-UPRER-SDS160 | 90% | 42.4d |
| B11-UPRER-SDS180 |  | Preparation and Submission of Doors Shop Drawing | 21d | 2016-05-15 A | 2016-05-25 A | RM-DF-010, B11-UPRER-SDS170 | 100% |  |
| B11-UPRER-SDS190 |  | Preparation and Submission of Details Layout | 21d | 2016-05-15 A | 2016-05-25 A | RM-DF-010, B11-UPRER-SDS160 | 100% |  |
|  | 2 | **SD Approval of Bill 11-UP-REST ROOMS** |  | 2016-05-26 | 2016-07-31 |  |  |  |
| B11-UPRER-SDA110 |  | Review & Approval of RCP Layout | 21d | 2016-05-26 A | 2016-07-27 | B11-UPRER-SDS110 | 20% | 24.1d |
| B11-UPRER-SDA160 |  | Review & Approval of Elevation Layout | 21d | 2016-05-26 A | 2016-07-29 | B11-UPRER-SDS160 | 20% | 71.7d |
| B11-UPRER-SDA170 |  | Review & Approval of Joinery Layout | 21d | 2016-05-26 A | 2016-07-31 | B11-UPRER-SDS170 | 20% | 60.6d |
| B11-UPRER-SDA180 |  | Review & Approval of Doors Shop Drawing | 21d | 2016-05-26 A | 2016-07-31 | B11-UPRER-SDS180 | 20% | 128.6d |
| B11-UPRER-SDA190 |  | Review & Approval of Details Layout | 21d | 2016-05-26 A | 2016-07-29 | B11-UPRER-SDS190 | 20% | 62.7d |
|  | 11 | **Shop Drawing Process Bill 12-UP-PRAYER ROOMS** |  | 2016-04-26 | 2016-08-19 |  |  |  |
|  | 1 | **SD Preparation and Submission of Bill 12-UP-PRAYER ROOMS** |  | 2016-04-26 | 2016-07-31 |  |  |  |
| B12-UPPR-SDS160 |  | Preparation and Submission of RCP Layout | 21d | 2016-04-26 A | 2016-07-21 | RM-DF-011, RM-DF-011 SS | 50% | 12.6d |
| B12-UPPR-SDS170 |  | Preparation and Submission of Floor Layout | 21d | 2016-04-26 A | 2016-07-25 | RM-DF-011, B12-UPPR-SDS160 | 90% | 42.7d |
| B12-UPPR-SDS180 |  | Preparation and Submission of Elevation Layout | 21d | 2016-04-26 A | 2016-07-27 | RM-DF-011, B12-UPPR-SDS170 | 90% | 42.7d |
| B12-UPPR-SDS190 |  | Preparation and Submission of Joinery Layout | 21d | 2016-04-26 A | 2016-07-31 | RM-DF-011, B12-UPPR-SDS180 | 90% | 42.7d |
| B12-UPPR-SDS200 |  | Preparation and Submission of Doors Shop Drawing | 21d | 2016-04-26 A | 2016-07-31 | RM-DF-011, B12-UPPR-SDS190 SS | 90% | 42.7d |
| B12-UPPR-SDS210 |  | Preparation and Submission of Details Layout | 21d | 2016-04-26 A | 2016-07-27 | RM-DF-011, B12-UPPR-SDS180 SS | 90% | 47.3d |
|  | 2 | **SD Approval of Bill 12-UP-PRAYER ROOMS** |  | 2016-05-18 | 2016-08-19 |  |  |  |
| B12-UPPR-SDA160 |  | Review & Approval of RCP Layout | 21d | 2016-05-18 A | 2016-08-09 | B12-UPPR-SDS160 | 10% | 18.6d |
| B12-UPPR-SDA170 |  | Review & Approval of Floor Layout | 21d | 2016-05-18 A | 2016-08-05 | B12-UPPR-SDS170 | 50% | 109.9d |
| B12-UPPR-SDA180 |  | Review & Approval of Elevation Layout | 21d | 2016-05-18 A | 2016-07-29 | B12-UPPR-SDS180 | 90% | 68.2d |
| B12-UPPR-SDA190 |  | Review & Approval of Joinery Layout | 21d | 2016-05-18 A | 2016-08-19 | B12-UPPR-SDS190 | 10% | 62.3d |
| B12-UPPR-SDA200 |  | Review & Approval of Doors Shop Drawing | 21d | 2016-05-18 A | 2016-08-11 | B12-UPPR-SDS200 | 50% | 60.7d |
| B12-UPPR-SDA210 |  | Review & Approval of Details Layout | 21d | 2016-05-18 A | 2016-08-13 | B12-UPPR-SDS210 | 20% | 68.5d |
|  | 12 | **Shop Drawing Process Bill 13-UP-RESIDENCES LOBBY** |  | 2016-05-15 | 2016-11-02 |  |  |  |
|  | 1 | **SD Preparation and Submission of Bill 13-UP-RESIDENCES LOBBY** |  | 2016-05-15 | 2016-10-12 |  |  |  |
| B13-UPRL-SDS110 |  | Preparation and Submission of RCP Layout | 21d | 2016-05-15 A | 2016-08-01 | RM-DF-012, RM-DF-012 SS | 15% | 2.45d |
| B13-UPRL-SDS135 |  | Preparation and Submission of Furniture Layout | 14d | 2016-05-15 A | 2016-09-04 | RM-DF-012, B13-UPRL-SDS150 | 15% | 2.45d |
| B13-UPRL-SDS150 |  | Preparation and Submission of Elevation Layout | 14d | 2016-05-15 A | 2016-08-17 | RM-DF-012, B13-UPRL-SDS110 | 15% | 2.45d |
| B13-UPRL-SDS160 |  | Preparation and Submission of Joinery Layout | 14d | 2016-05-29 A | 2016-09-25 | RM-DF-012, B13-UPRL-SDS135 | 15% | 2.45d |
| B13-UPRL-SDS170 |  | Preparation and Submission of Details Layout | 14d | 2016-06-01 A | 2016-10-12 | RM-DF-012, B13-UPRL-SDS160 | 15% | 73.55d |
|  | 2 | **SD Approval of Bill 13-UP-RESIDENCES LOBBY** |  | 2016-08-01 | 2016-11-02 |  |  |  |
| B13-UPRL-SDA110 |  | Review & Approval of RCP Layout | 21d | 2016-08-01 | 2016-08-22 | B13-UPRL-SDS110 |  | 5.15d |
| B13-UPRL-SDA160 |  | Review & Approval of Elevation Layout | 21d | 2016-08-17 | 2016-09-07 | B13-UPRL-SDS150 |  | 40.25d |
| B13-UPRL-SDA190 |  | Review & Approval of Furniture Layout | 21d | 2016-09-04 | 2016-09-28 | B13-UPRL-SDS135 |  | 20.35d |
| B13-UPRL-SDA170 |  | Review & Approval of Joinery Layout | 21d | 2016-09-25 | 2016-10-17 | B13-UPRL-SDS160 |  | 2.45d |
| B13-UPRL-SDA180 |  | Review & Approval of Details Layout | 21d | 2016-10-12 | 2016-11-02 | B13-UPRL-SDS170 |  | 103.55d |
|  | 15 | **Shop Drawing Process Bill 20-UP-COFFEE BAR** |  | 2016-07-05 | 2016-09-28 |  |  |  |
|  | 1 | **SD Preparation and Submission of Bill 20-UP-COFFEE BAR** |  | 2016-07-05 | 2016-09-04 |  |  |  |
| B20-UPCB-SDS150 |  | Preparation and Submission of Floor Layout | 21d | 2016-07-05 | 2016-08-04 | RM-DF-015 |  | 51d |
| B20-UPCB-SDS160 |  | Preparation and Submission of Elevation Layout | 21d | 2016-08-07 | 2016-09-04 | B20-UPCB-SDS150 |  | 51d |
| B20-UPCB-SDS170 |  | Preparation and Submission of Joinery Layout | 21d | 2016-08-07 | 2016-09-04 | B20-UPCB-SDS160 SS |  | 51d |
| B20-UPCB-SDS180 |  | Preparation and Submission of Details Layout | 21d | 2016-08-07 | 2016-09-04 | B20-UPCB-SDS160 SS |  | 51d |
|  | 2 | **SD Approval of Bill 20-UP-COFFEE BAR** |  | 2016-08-05 | 2016-09-28 |  |  |  |
| B20-UPCB-SDA150 |  | Review & Approval of Floor Layout | 21d | 2016-08-05 | 2016-08-25 | B20-UPCB-SDS150 |  | 83d |
| B20-UPCB-SDA160 |  | Review & Approval of Elevation Layout | 21d | 2016-09-05 | 2016-09-28 | B20-UPCB-SDS160 |  | 73d |
| B20-UPCB-SDA170 |  | Review & Approval of Joinery Layout | 21d | 2016-09-05 | 2016-09-28 | B20-UPCB-SDS170 |  | 73d |
| B20-UPCB-SDA180 |  | Review & Approval of Details Layout | 21d | 2016-09-05 | 2016-09-28 | B20-UPCB-SDS180 |  | 73d |
|  | 16 | **Shop Drawing Process Bill 28-LIFT CAR - TOWER A, B & D** |  | 2016-07-05 | 2016-11-17 |  |  |  |
|  | 1 | **SD Preparation and Submission of Bill 28-LIFT CAR - TOWER A, B & D** |  | 2016-07-05 | 2016-10-27 |  |  |  |
| B28-TsLC-SDS110 |  | Preparation and Submission of RCP Layout | 21d | 2016-07-05 | 2016-08-04 | RM-DF-016 |  | 0d |
| B28-TsLC-SDS150 |  | Preparation and Submission of Elevation Layout | 14d | 2016-08-07 | 2016-08-24 | B28-TsLC-SDS110 |  | 0d |
| B28-TsLC-SDS135 |  | Preparation and Submission of Furniture Layout | 21d | 2016-08-25 | 2016-09-27 | B28-TsLC-SDS150 |  | 5d |
| B28-TsLC-SDS170 |  | Preparation and Submission of Details Layout | 21d | 2016-08-25 | 2016-09-27 | B28-TsLC-SDS150 |  | 26d |
| B28-TsLC-SDS160 |  | Preparation and Submission of Joinery Layout | 21d | 2016-09-28 | 2016-10-27 | B28-TsLC-SDS135 |  | 5d |
|  | 2 | **SD Approval of Bill 28-LIFT CAR - TOWER A, B & D** |  | 2016-08-05 | 2016-11-17 |  |  |  |
| B28-TsLC-SDA110 |  | Review & Approval of RCP Layout | 21d | 2016-08-05 | 2016-08-25 | B28-TsLC-SDS110 |  | 8d |
| B28-TsLC-SDA160 |  | Review & Approval of Elevation Layout | 21d | 2016-08-25 | 2016-09-17 | B28-TsLC-SDS150 |  | 0d |

| ID | WBS | Task | Duration | Start | Finish | Predecessors | Complete | Total float |
| --- | --- | --- | --- | --- | --- | --- | --- | --- |
| B28-TsLC-SDA180 |  | Review & Approval of Details Layout | 21d | 2016-09-28 | 2016-10-19 | B28-TsLC-SDS170 |  | 37d |
| B28-TsLC-SDA190 |  | Review & Approval of Furniture Layout | 21d | 2016-09-28 | 2016-10-19 | B28-TsLC-SDS135 |  | 37d |
| B28-TsLC-SDA170 |  | Review & Approval of Joinery Layout | 21d | 2016-10-28 | 2016-11-17 | B28-TsLC-SDS160 |  | 8d |
|  | 17 | **Shop Drawing Process Bill 29-SPA** |  | 2016-07-05 | 2016-11-09 |  |  |  |
|  | 1 | **SD Preparation and Submission of Bill 29-SPA** |  | 2016-07-05 | 2016-10-19 |  |  |  |
| B29-SPA-SDS160 |  | Preparation and Submission of RCP Layout | 10d | 2016-07-05 | 2016-07-20 | RM-DF-017, RM-DF-017 SS |  | 8d |
| B29-SPA-SDS170 |  | Preparation and Submission of Floor Layout | 10d | 2016-07-21 | 2016-08-03 | RM-DF-017, B29-SPA-SDS160, B29-SPA-SDS160 FF |  | 8d |
| B29-SPA-SDS180 |  | Preparation and Submission of Elevation Layout | 10d | 2016-08-04 | 2016-08-17 | RM-DF-017, B29-SPA-SDS170, B29-SPA-SDS170 FF |  | 8d |
| B29-SPA-SDS210 |  | Preparation and Submission of Details Layout | 21d | 2016-08-04 | 2016-09-01 | RM-DF-017, B29-SPA-SDS180 SS |  | 31d |
| B29-SPA-SDS135 |  | Preparation and Submission of Furniture Layout | 10d | 2016-08-18 | 2016-08-31 | RM-DF-017, B29-SPA-SDS180, B29-SPA-SDS180 FF |  | 8d |
| B29-SPA-SDS190 |  | Preparation and Submission of Joinery Layout | 10d | 2016-09-01 | 2016-09-19 | RM-DF-017, B29-SPA-SDS135, B29-SPA-SDS135 FF |  | 8d |
| B29-SPA-SDS200 |  | Preparation and Submission of Doors Shop Drawing | 21d | 2016-09-20 | 2016-10-19 | RM-DF-017, B29-SPA-SDS190 |  | 15d |
|  | 2 | **SD Approval of Bill 29-SPA** |  | 2016-07-21 | 2016-11-09 |  |  |  |
| B29-SPA-SDA170 |  | Review & Approval of RCP Layout | 21d | 2016-07-21 | 2016-08-10 | B29-SPA-SDS160 |  | 27d |
| B29-SPA-SDA180 |  | Review & Approval of Floor Layout | 21d | 2016-08-04 | 2016-08-24 | B29-SPA-SDS170 |  | 46d |
| B29-SPA-SDA190 |  | Review & Approval of Elevation Layout | 21d | 2016-08-18 | 2016-09-07 | B29-SPA-SDS180 |  | 19d |
| B29-SPA-SDA230 |  | Review & Approval of Furniture Layout | 21d | 2016-09-01 | 2016-09-24 | B29-SPA-SDS135 |  | 48d |
| B29-SPA-SDA220 |  | Review & Approval of Details Layout | 21d | 2016-09-02 | 2016-09-25 | B29-SPA-SDS210 |  | 47d |
| B29-SPA-SDA200 |  | Review & Approval of Joinery Layout | 21d | 2016-09-20 | 2016-10-11 | B29-SPA-SDS190 |  | 10d |
| B29-SPA-SDA210 |  | Review & Approval of Doors Shop Drawing | 21d | 2016-10-20 | 2016-11-09 | B29-SPA-SDS200 |  | 21d |
|  | 22 | **Shop Drawing Process Bill 34-UP-SPEAK EASY BAR** |  | 2016-04-04 | 2016-09-25 |  |  |  |
|  | 1 | **SD Preparation and Submission of Bill 34-UP-SPEAK EASY BAR** |  | 2016-04-04 | 2016-09-14 |  |  |  |
| B34-UPSEB-SDS160 |  | Preparation and Submission of RCP Layout | 21d | 2016-04-04 A | 2016-07-21 | RM-DF-020, RM-DF-020 SS | 50% | 5.6d |
| B34-UPSEB-SDS180 |  | Preparation and Submission of Elevation Layout | 10d | 2016-04-04 A | 2016-04-28 A | RM-DF-020, B34-UPSEB-SDS170 | 100% |  |
| B34-UPSEB-SDS190 |  | Preparation and Submission of Joinery Layout | 21d | 2016-04-04 A | 2016-08-28 | RM-DF-020, B34-UPSEB-SDS135 | 50% | 14.6d |
| B34-UPSEB-SDS170 |  | Preparation and Submission of Floor Layout | 10d | 2016-04-18 A | 2016-07-28 | RM-DF-020, B34-UPSEB-SDS160 | 50% | 14.6d |
| B34-UPSEB-SDS200 |  | Preparation and Submission of Doors Shop Drawing | 21d | 2016-05-01 A | 2016-09-14 | RM-DF-020, B34-UPSEB-SDS190 | 50% | 53.5d |
| B34-UPSEB-SDS210 |  | Preparation and Submission of Details Layout | 14d | 2016-05-01 A | 2016-07-17 | RM-DF-020 | 50% | 55d |
| B34-UPSEB-SDS135 |  | Preparation and Submission of Furniture Layout | 21d | 2016-06-19 A | 2016-08-11 | RM-DF-020, B34-UPSEB-SDS180 | 50% | 14.6d |
|  | 2 | **SD Approval of Bill 34-UP-SPEAK EASY BAR** |  | 2016-04-28 | 2016-09-25 |  |  |  |
| B34-UPSEB-SDA190 |  | Review & Approval of Elevation Layout | 21d | 2016-04-28 A | 2016-05-27 A | B34-UPSEB-SDS180 | 100% |  |
| B34-UPSEB-SDA170 |  | Review & Approval of RCP Layout | 21d | 2016-05-06 A | 2016-08-09 | B34-UPSEB-SDS160 | 10% | 9.6d |
| B34-UPSEB-SDA210 |  | Review & Approval of Doors Shop Drawing | 21d | 2016-05-11 A | 2016-09-25 | B34-UPSEB-SDS200 | 50% | 75.5d |
| B34-UPSEB-SDA220 |  | Review & Approval of Details Layout | 21d | 2016-05-11 A | 2016-07-26 | B34-UPSEB-SDS210 | 60% | 77.6d |
| B34-UPSEB-SDA180 |  | Review & Approval of Floor Layout | 21d | 2016-05-20 A | 2016-08-16 | B34-UPSEB-SDS170 | 10% | 58.6d |
| B34-UPSEB-SDA200 |  | Review & Approval of Joinery Layout | 21d | 2016-07-03 A | 2016-09-19 | B34-UPSEB-SDS190 | 10% | 20.6d |
| B34-UPSEB-SDA230 |  | Review & Approval of Furniture Layout | 21d | 2016-07-03 A | 2016-08-30 | B34-UPSEB-SDS135 | 10% | 37.1d |
|  | 20 | **Shop Drawing Process Bill 35-LIFT CAR - TOWER C** |  | 2016-07-05 | 2016-11-08 |  |  |  |
|  | 1 | **SD Preparation and Submission of Bill 35-LIFT CAR - TOWER C** |  | 2016-07-05 | 2016-10-18 |  |  |  |
| B35-TCLC-SDS110 |  | Preparation and Submission of RCP Layout | 21d | 2016-07-05 | 2016-08-04 | RM-DF-021, RM-DF-021 SS |  | 2d |
| B35-TCLC-SDS150 |  | Preparation and Submission of Elevation Layout | 14d | 2016-08-07 | 2016-08-24 | RM-DF-021, B35-TCLC-SDS110 |  | 2d |
| B35-TCLC-SDS160 |  | Preparation and Submission of Joinery Layout | 14d | 2016-08-25 | 2016-09-18 | RM-DF-021, B35-TCLC-SDS150 |  | 2d |
| B35-TCLC-SDS170 |  | Preparation and Submission of Details Layout | 21d | 2016-09-19 | 2016-10-18 | RM-DF-021, B35-TCLC-SDS160 |  | 69d |
|  | 2 | **SD Approval of Bill 35-LIFT CAR - TOWER C** |  | 2016-08-05 | 2016-11-08 |  |  |  |
| B35-TCLC-SDA110 |  | Review & Approval of RCP Layout | 21d | 2016-08-05 | 2016-08-25 | B35-TCLC-SDS110 |  | 29d |
| B35-TCLC-SDA150 |  | Review & Approval of Elevation Layout | 21d | 2016-08-25 | 2016-09-17 | B35-TCLC-SDS150 |  | 24d |
| B35-TCLC-SDA160 |  | Review & Approval of Joinery Layout | 21d | 2016-09-19 | 2016-10-10 | B35-TCLC-SDS160 |  | 2d |
| B35-TCLC-SDA170 |  | Review & Approval of Details Layout | 21d | 2016-10-19 | 2016-11-08 | B35-TCLC-SDS170 |  | 97d |
|  | 21 | **Shop Drawing Process Bill 39-LG- LIFT LOBBY** |  | 2016-07-05 | 2016-12-29 |  |  |  |
|  | 1 | **SD Preparation and Submission of Bill 39-LG- LIFT LOBBY** |  | 2016-07-05 | 2016-12-07 |  |  |  |
| B39-LGLL-SDS110 |  | Preparation and Submission of RCP Layout | 21d | 2016-07-05 | 2016-08-04 | RM-DF-022, RM-DF-022 SS |  | 4d |
| B39-LGLL-SDS150 |  | Preparation and Submission of Elevation Layout | 21d | 2016-08-07 | 2016-09-04 | RM-DF-022, B39-LGLL-SDS110 |  | 4d |
| B39-LGLL-SDS135 |  | Preparation and Submission of Furniture Layout | 21d | 2016-09-05 | 2016-10-09 | RM-DF-022, B39-LGLL-SDS150 |  | 6.33d |
| B39-LGLL-SDS160 |  | Preparation and Submission of Joinery Layout | 21d | 2016-10-10 | 2016-11-07 | RM-DF-022, B39-LGLL-SDS135 |  | 6.33d |
| B39-LGLL-SDS170 |  | Preparation and Submission of Details Layout | 21d | 2016-11-08 | 2016-12-07 | RM-DF-022, B39-LGLL-SDS160 |  | 6.33d |
|  | 2 | **SD Approval of Bill 39-LG- LIFT LOBBY** |  | 2016-08-05 | 2016-12-29 |  |  |  |
| B39-LGLL-SDA110 |  | Review & Approval of RCP Layout | 21d | 2016-08-05 | 2016-08-25 | B39-LGLL-SDS110 |  | 13d |
| B39-LGLL-SDA160 |  | Review & Approval of Elevation Layout | 21d | 2016-09-05 | 2016-09-28 | B39-LGLL-SDS150 |  | 4d |
| B39-LGLL-SDA190 |  | Review & Approvalof Furniture Layout | 21d | 2016-10-10 | 2016-10-30 | B39-LGLL-SDS135 |  | 39d |
| B39-LGLL-SDA170 |  | Review & Approval of Joinery Layout | 21d | 2016-11-08 | 2016-11-28 | B39-LGLL-SDS160 |  | 10d |
| B39-LGLL-SDA180 |  | Review & Approval of Details Layout | 21d | 2016-12-08 | 2016-12-29 | B39-LGLL-SDS170 |  | 10.33d |
|  | 2 | **Material Process** |  | 2016-04-04 | 2016-09-04 |  |  |  |
|  | 1 | **Material Process Bill 2 UP-HOTEL LOBBY** |  | 2016-05-01 | 2016-08-25 |  |  |  |
| B2-UPHL-MS110 |  | Preparation and Submission of Veneer | 30d | 2016-05-01 A | 2016-07-27 | RM-DF-001 | 50% | 64.5d |
| B2-UPHL-MS150 |  | Preparation and Submission of Paint | 30d | 2016-05-01 A | 2016-07-18 | RM-DF-001 | 75% | 40d |
| B2-UPHL-MS160 |  | Preparation and Submission of Glass | 30d | 2016-05-01 A | 2016-07-18 | RM-DF-001 | 75% | 74d |
| B2-UPHL-MS200 |  | Preparation and Submission of Metal | 30d | 2016-05-01 A | 2016-07-27 | RM-DF-001 | 50% | 31.3d |
| B2-UPHL-MS220 |  | Preparation and Submission of Ceiling System | 30d | 2016-05-01 A | 2016-07-14 | RM-DF-001 | 80% | 18d |
| B2-UPHL-MS270 |  | Preparation and Submission of Doors , Ironmongery and Hardware | 30d | 2016-05-01 A | 2016-07-27 | RM-DF-001 | 50% | 75.1d |
| B2-UPHL-MA110 |  | Review & Approval of Veneer | 21d | 2016-05-16 A | 2016-08-07 | B2-UPHL-MS110 | 50% | 92.5d |

| ID | WBS | Task | Duration | Start | Finish | Predecessors | Complete | Total float |
| --- | --- | --- | --- | --- | --- | --- | --- | --- |
| B2-UPHL-MA150 |  | Review & Approval of Paint | 21d | 2016-05-16 A | 2016-07-28 | B2-UPHL-MS150 | 50% | 56d |
| B2-UPHL-MA160 |  | Review & Approval of Glass | 21d | 2016-05-16 A | 2016-07-28 | B2-UPHL-MS160 | 50% | 104d |
| B2-UPHL-MA200 |  | Review & Approval of Metal | 21d | 2016-05-16 A | 2016-08-11 | B2-UPHL-MS200 | 30% | 45.3d |
| B2-UPHL-MA270 |  | Review & Approval of Doors , Ironmongery and Hardware | 21d | 2016-05-16 A | 2016-08-15 | B2-UPHL-MS270 | 10% | 107.1d |
| B2-UPHL-MS210 |  | Preparation and Submission of Tiles | 30d | 2016-06-12 A | 2016-07-27 | RM-DF-001 | 50% | 1d |
| B2-UPHL-MS230 |  | Preparation and Submission of Stone | 30d | 2016-06-12 A | 2016-08-04 | RM-DF-001 | 30% | 0d |
| B2-UPHL-MA220 |  | Review & Approval of Ceiling System | 21d | 2016-07-15 | 2016-08-04 | B2-UPHL-MS220 |  | 26d |
| B2-UPHL-MA210 |  | Review & Approval of Tiles | 21d | 2016-07-28 | 2016-08-17 | B2-UPHL-MS210 |  | 2d |
| B2-UPHL-MA230 |  | Review & Approval of Stone | 21d | 2016-08-05 | 2016-08-25 | B2-UPHL-MS230 |  | 1d |
|  | 2 | **Material Process Bill 3-UP-HOTEL RECEPTION** |  | 2016-05-01 | 2016-08-11 |  |  |  |
| B3-UPHR-MS150 |  | Preparation and Submission of Glass | 30d | 2016-05-01 A | 2016-07-18 | RM-DF-002 | 75% | 40d |
| B3-UPHR-MS160 |  | Preparation and Submission of Metal | 30d | 2016-05-01 A | 2016-07-27 | RM-DF-002 | 50% | 38.3d |
| B3-UPHR-MS190 |  | Preparation and Submission of Ceiling System | 30d | 2016-05-15 A | 2016-07-14 | RM-DF-002 | 80% | 5d |
| B3-UPHR-MA150 |  | Review & Approval of Glass | 21d | 2016-06-01 A | 2016-07-28 | B3-UPHR-MS150 | 50% | 56d |
| B3-UPHR-MA160 |  | Review & Approval of Metal | 21d | 2016-06-01 A | 2016-08-11 | B3-UPHR-MS160 | 30% | 56.3d |
| B3-UPHR-MA190 |  | Review & Approval of Ceiling System | 21d | 2016-07-15 | 2016-08-04 | B3-UPHR-MS190 |  | 9d |
|  | 3 | **Material Process Bill 4-UP-VIP PROTOCOL** |  | 2016-05-01 | 2016-08-15 |  |  |  |
| B4-UPVP-MS110 |  | Preparation and Submission of Veneer | 30d | 2016-05-01 A | 2016-07-27 | RM-DF-003 | 50% | 52d |
| B4-UPVP-MS140 |  | Preparation and Submission of Glass | 30d | 2016-05-01 A | 2016-07-18 | RM-DF-003 | 75% | 64.5d |
| B4-UPVP-MS170 |  | Preparation and Submission of Wall Covering | 30d | 2016-05-01 A | 2016-07-27 | RM-DF-003 | 50% | 62d |
| B4-UPVP-MS190 |  | Preparation and Submission of Ceiling System | 30d | 2016-05-01 A | 2016-07-14 | RM-DF-003 | 80% | 20d |
| B4-UPVP-MS270 |  | Preparation and Submission of Doors , Ironmongery and Hardware | 30d | 2016-05-01 A | 2016-07-27 | RM-DF-003 | 50% | 62d |
| B4-UPVP-MA110 |  | Review & Approval of Veneer | 21d | 2016-05-16 A | 2016-08-07 | B4-UPVP-MS110 | 50% | 74.5d |
| B4-UPVP-MA140 |  | Review & Approval of Glass | 21d | 2016-05-16 A | 2016-07-28 | B4-UPVP-MS140 | 50% | 91d |
| B4-UPVP-MA170 |  | Review & Approval of Wall Covering | 21d | 2016-05-16 A | 2016-08-15 | B4-UPVP-MS170 | 10% | 89.1d |
| B4-UPVP-MA270 |  | Review & Approval of Doors , Ironmongery and Hardware | 21d | 2016-05-16 A | 2016-08-15 | B4-UPVP-MS270 | 10% | 89.1d |
| B4-UPVP-MA190 |  | Review & Approval of Ceiling System | 21d | 2016-07-15 | 2016-08-04 | B4-UPVP-MS190 |  | 29d |
|  | 4 | **Material Process Bill 5-UP-SAFE DEPOSIT** |  | 2016-04-04 | 2016-08-07 |  |  |  |
| B5-UPSD-MS110 |  | Preparation and Submission of Veneer | 30d | 2016-04-04 A | 2016-07-27 | RM-DF-004 | 50% | 56.5d |
| B5-UPSD-MS190 |  | Preparation and Submission of Ceiling System | 30d | 2016-04-04 A | 2016-07-14 | RM-DF-004 | 80% | 4d |
| B5-UPSD-MS270 |  | Preparation and Submission of Doors , Ironmongery and Hardware | 30d | 2016-04-04 A | 2016-05-16 A | RM-DF-004 | 100% |  |
| B5-UPSD-MA110 |  | Review & Approval of Veneer | 21d | 2016-05-16 A | 2016-08-07 | B5-UPSD-MS110 | 50% | 80.5d |
| B5-UPSD-MA270 |  | Review & Approval of Doors , Ironmongery and Hardware | 21d | 2016-05-16 A | 2016-07-25 | B5-UPSD-MS270 | 10% | 114.1d |
| B5-UPSD-MA190 |  | Review & Approval of Ceiling System | 21d | 2016-07-15 | 2016-08-04 | B5-UPSD-MS190 |  | 6d |
|  | 5 | **Material Process Bill 6-UP-HOTEL LIFT LOBBY** |  | 2016-06-01 | 2016-08-11 |  |  |  |
| B6-UPHLL-MA150 |  | Review & Approval of Glass | 21d | 2016-06-01 A | 2016-07-28 | B6-UPHLL-MS150 | 50% | 108d |
| B6-UPHLL-MA160 |  | Review & Approval of Metal | 21d | 2016-06-01 A | 2016-08-11 | B6-UPHLL-MS160 | 30% | 54.3d |
| B6-UPHLL-MS150 |  | Preparation and Submission of Glass | 30d | 2016-06-05 A | 2016-07-18 | RM-DF-005 | 75% | 76d |
| B6-UPHLL-MS160 |  | Preparation and Submission of Metal | 30d | 2016-06-05 A | 2016-07-27 | RM-DF-005 | 50% | 38d |
| B6-UPHLL-MS190 |  | Preparation and Submission of Ceiling System | 30d | 2016-06-05 A | 2016-07-14 | RM-DF-005 | 80% | 20d |
| B6-UPHLL-MA190 |  | Review & Approval of Ceiling System | 21d | 2016-07-15 | 2016-08-04 | B6-UPHLL-MS190 |  | 30d |
|  | 6 | **Material Process Bill 7-UP-RESIDENCE'S LIFT LOBBY** |  | 2016-06-05 | 2016-08-04 |  |  |  |
| B7-UPRLL-MS190 |  | Preparation and Submission of Ceiling System | 30d | 2016-06-05 A | 2016-07-14 | RM-DF-006 | 80% | 16d |
| B7-UPRLL-MA190 |  | Review & Approval of Ceiling System | 21d | 2016-07-15 | 2016-08-04 | B7-UPRLL-MS190 |  | 24d |
|  | 7 | **Material Process Bill 8-UP-FRONT OFFICE** |  | 2016-04-04 | 2016-08-15 |  |  |  |
| B8-UPFO-MS110 |  | Preparation and Submission of Veneer | 30d | 2016-04-04 A | 2016-07-27 | RM-DF-007 | 50% | 57d |
| B8-UPFO-MS190 |  | Preparation and Submission of Ceiling System | 30d | 2016-04-04 A | 2016-07-14 | RM-DF-007 | 80% | 12d |
| B8-UPFO-MS210 |  | Preparation and Submission of Carpet | 30d | 2016-04-04 A | 2016-07-11 | RM-DF-007 | 90% | 78d |
| B8-UPFO-MS270 |  | Preparation and Submission of Doors , Ironmongery and Hardware | 30d | 2016-04-04 A | 2016-07-27 | RM-DF-007 | 50% | 46.1d |
| B8-UPFO-MA110 |  | Review & Approval of Veneer | 21d | 2016-05-16 A | 2016-08-07 | B8-UPFO-MS110 | 50% | 82.5d |
| B8-UPFO-MA270 |  | Review & Approval of Doors , Ironmongery and Hardware | 21d | 2016-06-12 A | 2016-08-15 | B8-UPFO-MS270 | 10% | 66.1d |
| B8-UPFO-MA210 |  | Review & Approval of Carpet | 21d | 2016-07-12 | 2016-08-01 | B8-UPFO-MS210 |  | 110d |
| B8-UPFO-MA190 |  | Review & Approval of Ceiling System | 21d | 2016-07-15 | 2016-08-04 | B8-UPFO-MS190 |  | 18d |
|  | 8 | **Material Process Bill 9-UP-CHOCOLATE BOUTIQUE** |  | 2016-04-04 | 2016-08-17 |  |  |  |
| B9-UPCB-MS150 |  | Preparation and Submission of Paint | 30d | 2016-04-04 A | 2016-07-18 | RM-DF-008 | 75% | 64.5d |
| B9-UPCB-MS190 |  | Preparation and Submission of Metal | 30d | 2016-04-04 A | 2016-07-27 | RM-DF-008 | 50% | 16d |
| B9-UPCB-MA150 |  | Review & Approval of Paint | 21d | 2016-05-16 A | 2016-07-28 | B9-UPCB-MS150 | 50% | 91d |
| B9-UPCB-MA110 |  | Review & Approval of Veneer | 21d | 2016-06-01 A | 2016-08-07 | B9-UPCB-MS110 | 50% | 101.5d |
| B9-UPCB-MA160 |  | Review & Approval of Glass | 21d | 2016-06-01 A | 2016-07-28 | B9-UPCB-MS160 | 50% | 149d |
| B9-UPCB-MA190 |  | Review & Approval of Metal | 21d | 2016-06-01 A | 2016-08-11 | B9-UPCB-MS190 | 30% | 23.3d |
| B9-UPCB-MS110 |  | Preparation and Submission of Veneer | 30d | 2016-06-12 A | 2016-07-27 | RM-DF-008 | 50% | 71.5d |
| B9-UPCB-MS160 |  | Preparation and Submission of Glass | 30d | 2016-06-12 A | 2016-07-18 | RM-DF-008 | 75% | 105d |
| B9-UPCB-MS200 |  | Preparation and Submission of Tiles | 30d | 2016-06-12 A | 2016-07-27 | RM-DF-008 | 50% | 38d |
| B9-UPCB-MS210 |  | Preparation and Submission of Ceiling System | 30d | 2016-06-12 A | 2016-07-14 | RM-DF-008 | 80% | 39d |
| B9-UPCB-MA210 |  | Review & Approval of Ceiling System | 21d | 2016-07-15 | 2016-08-04 | B9-UPCB-MS210 |  | 55d |
| B9-UPCB-MA200 |  | Review & Approval of Tiles | 21d | 2016-07-28 | 2016-08-17 | B9-UPCB-MS200 |  | 55d |
|  | 9 | **Material Process Bill 10-UP-RETAIL** |  | 2016-04-04 | 2016-08-17 |  |  |  |
| B10-UPRT-MS140 |  | Preparation and Submission of Paint | 30d | 2016-04-04 A | 2016-07-18 | RM-DF-009 | 75% | 55d |
| B10-UPRT-MS150 |  | Preparation and Submission of Glass | 30d | 2016-04-04 A | 2016-07-18 | RM-DF-009 | 75% | 70d |
| B10-UPRT-MA140 |  | Review & Approval of Paint | 21d | 2016-05-16 A | 2016-07-28 | B10-UPRT-MS140 | 50% | 79d |

| ID | WBS | Task | Duration | Start | Finish | Predecessors | Complete | Total float |
| --- | --- | --- | --- | --- | --- | --- | --- | --- |
| B10-UPRT-MA150 |  | Review & Approval of Glass | 21d | 2016-06-01 A | 2016-07-28 | B10-UPRT-MS150 | 50% | 100d |
| B10-UPRT-MS180 |  | Preparation and Submission of Tiles | 30d | 2016-06-12 A | 2016-07-27 | RM-DF-009 | 50% | 33d |
| B10-UPRT-MA180 |  | Review & Approval of Tiles | 21d | 2016-07-28 | 2016-08-17 | B10-UPRT-MS180 |  | 49d |
|  | 10 | **Material Process Bill 11-UP-REST ROOMS** |  | 2016-04-04 | 2016-09-04 |  |  |  |
| B11-UPRR-MS110 |  | Preparation and Submission of Veneer | 30d | 2016-04-04 A | 2016-07-27 | RM-DF-010 | 50% | 37.5d |
| B11-UPRR-MS150 |  | Preparation and Submission of Glass | 30d | 2016-04-04 A | 2016-07-18 | RM-DF-010 | 75% | 71d |
| B11-UPRR-MS170 |  | Preparation and Submission of Metal | 30d | 2016-04-04 A | 2016-07-27 | RM-DF-010 | 50% | 40.3d |
| B11-UPRR-MS190 |  | Preparation and Submission of Wall Covering | 30d | 2016-04-04 A | 2016-07-27 | RM-DF-010 | 50% | 36.1d |
| B11-UPRR-MS200 |  | Preparation and Submission of Ceiling System | 30d | 2016-04-04 A | 2016-07-14 | RM-DF-010 | 80% | 10d |
| B11-UPRR-MS280 |  | Preparation and Submission of Doors , Ironmongery and Hardware | 30d | 2016-04-04 A | 2016-07-27 | RM-DF-010 | 50% | 79.1d |
| B11-UPRR-MS290 |  | Preparation and Submission of Sanitary Ware , Fitttings and Accessories | 30d | 2016-04-04 A | 2016-08-14 | RM-DF-010 | 10% | 40d |
| B11-UPRR-MA110 |  | Review & Approval of Veneer | 21d | 2016-05-16 A | 2016-08-07 | B11-UPRR-MS110 | 50% | 53.5d |
| B11-UPRR-MA150 |  | Review & Approval of Glass | 21d | 2016-05-16 A | 2016-07-28 | B11-UPRR-MS150 | 50% | 101d |
| B11-UPRR-MA170 |  | Review & Approval of Metal | 21d | 2016-05-16 A | 2016-08-11 | B11-UPRR-MS170 | 30% | 58.3d |
| B11-UPRR-MA190 |  | Review & Approval of Wall Covering | 21d | 2016-05-16 A | 2016-08-15 | B11-UPRR-MS190 | 10% | 52.1d |
| B11-UPRR-MA280 |  | Review & Approval of Doors , Ironmongery and Hardware | 21d | 2016-05-16 A | 2016-08-15 | B11-UPRR-MS280 | 10% | 113.1d |
| B11-UPRR-MA200 |  | Review & Approval of Ceiling System | 21d | 2016-07-15 | 2016-08-04 | B11-UPRR-MS200 |  | 16d |
| B11-UPRR-MA290 |  | Review & Approval of Sanitary Ware , Fitttings and Accessories | 21d | 2016-08-15 | 2016-09-04 | B11-UPRR-MS290 |  | 58d |
|  | 11 | **Material Process Bill 12-UP-PRAYER ROOMS** |  | 2016-04-04 | 2016-08-15 |  |  |  |
| B12-UPPR-MS110 |  | Preparation and Submission of Veneer | 30d | 2016-04-04 A | 2016-07-27 | RM-DF-011 | 50% | 52d |
| B12-UPPR-MS140 |  | Preparation and Submission of Glass | 30d | 2016-04-04 A | 2016-07-18 | RM-DF-011 | 75% | 138d |
| B12-UPPR-MS170 |  | Preparation and Submission of Wall Covering | 30d | 2016-04-04 A | 2016-07-27 | RM-DF-011 | 50% | 35.1d |
| B12-UPPR-MS190 |  | Preparation and Submission of Ceiling System | 30d | 2016-04-04 A | 2016-07-14 | RM-DF-011 | 80% | 15d |
| B12-UPPR-MS210 |  | Preparation and Submission of Carpet | 30d | 2016-04-04 A | 2016-07-11 | RM-DF-011 | 90% | 81.1d |
| B12-UPPR-MS270 |  | Preparation and Submission of Doors , Ironmongery and Hardware | 30d | 2016-04-04 A | 2016-07-27 | RM-DF-011 | 50% | 38.1d |
| B12-UPPR-MA110 |  | Review & Approval of Veneer | 21d | 2016-05-16 A | 2016-08-07 | B12-UPPR-MS110 | 50% | 74.5d |
| B12-UPPR-MA140 |  | Review & Approval of Glass | 21d | 2016-05-16 A | 2016-07-28 | B12-UPPR-MS140 | 50% | 196d |
| B12-UPPR-MA170 |  | Review & Approval of Wall Covering | 21d | 2016-05-16 A | 2016-08-15 | B12-UPPR-MS170 | 10% | 51.1d |
| B12-UPPR-MA210 |  | Review & Approval of Carpet | 21d | 2016-05-16 A | 2016-07-30 | B12-UPPR-MS210 | 10% | 115.1d |
| B12-UPPR-MA270 |  | Review & Approval of Doors , Ironmongery and Hardware | 21d | 2016-05-16 A | 2016-08-15 | B12-UPPR-MS270 | 10% | 56.1d |
| B12-UPPR-MA190 |  | Review & Approval of Ceiling System | 21d | 2016-07-15 | 2016-08-04 | B12-UPPR-MS190 |  | 23d |
|  | 12 | **Material Process Bill 13-UP-RESIDENCES LOBBY** |  | 2016-04-04 | 2016-08-11 |  |  |  |
| B13-UPRL-MS110 |  | Preparation and Submission of Veneer | 30d | 2016-04-04 A | 2016-07-27 | RM-DF-012 | 50% | 47.5d |
| B13-UPRL-MS150 |  | Preparation and Submission of Metal | 30d | 2016-04-04 A | 2016-07-27 | RM-DF-012 | 50% | 47d |
| B13-UPRL-MS190 |  | Preparation and Submission of Ceiling System | 30d | 2016-04-04 A | 2016-07-14 | RM-DF-012 | 80% | 15d |
| B13-UPRL-MA110 |  | Review & Approval of Veneer | 21d | 2016-05-16 A | 2016-08-07 | B13-UPRL-MS110 | 50% | 69.5d |
| B13-UPRL-MA150 |  | Review & Approval of Metal | 21d | 2016-05-16 A | 2016-08-11 | B13-UPRL-MS150 | 30% | 67.3d |
| B13-UPRL-MA190 |  | Review & Approval of Ceiling System | 21d | 2016-07-15 | 2016-08-04 | B13-UPRL-MS190 |  | 23d |
|  | 15 | **Material Process Bill 20-UP-COFFEE BAR** |  | 2016-04-04 | 2016-08-07 |  |  |  |
| B20-UPCB-MS110 |  | Preparation and Submission of Veneer | 30d | 2016-04-04 A | 2016-07-27 | RM-DF-015 | 50% | 86d |
| B20-UPCB-MA110 |  | Review & Approval of Veneer | 21d | 2016-05-16 A | 2016-08-07 | B20-UPCB-MS110 | 50% | 122.5d |
|  | 16 | **Material Process Bill 28-LIFT CAR - TOWER A, B & D** |  | 2016-04-04 | 2016-08-30 |  |  |  |
| B28-TsLC-MS110 |  | Preparation and Submission of Veneer | 30d | 2016-04-04 A | 2016-07-27 | RM-DF-016 | 50% | 74.5d |
| B28-TsLC-MS150 |  | Preparation and Submission of Glass | 30d | 2016-04-04 A | 2016-07-18 | RM-DF-016 | 75% | 88d |
| B28-TsLC-MS160 |  | Preparation and Submission of Metal | 30d | 2016-04-04 A | 2016-07-27 | RM-DF-016 | 50% | 24.3d |
| B28-TsLC-MS190 |  | Preparation and Submission of Ceiling System | 30d | 2016-04-04 A | 2016-07-14 | RM-DF-016 | 80% | 20d |
| B28-TsLC-MS230 |  | Preparation and Submission of Streached Printed Panel | 30d | 2016-04-04 A | 2016-08-09 | RM-DF-016 | 20% | 45d |
| B28-TsLC-MA110 |  | Review & Approval of Veneer | 21d | 2016-05-16 A | 2016-08-07 | B28-TsLC-MS110 | 50% | 106.5d |
| B28-TsLC-MA150 |  | Review & Approval of Glass | 21d | 2016-05-16 A | 2016-07-28 | B28-TsLC-MS150 | 50% | 124d |
| B28-TsLC-MA160 |  | Review & Approval of Metal | 21d | 2016-05-16 A | 2016-08-11 | B28-TsLC-MS160 | 30% | 34.3d |
| B28-TsLC-MA190 |  | Review & Approval of Ceiling System | 21d | 2016-07-15 | 2016-08-04 | B28-TsLC-MS190 |  | 29d |
| B28-TsLC-MA230 |  | Review & Approval of Streached Printed Panel | 21d | 2016-08-10 | 2016-08-30 | B28-TsLC-MS230 |  | 65d |
|  | 17 | **Material Process Bill 29-SPA** |  | 2016-04-04 | 2016-08-25 |  |  |  |
| B29-SPALC-MS110 |  | Preparation and Submission of Veneer | 30d | 2016-04-04 A | 2016-07-27 | RM-DF-017 | 50% | 65.5d |
| B29-SPALC-MS150 |  | Preparation and Submission of Paint | 30d | 2016-04-04 A | 2016-07-18 | RM-DF-017 | 75% | 54.5d |
| B29-SPALC-MS200 |  | Preparation and Submission of Glass | 30d | 2016-04-04 A | 2016-07-18 | RM-DF-017 | 75% | 80d |
| B29-SPALC-MS220 |  | Preparation and Submission of Metal | 30d | 2016-04-04 A | 2016-07-27 | RM-DF-017 | 50% | 32.3d |
| B29-SPALC-MS230 |  | Preparation and Submission of Wall Covering | 30d | 2016-04-04 A | 2016-07-27 | RM-DF-017 | 50% | 64.1d |
| B29-SPALC-MS250 |  | Preparation and Submission of Ceiling System | 30d | 2016-04-04 A | 2016-07-14 | RM-DF-017 | 80% | 23d |
| B29-SPALC-MS280 |  | Preparation and Submission of Leather and Fabric | 30d | 2016-04-04 A | 2016-07-27 | RM-DF-017 | 50% | 43d |
| B29-SPALC-MS290 |  | Preparation and Submission of Doors , Ironmongery and Hardware | 30d | 2016-04-04 A | 2016-07-27 | RM-DF-017 | 50% | 72d |
| B29-SPALC-MA110 |  | Review & Approval of Veneer | 21d | 2016-05-16 A | 2016-08-07 | B29-SPALC-MS110 | 50% | 93.5d |
| B29-SPALC-MA150 |  | Review & Approval of Paint | 21d | 2016-05-16 A | 2016-07-28 | B29-SPALC-MS150 | 50% | 77d |
| B29-SPALC-MA200 |  | Review & Approval of Glass | 21d | 2016-05-16 A | 2016-07-28 | B29-SPALC-MS200 | 50% | 114d |
| B29-SPALC-MA220 |  | Review & Approval of Metal | 21d | 2016-05-16 A | 2016-08-11 | B29-SPALC-MS220 | 30% | 46.3d |
| B29-SPALC-MA230 |  | Review & Approval of Wall Covering | 21d | 2016-05-16 A | 2016-08-15 | B29-SPALC-MS230 | 10% | 92.1d |
| B29-SPALC-MA290 |  | Review & Approval of Doors , Ironmongery and Hardware | 21d | 2016-05-16 A | 2016-08-15 | B29-SPALC-MS290 | 10% | 103.1d |
| B29-SPALC-MS240 |  | Preparation and Submission of Tiles | 30d | 2016-06-12 A | 2016-07-27 | RM-DF-017 | 50% | 37d |
| B29-SPALC-MS270 |  | Preparation and Submission of Stone | 30d | 2016-06-12 A | 2016-08-04 | RM-DF-017 | 30% | 31d |
| B29-SPALC-MA250 |  | Review & Approval of Ceiling System | 21d | 2016-07-15 | 2016-08-04 | B29-SPALC-MS250 |  | 33d |

| ID | WBS | Task | Duration | Start | Finish | Predecessors | Complete | Total float |
| --- | --- | --- | --- | --- | --- | --- | --- | --- |
| B29-SPALC-MA240 |  | Review & Approval of Tiles | 21d | 2016-07-28 | 2016-08-17 | B29-SPALC-MS240 |  | 53d |
| B29-SPALC-MA280 |  | Review & Approval of Leather and Fabric | 21d | 2016-07-28 | 2016-08-17 | B29-SPALC-MS280 |  | 61d |
| B29-SPALC-MA270 |  | Review & Approval of Stone | 21d | 2016-08-05 | 2016-08-25 | B29-SPALC-MS270 |  | 45d |
|  | 22 | **Material Process Bill 34-UP-SPEAK EASY BAR** |  | 2016-04-04 | 2016-08-25 |  |  |  |
| B34-UPSEB-MS150 |  | Preparation and Submission of Veneer | 30d | 2016-04-04 A | 2016-07-27 | RM-DF-020 | 50% | 42.5d |
| B34-UPSEB-MS200 |  | Preparation and Submission of Solid Wood | 30d | 2016-04-04 A | 2016-07-27 | RM-DF-020 | 50% | 41.1d |
| B34-UPSEB-MS220 |  | Preparation and Submission of Paint | 30d | 2016-04-04 A | 2016-07-18 | RM-DF-020 | 75% | 36d |
| B34-UPSEB-MS230 |  | Preparation and Submission of Glass | 30d | 2016-04-04 A | 2016-07-18 | RM-DF-020 | 75% | 53d |
| B34-UPSEB-MS240 |  | Preparation and Submission of Metal | 30d | 2016-04-04 A | 2016-07-27 | RM-DF-020 | 50% | 22.3d |
| B34-UPSEB-MS250 |  | Preparation and Submission of Wall Covering | 30d | 2016-04-04 A | 2016-07-27 | RM-DF-020 | 50% | 64.1d |
| B34-UPSEB-MS280 |  | Preparation and Submission of Ceiling System | 30d | 2016-04-04 A | 2016-07-14 | RM-DF-020 | 80% | 10d |
| B34-UPSEB-MS300 |  | Preparation and Submission of Leather and Fabric | 30d | 2016-04-04 A | 2016-07-27 | RM-DF-020 | 50% | 71.1d |
| B34-UPSEB-MS310 |  | Preparation and Submission of Doors , Ironmongery and Hardware | 30d | 2016-04-04 A | 2016-07-27 | RM-DF-020 | 50% | 79.1d |
| B34-UPSEB-MA150 |  | Review & Approval of Veneer | 21d | 2016-05-16 A | 2016-08-07 | B34-UPSEB-MS150 | 50% | 60.5d |
| B34-UPSEB-MA200 |  | Review & Approval of Solid Wood | 21d | 2016-05-16 A | 2016-08-15 | B34-UPSEB-MS200 | 10% | 59.1d |
| B34-UPSEB-MA220 |  | Review & Approval of Paint | 21d | 2016-05-16 A | 2016-07-28 | B34-UPSEB-MS220 | 50% | 50d |
| B34-UPSEB-MA230 |  | Review & Approval of Glass | 21d | 2016-05-16 A | 2016-07-28 | B34-UPSEB-MS230 | 50% | 75d |
| B34-UPSEB-MA240 |  | Review & Approval of Metal | 21d | 2016-05-16 A | 2016-08-11 | B34-UPSEB-MS240 | 30% | 32.3d |
| B34-UPSEB-MA250 |  | Review & Approval of Wall Covering | 21d | 2016-05-16 A | 2016-08-15 | B34-UPSEB-MS250 | 10% | 92.1d |
| B34-UPSEB-MA300 |  | Review & Approval of Leather and Fabric | 21d | 2016-05-16 A | 2016-08-15 | B34-UPSEB-MS300 | 10% | 101.1d |
| B34-UPSEB-MA310 |  | Review & Approval of Doors , Ironmongery and Hardware | 21d | 2016-05-16 A | 2016-08-15 | B34-UPSEB-MS310 | 10% | 113.1d |
| B34-UPSEB-MS270 |  | Preparation and Submission of Tiles | 30d | 2016-06-12 A | 2016-07-27 | RM-DF-020 | 50% | 47d |
| B34-UPSEB-MS290 |  | Preparation and Submission of Stone | 30d | 2016-06-12 A | 2016-08-04 | RM-DF-020 | 30% | 9d |
| B34-UPSEB-MA280 |  | Review & Approval of Ceiling System | 21d | 2016-07-15 | 2016-08-04 | B34-UPSEB-MS280 |  | 14d |
| B34-UPSEB-MA270 |  | Review & Approval of Tiles | 21d | 2016-07-28 | 2016-08-17 | B34-UPSEB-MS270 |  | 67d |
| B34-UPSEB-MA290 |  | Review & Approval of Stone | 21d | 2016-08-05 | 2016-08-25 | B34-UPSEB-MS290 |  | 13d |
|  | 20 | **Material Process Bill 35-LIFT CAR - TOWER C** |  | 2016-04-04 | 2016-08-08 |  |  |  |
| B35-TCSR-MS150 |  | Preparation and Submission of Metal | 30d | 2016-04-04 A | 2016-07-24 | RM-DF-021 | 50% | 52.3d |
| B35-TCSR-MS190 |  | Preparation and Submission of Ceiling System | 30d | 2016-04-04 A | 2016-07-13 | RM-DF-021 | 80% | 43d |
| B35-TCSR-MA150 |  | Review & Approval of Metal | 21d | 2016-05-09 A | 2016-08-08 | B35-TCSR-MS150 | 30% | 61.3d |
| B35-TCSR-MA190 |  | Review & Approval of Ceiling System | 21d | 2016-07-14 | 2016-08-03 | B35-TCSR-MS190 |  | 51d |
|  | 21 | **Material Process Bill 39-LG- LIFT LOBBY** |  | 2016-04-04 | 2016-08-08 |  |  |  |
| B39-LGLL-MS110 |  | Preparation and Submission of Veneer | 30d | 2016-04-04 A | 2016-07-24 | RM-DF-021 | 50% | 104.5d |
| B39-LGLL-MS150 |  | Preparation and Submission of Glass | 30d | 2016-04-04 A | 2016-07-16 | RM-DF-021 | 75% | 123d |
| B39-LGLL-MS160 |  | Preparation and Submission of Metal | 30d | 2016-04-04 A | 2016-07-24 | RM-DF-021 | 50% | 44.3d |
| B39-LGLL-MS190 |  | Preparation and Submission of Ceiling System | 30d | 2016-04-04 A | 2016-07-13 | RM-DF-021 | 80% | 30d |
| B39-LGLL-MA110 |  | Review & Approval of Veneer | 21d | 2016-05-09 A | 2016-08-04 | B39-LGLL-MS110 | 50% | 122.5d |
| B39-LGLL-MA150 |  | Review & Approval of Glass | 21d | 2016-05-09 A | 2016-07-26 | B39-LGLL-MS150 | 50% | 144d |
| B39-LGLL-MA160 |  | Review & Approval of Metal | 21d | 2016-05-09 A | 2016-08-08 | B39-LGLL-MS160 | 30% | 52.3d |
| B39-LGLL-MA190 |  | Review & Approval of Ceiling System | 21d | 2016-07-14 | 2016-08-03 | B39-LGLL-MS190 |  | 35d |
|  | 4 | **Procurement Phase** |  | 2016-07-23 | 2017-01-17 |  |  |  |
|  | 1 | **Procurement Process Bill 2 UP-HOTEL LOBBY** |  | 2016-08-15 | 2016-12-01 |  |  |  |
| B2-UPHL-PR120 |  | Fabrication and Delivery of Paint | 56d | 2016-08-15 | 2016-10-14 | B2-UPHL-MA150, KD03, B2-UPHL-SDA190 |  | 38.77d |
| B2-UPHL-PR130 |  | Fabrication and Delivery of Glass | 56d | 2016-08-15 | 2016-10-14 | B2-UPHL-MA160, KD03, B2-UPHL-SDA190, B2-UPHL-SDA220 |  | 86.77d |
| B2-UPHL-PR140 |  | Fabrication and Delivery of Metal | 77d | 2016-08-15 | 2016-11-04 | B2-UPHL-MA200, KD03, B2-UPHL-SDA190 |  | 41.77d |
| B2-UPHL-PR170 |  | Fabrication and Delivery of Tiles | 70d | 2016-08-17 | 2016-10-30 | B2-UPHL-MA210, KD03, B2-UPHL-SDA180, B2-UPHL-SDA190 |  | 2.62d |
| B2-UPHL-PR180 |  | Fabrication and Delivery of Ceiling System | 35d | 2016-08-23 | 2016-09-30 | B2-UPHL-MA220, KD03, B2-UPHL-SDA170 |  | 7.66d |
| B2-UPHL-PR190 |  | Fabrication and Delivery of Stone | 63d | 2016-08-25 | 2016-10-31 | B2-UPHL-MA230, KD03, B2-UPHL-SDA180 |  | 1.62d |
| B2-UPHL-PR100 |  | Fabrication and Delivery of Veneer Works - Joinery | 42d | 2016-09-22 | 2016-11-04 | B2-UPHL-MA110, KD03, B2-UPHL-SDA200, B2-UPHL-SDA220, B2-UPHL-SDA230 |  | 49.7d |
| B2-UPHL-PR260 |  | Fabrication and Delivery of Doors , Ironmongery and Hardware | 49d | 2016-10-12 | 2016-12-01 | B2-UPHL-MA270, KD03, B2-UPHL-SDA220, B2-UPHL-SDA210 |  | 53.85d |
|  | 2 | **Procurement Process Bill 3-UP-HOTEL RECEPTION** |  | 2016-07-28 | 2016-10-31 |  |  |  |
| B3-UPHR-PR130 |  | Fabrication and Delivery of Glass | 56d | 2016-07-28 | 2016-09-25 | B3-UPHR-MA150, KD03, B3-UPHR-SDA130, B3-UPHR-SDA150 |  | 56d |
| B3-UPHR-PR180 |  | Fabrication and Delivery of Ceiling System | 70d | 2016-08-04 | 2016-10-17 | B3-UPHR-MA190, KD03, B3-UPHR-SDA110 |  | 9.62d |
| B3-UPHR-PR140 |  | Fabrication and Delivery of Metal | 77d | 2016-08-11 | 2016-10-31 | B3-UPHR-MA160, KD03 |  | 56.74d |
|  | 3 | **Procurement Process Bill 4-UP-VIP PROTOCOL** |  | 2016-07-23 | 2016-11-10 |  |  |  |
| B4-UPVP-PR110 |  | Fabrication and Delivery of Solid Works - Joinery | 63d | 2016-07-23 | 2016-10-30 | KD03, B4-UPVP-SDA170 |  | 24.7d |
| B4-UPVP-PR180 |  | Fabrication and Delivery of Ceiling System | 42d | 2016-08-04 | 2016-09-18 | B4-UPVP-MA190, KD03, B4-UPVP-SDA140 |  | 29d |
| B4-UPVP-PR100 |  | Fabrication and Delivery of Veneer Works - Joinery | 63d | 2016-09-01 | 2016-11-07 | B4-UPVP-MA110, KD03, B4-UPVP-SDA190, B4-UPVP-SDA210 |  | 49.69d |
| B4-UPVP-PR130 |  | Fabrication and Delivery of Glass | 56d | 2016-09-14 | 2016-11-10 | B4-UPVP-MA140, KD03, B4-UPVP-SDA180, B4-UPVP-SDA200 |  | 46.81d |
| B4-UPVP-PR160 |  | Fabrication and Delivery of Wall Covering | 49d | 2016-09-14 | 2016-11-03 | B4-UPVP-MA170, KD03, B4-UPVP-SDA180, B4-UPVP-SDA200 |  | 62.81d |
| B4-UPVP-PR260 |  | Fabrication and Delivery of Doors , Ironmongery and Hardware | 49d | 2016-09-14 | 2016-11-03 | B4-UPVP-MA270, KD03, B4-UPVP-SDA180, B4-UPVP-SDA200 |  | 62.81d |
|  | 4 | **Procurement Process Bill 5-UP-SAFE DEPOSIT** |  | 2016-08-04 | 2016-11-07 |  |  |  |
| B5-UPSD-PR180 |  | Fabrication and Delivery of Ceiling System | 63d | 2016-08-04 | 2016-10-10 | B5-UPSD-MA190, KD03, B5-UPSD-SDA170 FS-18.67d |  | 6d |
| B5-UPSD-PR260 |  | Fabrication and Delivery of Doors , Ironmongery and Hardware | 49d | 2016-08-30 | 2016-10-22 | B5-UPSD-MA270, KD03, B5-UPSD-SDA210 |  | 78.96d |
| B5-UPSD-PR100 |  | Fabrication and Delivery of Veneer Works - Joinery | 63d | 2016-09-01 | 2016-11-07 | B5-UPSD-MA110, KD03, B5-UPSD-SDA200, B5-UPSD-SDA220 FF+18.67d, B5-UPSD-SDA190, B5-UPSD-SDA230 SS |  | 55.69d |
|  | 5 | **Procurement Process Bill 6-UP-HOTEL LIFT LOBBY** |  | 2016-08-09 | 2016-11-02 |  |  |  |
| B6-UPHLL-PR180 |  | Fabrication and Delivery of Ceiling System | 77d | 2016-08-09 | 2016-10-29 | B6-UPHLL-MA190, KD03, B6-UPHLL-SDA110 |  | 25.85d |
| B6-UPHLL-PR140 |  | Fabrication and Delivery of Metal | 77d | 2016-08-13 | 2016-11-02 | B6-UPHLL-MA160, KD03, B6-UPHLL-SDA130, B6-UPHLL-SDA170 FF+42d |  | 52.19d |
| B6-UPHLL-PR130 |  | Fabrication and Delivery of Glass | 56d | 2016-08-15 | 2016-10-14 | B6-UPHLL-MA150, KD03, B6-UPHLL-SDA130, B6-UPHLL-SDA160 |  | 90.77d |
|  | 6 | **Procurement Process Bill 7-UP-RESIDENCE'S LIFT LOBBY** |  | 2016-08-05 | 2016-10-18 |  |  |  |

| ID | WBS | Task | Duration | Start | Finish | Predecessors | Total float |
| --- | --- | --- | --- | --- | --- | --- | --- |
| B7-UPRLL-PR180 |  | Fabrication and Delivery of Ceiling System | 70d | 2016-08-05 | 2016-10-18 | KD03, B7-UPRLL-MA190, B7-UPRLL-SDA110, B7-UPRLL-SDA170 FF | 23.04d |
|  | 7 | **Procurement Process Bill 8-UP-FRONT OFFICE** |  | 2016-08-04 | 2016-11-21 |  |  |
| B8-UPFO-PR180 |  | Fabrication and Delivery of Ceiling System | 49d | 2016-08-04 | 2016-09-25 | B8-UPFO-MA190, KD03, B8-UPFO-SDA170 | 18.62d |
| B8-UPFO-PR260 |  | Fabrication and Delivery of Doors , Ironmongery and Hardware | 49d | 2016-08-23 | 2016-10-15 | B8-UPFO-MA270, KD03, B8-UPFO-SDA210, B8-UPFO-SDA220 | 58.93d |
| B8-UPFO-PR100 |  | Fabrication and Delivery of Veneer Works - Joinery | 77d | 2016-09-01 | 2016-11-21 | B8-UPFO-MA110, KD03, B8-UPFO-SDA190, B8-UPFO-SDA200, B8-UPFO-SDA220 FF+18.67d, B8-UPFO-SDA230 | 57.69d |
| B8-UPFO-PR200 |  | Fabrication and Delivery of Carpet | 63d | 2016-09-01 | 2016-11-07 | B8-UPFO-MA210, KD03, B8-UPFO-SDA180 | 80.31d |
|  | 8 | **Procurement Process Bill 9-UP-CHOCOLATE BOUTIQUE** |  | 2016-08-09 | 2016-12-05 |  |  |
| B9-UPCB-PR180 |  | Fabrication and Delivery of Ceiling System | 28d | 2016-08-09 | 2016-09-06 | B9-UPCB-MA210, KD03, B9-UPCB-SDA160 | 50.96d |
| B9-UPCB-PR170 |  | Fabrication and Delivery of Tiles | 49d | 2016-08-21 | 2016-10-13 | B9-UPCB-MA200, KD03, B9-UPCB-SDA170 | 51.93d |
| B9-UPCB-PR120 |  | Fabrication and Delivery of Paint | 56d | 2016-08-31 | 2016-10-30 | B9-UPCB-MA150, KD03, B9-UPCB-SDA180 | 57.89d |
| B9-UPCB-PR140 |  | Fabrication and Delivery of Metal | 77d | 2016-08-31 | 2016-11-20 | B9-UPCB-MA190, KD03, B9-UPCB-SDA180 | 3.89d |
| B9-UPCB-PR100 |  | Fabrication and Delivery of Veneer Works - Joinery | 56d | 2016-09-30 | 2016-11-26 | B9-UPCB-MA110, KD03, B9-UPCB-SDA190, B9-UPCB-SDA210 | 50.93d |
| B9-UPCB-PR130 |  | Fabrication and Delivery of Glass | 35d | 2016-10-30 | 2016-12-05 | B9-UPCB-MA160, KD03, B9-UPCB-SDA180, B9-UPCB-SDA200 | 59.96d |
|  | 9 | **Procurement Process Bill 10-UP-RETAIL** |  | 2016-07-28 | 2016-10-16 |  |  |
| B10-UPRT-PR120 |  | Fabrication and Delivery of Paint | 56d | 2016-07-28 | 2016-09-25 | KD03, B10-UPRT-MA140, B10-UPRT-SDA130 SS | 79d |
| B10-UPRT-PR130 |  | Fabrication and Delivery of Glass | 56d | 2016-08-15 | 2016-10-14 | KD03, B10-UPRT-MA150, B10-UPRT-SDA130, B10-UPRT-SDA160 SS, B10-UPRT-SDA110 | 82.77d |
| B10-UPRT-PR170 |  | Fabrication and Delivery of Tiles | 56d | 2016-08-17 | 2016-10-16 | KD03, B10-UPRT-MA180, B10-UPRT-SDS110, RM-DF-009 | 49d |
|  | 10 | **Procurement Process Bill 11-UP-REST ROOMS** |  | 2016-07-29 | 2016-12-02 |  |  |
| B11-UPRR-PR130 |  | Fabrication and Delivery of Glass | 56d | 2016-07-29 | 2016-09-26 | KD03, B11-UPRR-MA150, B11-UPRER-SDA160, B11-UPRER-SDA190 | 100.89d |
| B11-UPRR-PR180 |  | Fabrication and Delivery of Ceiling System | 49d | 2016-08-04 | 2016-09-25 | KD03, B11-UPRR-MA200, B11-UPRER-SDA110 | 16.62d |
| B11-UPRR-PR140 |  | Fabrication and Delivery of Metal | 77d | 2016-08-11 | 2016-10-31 | KD03, B11-UPRR-MA170, B11-UPRER-SDA160 | 58.74d |
| B11-UPRR-PR160 |  | Fabrication and Delivery of Wall Covering | 70d | 2016-08-15 | 2016-10-28 | KD03, B11-UPRR-MA190 | 52.66d |
| B11-UPRR-PR260 |  | Fabrication and Delivery of Doors , Ironmongery and Hardware | 49d | 2016-08-15 | 2016-10-07 | KD03, B11-UPRR-MA280, B11-UPRER-SDA180 | 113.66d |
| B11-UPRR-PR100 |  | Fabrication and Delivery of Veneer Works - Joinery | 70d | 2016-09-01 | 2016-11-14 | KD03, B11-UPRR-MA110, B11-UPRER-SDA170, B11-UPRER-SDA190 | 28.69d |
| B11-UPRR-PR270 |  | Fabrication and Delivery of Sanitary Ware , Fitttings and Accessories | 84d | 2016-09-04 | 2016-12-02 | KD03, B11-UPRR-MA290 | 58.62d |
|  | 11 | **Procurement Process Bill 12-UP-PRAYER ROOMS** |  | 2016-08-09 | 2016-12-06 |  |  |
| B12-UPPR-PR180 |  | Fabrication and Delivery of Ceiling System | 35d | 2016-08-09 | 2016-09-16 | KD03, B12-UPPR-MA190, B12-UPPR-SDA160 | 18.22d |
| B12-UPPR-PR160 |  | Fabrication and Delivery of Wall Covering | 70d | 2016-08-15 | 2016-10-28 | KD03, B12-UPPR-MA170, B12-UPPR-SDA180 | 51.66d |
| B12-UPPR-PR260 |  | Fabrication and Delivery of Doors , Ironmongery and Hardware | 49d | 2016-08-15 | 2016-10-07 | KD03, B12-UPPR-MA270, B12-UPPR-SDA200 | 56.66d |
| B12-UPPR-PR100 |  | Fabrication and Delivery of Veneer Works - Joinery | 91d | 2016-09-01 | 2016-12-06 | KD03, B12-UPPR-MA110, B12-UPPR-SDA190, B12-UPPR-SDA210 | 49.69d |
| B12-UPPR-PR200 |  | Fabrication and Delivery of Carpet | 63d | 2016-09-01 | 2016-11-07 | KD03, B12-UPPR-MA210, B12-UPPR-SDA170 | 83.31d |
|  | 12 | **Procurement Process Bill 13-UP-RESIDENCES LOBBY** |  | 2016-08-22 | 2016-12-21 |  |  |
| B13-UPRL-PR180 |  | Fabrication and Delivery of Ceiling System | 35d | 2016-08-22 | 2016-09-29 | KD03, B13-UPRL-MA190, B13-UPRL-SDA110 | 5.68d |
| B13-UPRL-PR140 |  | Fabrication and Delivery of Metal | 77d | 2016-09-07 | 2016-11-27 | KD03, B13-UPRL-MA150, B13-UPRL-SDA160 | 40.72d |
| B13-UPRL-PR100 |  | Fabrication and Delivery of Veneer Works - Joinery | 63d | 2016-10-17 | 2016-12-21 | KD03, B13-UPRL-MA110, B13-UPRL-SDA170, B13-UPRL-SDA190 | 2.79d |
|  | 15 | **Procurement Process Bill 20-UP-COFFEE BAR** |  | 2016-09-28 | 2016-11-17 |  |  |
| B20-UPCB-PR100 |  | Fabrication and Delivery of Veneer Works - Joinery | 49d | 2016-09-28 | 2016-11-17 | B20-UPCB-MA110, KD03, B20-UPCB-SDA160, B20-UPCB-SDA170, B20-UPCB-SDA180 | 73d |
|  | 16 | **Procurement Process Bill 28-LIFT CAR - TOWER A, B & D** |  | 2016-08-25 | 2016-12-31 |  |  |
| B28-TsLC-PR180 |  | Fabrication and Delivery of Ceiling System | 42d | 2016-08-25 | 2016-10-10 | B28-TsLC-MA190, KD03, B28-TsLC-SDA110 | 8.62d |
| B28-TsLC-PR220 |  | Fabrication and Delivery of Streached Printed Panel | 84d | 2016-08-30 | 2016-11-26 | B28-TsLC-MA230, KD03 | 65.62d |
| B28-TsLC-PR140 |  | Fabrication and Delivery of Metal | 77d | 2016-09-17 | 2016-12-05 | B28-TsLC-MA160, KD03, B28-TsLC-SDA160 | 0.62d |
| B28-TsLC-PR130 |  | Fabrication and Delivery of Glass | 56d | 2016-10-19 | 2016-12-16 | B28-TsLC-MA150, KD03, B28-TsLC-SDA160, B28-TsLC-SDA180 | 45.62d |
| B28-TsLC-PR100 |  | Fabrication and Delivery of Veneer Works - Joinery | 42d | 2016-11-17 | 2016-12-31 | B28-TsLC-MA110, KD03, B28-TsLC-SDA170, B28-TsLC-SDA180, B28-TsLC-SDA190 | 8.62d |
|  | 17 | **Procurement Process Bill 29-SPA** |  | 2016-08-10 | 2016-12-16 |  |  |
| B29-SPALC-PR180 |  | Fabrication and Delivery of Ceiling System | 49d | 2016-08-10 | 2016-10-01 | B29-SPALC-MA250, KD03, B29-SPA-SDA170 | 27.62d |
| B29-SPALC-PR170 |  | Fabrication and Delivery of Tiles | 77d | 2016-08-24 | 2016-11-13 | B29-SPALC-MA240, KD03, B29-SPA-SDA180 | 46.62d |
| B29-SPALC-PR190 |  | Fabrication and Delivery of Stone | 77d | 2016-08-25 | 2016-11-14 | B29-SPALC-MA270, KD03, B29-SPA-SDA180 | 45.62d |
| B29-SPALC-PR120 |  | Fabrication and Delivery of Paint | 56d | 2016-09-07 | 2016-11-06 | B29-SPALC-MA150, KD03, B29-SPA-SDA190 | 36.62d |
| B29-SPALC-PR140 |  | Fabrication and Delivery of Metal | 77d | 2016-09-07 | 2016-11-27 | B29-SPALC-MA220, KD03, B29-SPA-SDA190 | 19.62d |
| B29-SPALC-PR160 |  | Fabrication and Delivery of Wall Covering | 70d | 2016-09-07 | 2016-11-20 | B29-SPALC-MA230, KD03, B29-SPA-SDA190 | 69.62d |
| B29-SPALC-PR130 |  | Fabrication and Delivery of Glass | 56d | 2016-09-25 | 2016-11-21 | B29-SPALC-MA200, KD03, B29-SPA-SDA190, B29-SPA-SDA220 | 58.62d |
| B29-SPALC-PR100 |  | Fabrication and Delivery of Veneer Works - Joinery | 42d | 2016-10-11 | 2016-11-22 | B29-SPALC-MA110, KD03, B29-SPA-SDA200, B29-SPA-SDA220, B29-SPA-SDA230 | 32.62d |
| B29-SPALC-PR210 |  | Fabrication and Delivery of Leather and Fabric | 56d | 2016-10-11 | 2016-12-07 | B29-SPALC-MA280, KD03, B29-SPA-SDA200 | 10.62d |
| B29-SPALC-PR260 |  | Fabrication and Delivery of Doors , Ironmongery and Hardware | 35d | 2016-11-09 | 2016-12-16 | B29-SPALC-MA290, KD03, B29-SPA-SDA210 | 21.62d |
|  | 22 | **Procurement Process Bill 34-UP-SPEAK EASY BAR** |  | 2016-07-28 | 2016-11-29 |  |  |
| B34-UPSEB-PR120 |  | Fabrication and Delivery of Paint | 56d | 2016-07-28 | 2016-09-25 | B34-UPSEB-MA220, KD03, B34-UPSEB-SDA190 | 50.62d |
| B34-UPSEB-PR130 |  | Fabrication and Delivery of Glass | 56d | 2016-07-28 | 2016-09-25 | B34-UPSEB-MA230, KD03, B34-UPSEB-SDA190, B34-UPSEB-SDA220 | 75.62d |
| B34-UPSEB-PR180 |  | Fabrication and Delivery of Ceiling System | 28d | 2016-08-09 | 2016-09-06 | B34-UPSEB-MA280, KD03, B34-UPSEB-SDA170 | 9.85d |
| B34-UPSEB-PR140 |  | Fabrication and Delivery of Metal | 77d | 2016-08-11 | 2016-10-31 | B34-UPSEB-MA240, KD03, B34-UPSEB-SDA190 | 32.74d |
| B34-UPSEB-PR160 |  | Fabrication and Delivery of Wall Covering | 70d | 2016-08-15 | 2016-10-28 | B34-UPSEB-MA250, KD03, B34-UPSEB-SDA190, B34-UPSEB-SDA220 | 92.66d |
| B34-UPSEB-PR210 |  | Fabrication and Delivery of Leather and Fabric | 77d | 2016-08-15 | 2016-11-04 | B34-UPSEB-MA300, KD03 | 101.04d |
| B34-UPSEB-PR170 |  | Fabrication and Delivery of Tiles | 77d | 2016-08-17 | 2016-11-06 | B34-UPSEB-MA270, KD03, B34-UPSEB-SDA190 | 67.62d |
| B34-UPSEB-PR190 |  | Fabrication and Delivery of Stone | 49d | 2016-08-25 | 2016-10-17 | B34-UPSEB-MA290, KD03 | 13.62d |
| B34-UPSEB-PR110 |  | Fabrication and Delivery of Solid Works - Joinery | 63d | 2016-09-01 | 2016-11-07 | B34-UPSEB-MA200, KD03, B34-UPSEB-SDA180, B34-UPSEB-SDA220 FF+18.67d | 42.69d |
| B34-UPSEB-PR100 |  | Fabrication and Delivery of Veneer Works - Joinery | 70d | 2016-09-19 | 2016-11-29 | B34-UPSEB-MA150, KD03, B34-UPSEB-SDA200, B34-UPSEB-SDA230 | 20.22d |
| B34-UPSEB-PR260 |  | Fabrication and Delivery of Doors , Ironmongery and Hardware | 49d | 2016-09-25 | 2016-11-14 | B34-UPSEB-MA310, KD03, B34-UPSEB-SDA210 | 75.81d |
|  | 20 | **Procurement Process Bill 35-LIFT CAR - TOWER C** |  | 2016-08-25 | 2016-12-28 |  |  |
| B35-TCSR-PR180 |  | Fabrication and Delivery of Ceiling System | 42d | 2016-08-25 | 2016-10-10 | B35-TCSR-MA190, KD03, B35-TCLC-SDA110 | 29.62d |
| B35-TCSR-PR140 |  | Fabrication and Delivery of Metal | 77d | 2016-10-10 | 2016-12-28 | B35-TCSR-MA150, KD03, B35-TCLC-SDA150, B35-TCLC-SDA160 | 2.62d |
|  | 21 | **Procurement Process Bill 39-LG- LIFT LOBBY** |  | 2016-08-25 | 2017-01-17 |  |  |

| ID | WBS | Task | Duration | Start | Finish | Predecessors | Complete | Total float |
| --- | --- | --- | --- | --- | --- | --- | --- | --- |
| B39-LGLL-PR180 |  | Fabrication and Delivery of Ceiling System | 42d | 2016-08-25 | 2016-10-10 | B39-LGLL-MA190, KD03, B39-LGLL-SDA110 |  | 13.62d |
| B39-LGLL-PR140 |  | Fabrication and Delivery of Metal | 77d | 2016-09-28 | 2016-12-17 | B39-LGLL-MA160, KD03, B39-LGLL-SDA160 |  | 4.62d |
| B39-LGLL-PR100 |  | Fabrication and Delivery of Veneer Works - Joinery | 28d | 2016-11-28 | 2016-12-28 | B39-LGLL-MA110, KD03, B39-LGLL-SDA170, B39-LGLL-SDA190 |  | 10.62d |
| B39-LGLL-PR130 |  | Fabrication and Delivery of Glass | 35d | 2016-12-13 | 2017-01-17 | B39-LGLL-MA150, KD03, B39-LGLL-SDA160, B39-LGLL-SDA180 FF+18.67d |  | 10.75d |
|  | 5 | **Construction Phase** |  | 2016-06-05 | 2017-02-15 |  |  |  |
|  | 0 | **Mobilization** |  | 2016-06-05 | 2016-07-17 |  |  |  |
| Con000 |  | Site Mobilization | 14d | 2016-06-05 A | 2016-07-17 | RM-SA-000 | 40% | 21.6d |
|  | 1 | **Bill 2 UP-HOTEL LOBBY** |  | 2016-08-07 | 2017-02-14 |  |  |  |
| B2-UPHL-1stP001 |  | MEP 1st , 2nd Fix and Wall System | 0d | 2016-08-07 | 2016-08-07 | RM-SA-001 |  | 3d |
| B2-UPHL-C021 |  | Clearance process for Measurements , Framing&Enabling Works | 5d | 2016-08-07 | 2016-08-11 | B2-UPHL-1stP001 |  | 3d |
| B2-UPHL-C031 |  | Measurements , Framing & Enabling Works | 14d | 2016-08-13 | 2016-08-28 | B2-UPHL-C021 |  | 3d |
| B2-UPHL-C001 |  | Installation of Celling System | 21d | 2016-08-29 | 2016-09-25 | B2-UPHL-1stP001, RM-SA-001, Con000, B2-UPHL-C031 |  | 3d |
| B2-UPHL-2ndP002 |  | MEP Ceiling Closure Clearance | 7d | 2016-09-26 | 2016-10-04 | RM-SA-001, B2-UPHL-C001 |  | 3d |
| B2-UPHL-C002 |  | Ceiling Closure | 21d | 2016-10-05 | 2016-10-29 | B2-UPHL-2ndP002, RM-SA-001, Con000, B2-UPHL-PR180 |  | 3d |
| B2-UPHL-C003 |  | Installation of Wall Tiling | 7d | 2016-11-01 | 2016-11-08 | B2-UPHL-C002, RM-SA-001, Con000, B2-UPHL-PR170, B2-UPHL-PR190 |  | 1d |
| B2-UPHL-3rdP003 |  | Flooring (by others) | 10d | 2016-11-09 | 2016-11-20 | B2-UPHL-C003, RM-SA-001 |  | 1d |
| B2-UPHL-C004 |  | 1st Coat of Paint | 30d | 2016-11-21 | 2016-12-27 | B2-UPHL-3rdP003, RM-SA-001, Con000, B2-UPHL-PR120 |  | 1d |
| B2-UPHL-C006 |  | Installation of Wooden wall panelling | 14d | 2016-11-23 | 2016-12-10 | B2-UPHL-C004 SS+2d, RM-SA-001, Con000, RM-AC-001 |  | 26d |
| B2-UPHL-C007 |  | Installation of Metal panelling | 14d | 2016-11-24 | 2016-12-12 | B2-UPHL-C004 SS+3d, RM-SA-001, Con000, B2-UPHL-PR140 |  | 18d |
| B2-UPHL-C008 |  | Installation of Joinery Works | 14d | 2016-11-24 | 2016-12-12 | B2-UPHL-C004 SS+3d, RM-SA-001, Con000, B2-UPHL-PR100, RM-AC-001 |  | 25d |
| B2-UPHL-C005 |  | Installation of Metal Skirting | 7d | 2016-12-13 | 2016-12-20 | B2-UPHL-C007, RM-SA-001, Con000, B2-UPHL-PR140 |  | 18d |
| B2-UPHL-C011 |  | Installation of Doors & Ironmongery | 7d | 2016-12-13 | 2016-12-20 | RM-SA-001, Con000, B2-UPHL-PR260, RM-AC-001, B2-UPHL-C008 |  | 37d |
| B2-UPHL-C009 |  | Installation of Mirror | 5d | 2016-12-21 | 2016-12-26 | B2-UPHL-C007, B2-UPHL-C006, B2-UPHL-C008, B2-UPHL-C005, RM-SA-001, Con000, B2-UPHL-PR130 |  | 18d |
| B2-UPHL-C010 |  | Installation of Light Fittings | 14d | 2016-12-27 | 2017-01-11 | B2-UPHL-C009, RM-SA-001, Con000 |  | 18d |
| B2-UPHL-C014 |  | Final Coat of Paint | 30d | 2016-12-28 | 2017-01-31 | B2-UPHL-C004 |  | 1d |
| B2-UPHL-C012 |  | FF&E | 5d | 2017-02-01 | 2017-02-06 | B2-UPHL-C004, RM-SA-001, Con000, RM-AC-002, B2-UPHL-C008, B2-UPHL-C007, B2-UPHL-C006, B2-UPHL-C009, B2-UPHL-C011, B2-UPHL-C010, B2-UPHL-C014 |  | 1d |
| B2-UPHL-S13 |  | Snagging and De-Snagging | 7d | 2017-02-07 | 2017-02-14 | B2-UPHL-C012, RM-SA-001, Con000, B2-UPHL-C011, B2-UPHL-C010, B2-UPHL-C014 |  | 1d |
|  | 2 | **Bill 3-UP-HOTEL RECEPTION** |  | 2016-08-14 | 2017-02-08 |  |  |  |
| B3-UPHR-1stP001 |  | MEP 1st , 2nd Fix and Wall System | 0d | 2016-08-14 | 2016-08-14 | RM-SA-002 |  | 6d |
| B3-UPHR-C021 |  | Clearance process for Measurements , Framing&Enabling Works | 5d | 2016-08-14 | 2016-08-18 | B3-UPHR-1stP001 |  | 6d |
| B3-UPHR-C031 |  | Measurements , Framing & Enabling Works | 14d | 2016-08-20 | 2016-09-04 | B3-UPHR-C021 |  | 6d |
| B3-UPHR-C001 |  | Installation of Celling System | 28d | 2016-09-05 | 2016-10-11 | B3-UPHR-1stP001, RM-SA-002, Con000, B3-UPHR-C031 |  | 6d |
| B3-UPHR-2ndP002 |  | MEP Ceiling Closure Clearance | 7d | 2016-10-12 | 2016-10-19 | RM-SA-002, B3-UPHR-C001 |  | 6d |
| B3-UPHR-C002 |  | Ceiling Closure | 28d | 2016-10-20 | 2016-11-21 | B3-UPHR-2ndP002, RM-SA-002, Con000, B3-UPHR-PR180, B3-UPHR-PR130 FF+7d |  | 6d |
| B3-UPHR-3rdP003 |  | Flooring (by others) | 14d | 2016-11-22 | 2016-12-08 | B3-UPHR-C002, RM-SA-002 |  | 6d |
| B3-UPHR-C003 |  | Paint Works | 30d | 2016-12-10 | 2017-01-14 | B3-UPHR-3rdP003, RM-SA-002, Con000 |  | 6d |
| B3-UPHR-C007 |  | Installation of Metal panelling | 14d | 2016-12-14 | 2016-12-29 | B3-UPHR-C003 SS+3d, RM-SA-002, Con000, B3-UPHR-PR140 |  | 13d |
| B3-UPHR-C008 |  | Installation of Joinery Works | 21d | 2016-12-14 | 2017-01-07 | B3-UPHR-C003 SS+3d, RM-SA-002, Con000, RM-AC-002, B3-UPHR-PR130 |  | 6d |
| B3-UPHR-C004 |  | Installation of Metal Skirting | 7d | 2016-12-31 | 2017-01-07 | B3-UPHR-C007, RM-SA-002, Con000, B3-UPHR-PR140 |  | 20d |
| B3-UPHR-C010 |  | Installation of Light Fittings | 14d | 2017-01-08 | 2017-01-23 | B3-UPHR-C007, B3-UPHR-C008, RM-SA-002, Con000 |  | 6d |
| B3-UPHR-C011 |  | FF&E | 7d | 2017-01-24 | 2017-01-31 | B3-UPHR-C003, RM-SA-002, Con000, RM-AC-002, B3-UPHR-C004, B3-UPHR-C008, B3-UPHR-C010 |  | 6d |
| B3-UPHR-S012 |  | Snagging and De-Snagging | 7d | 2017-02-01 | 2017-02-08 | B3-UPHR-C011, RM-SA-002, Con000, B3-UPHR-C010 |  | 6d |
|  | 3 | **Bill 4-UP-VIP PROTOCOL** |  | 2016-07-05 | 2017-01-22 |  |  |  |
| B4-UPVP-1stP001 |  | MEP 1st , 2nd Fix and Wall System | 0d | 2016-07-05 | 2016-07-05 | RM-SA-003 |  | 23d |
| B4-UPVP-C021 |  | Clearance process for Measurements , Framing&Enabling Works | 5d | 2016-07-05 | 2016-07-12 | B4-UPVP-1stP001 |  | 23d |
| B4-UPVP-C031 |  | Measurements , Framing & Enabling Works | 14d | 2016-07-13 | 2016-07-28 | B4-UPVP-C021 |  | 23d |
| B4-UPVP-C001 |  | Installation of Celling System | 21d | 2016-07-30 | 2016-08-22 | B4-UPVP-1stP001, RM-SA-003, Con000, B4-UPVP-C031 |  | 23d |
| B4-UPVP-2ndP002 |  | MEP Ceiling Closure Clearance | 7d | 2016-08-23 | 2016-08-30 | B4-UPVP-C001, RM-SA-003 |  | 23d |
| B4-UPVP-C002 |  | Ceiling Closure | 21d | 2016-08-31 | 2016-09-27 | B4-UPVP-2ndP002, RM-SA-003, Con000, B4-UPVP-PR180 FF+7d |  | 23d |
| B4-UPVP-C003 |  | 1st Coat of Paint | 30d | 2016-09-28 | 2016-11-02 | RM-SA-003, Con000, B4-UPVP-C002 |  | 23d |
| B4-UPVP-C004 |  | Installation of Wooden wall panelling | 21d | 2016-10-03 | 2016-10-26 | B4-UPVP-C003 SS, RM-SA-003, Con000, RM-AC-003 |  | 24d |
| B4-UPVP-C005 |  | Installation of Timber Flooring | 14d | 2016-10-30 | 2016-11-15 | B4-UPVP-C004, RM-SA-003, Con000, B4-UPVP-PR110, RM-AC-003 |  | 21.2d |
| B4-UPVP-C013 |  | Fianl Coat of Paint | 30d | 2016-11-03 | 2016-12-08 | B4-UPVP-C003 |  | 23d |
| B4-UPVP-C006 |  | Installation of Joinery Works | 14d | 2016-11-15 | 2016-12-03 | B4-UPVP-C003 SS, RM-SA-003, Con000, B4-UPVP-PR100 FF, RM-AC-003, B4-UPVP-C005 |  | 21.2d |
| B4-UPVP-C007 |  | Installation of Wall Covering | 14d | 2016-11-15 | 2016-12-03 | RM-SA-003, Con000, B4-UPVP-PR160, B4-UPVP-C005 |  | 42.2d |
| B4-UPVP-C010 |  | Installation of Light Fittings | 14d | 2016-11-15 | 2016-12-03 | B4-UPVP-C005, RM-SA-003, Con000 |  | 49.2d |
| B4-UPVP-C008 |  | Installation of Glazing Works | 21d | 2016-12-03 | 2016-12-28 | B4-UPVP-C005, RM-SA-003, Con000, B4-UPVP-PR130, B4-UPVP-C006 |  | 21.2d |
| B4-UPVP-C011 |  | Installation of Doors & Ironmongery | 7d | 2016-12-10 | 2016-12-18 | RM-SA-003, Con000, B4-UPVP-PR260, B4-UPVP-C003, B4-UPVP-C013, B4-UPVP-C006 |  | 23d |
| B4-UPVP-C009 |  | Installation of Mirror | 14d | 2016-12-19 | 2017-01-03 | B4-UPVP-C005, RM-SA-003, Con000, B4-UPVP-C011, B4-UPVP-C004, B4-UPVP-C006 |  | 23d |
| B4-UPVP-C012 |  | FF&E | 7d | 2016-12-28 | 2017-01-05 | B4-UPVP-C003, RM-SA-003, Con000, B4-UPVP-C008, B4-UPVP-C007, B4-UPVP-C006, B4-UPVP-C005, B4-UPVP-C013 |  | 21.2d |
| B4-UPVP-S013 |  | Snagging and De-Snagging | 14d | 2017-01-05 | 2017-01-22 | B4-UPVP-C012, RM-SA-003, Con000, B4-UPVP-C007, B4-UPVP-C003, B4-UPVP-C006, B4-UPVP-C005, B4-UPVP-C011, B4-UPVP-C009, B4-UPVP-C010, B4-UPVP-C013 |  | 21.2d |
|  | 4 | **Bill 5-UP-SAFE DEPOSIT** |  | 2016-08-07 | 2017-02-14 |  |  |  |
| B5-UPSD-1stP001 |  | MEP 1st , 2nd Fix and Wall System | 0d | 2016-08-07 | 2016-08-07 | RM-SA-004 |  | 1d |
| B5-UPSD-C011 |  | Clearance process for Measurements , Framing&Enabling Works | 5d | 2016-08-07 | 2016-08-11 | B5-UPSD-1stP001 |  | 1d |
| B5-UPSD-C021 |  | Measurements , Framing & Enabling Works | 14d | 2016-08-13 | 2016-08-28 | B5-UPSD-C011 |  | 1d |
| B5-UPSD-C001 |  | Installation of Celling System | 21d | 2016-08-29 | 2016-09-25 | B5-UPSD-1stP001, RM-SA-004, Con000, B5-UPSD-C021 |  | 1d |
| B5-UPSD-2ndP002 |  | MEP Ceiling Closure Clearance | 7d | 2016-09-26 | 2016-10-04 | B5-UPSD-C001, RM-SA-004 |  | 1d |
| B5-UPSD-C002 |  | Ceiling Closure | 21d | 2016-10-05 | 2016-10-29 | B5-UPSD-2ndP002, RM-SA-004, Con000, B5-UPSD-PR180 FF+14d |  | 1d |
| B5-UPSD-3rdP003 |  | Flooring (by others) | 7d | 2016-10-30 | 2016-11-06 | B5-UPSD-C002, RM-SA-004 |  | 1d |
| B5-UPSD-C003 |  | 1st Coat of Paint | 30d | 2016-11-07 | 2016-12-13 | B5-UPSD-3rdP003, RM-SA-004, Con000 |  | 1d |

| ID | WBS | Task | Duration | Start | Finish | Predecessors | Total float |
| --- | --- | --- | --- | --- | --- | --- | --- |
| B5-UPSD-C004 |  | Installation of Wooden wall panelling | 14d | 2016-11-07 | 2016-11-22 | B5-UPSD-C003 SS, RM-SA-004, Con000, RM-AC-004, B5-UPSD-PR100 FF+7d | 40d |
| B5-UPSD-C006 |  | Installation of Light Fittings | 14d | 2016-12-14 | 2016-12-29 | B5-UPSD-C003, RM-SA-004, Con000 | 1d |
| B5-UPSD-C007 |  | Installation of Doors & Ironmongery | 7d | 2016-12-14 | 2016-12-21 | RM-SA-004, Con000, B5-UPSD-PR260, RM-AC-004, B5-UPSD-C003, B5-UPSD-C004 | 24d |
| B5-UPSD-C005 |  | Installation of Joinery Works | 14d | 2016-12-22 | 2017-01-07 | B5-UPSD-C003 SS+3d, RM-SA-004, Con000, B5-UPSD-PR100, RM-AC-004, B5-UPSD-C007 | 24d |
| B5-UPSD-C013 |  | Fianl Coat of Paint | 30d | 2016-12-31 | 2017-02-02 | B5-UPSD-C003, B5-UPSD-C006 | 1d |
| B5-UPSD-C008 |  | FF&E | 3d | 2017-02-04 | 2017-02-06 | B5-UPSD-C003, B5-UPSD-C004, B5-UPSD-C005, RM-SA-004, Con000, B5-UPSD-C013 | 1d |
| B5-UPSD-S009 |  | Snagging and De-Snagging | 7d | 2017-02-07 | 2017-02-14 | B5-UPSD-C008, RM-SA-004, Con000, B5-UPSD-C007, B5-UPSD-C006, B5-UPSD-C013 | 1d |
|  | 5 | **Bill 6-UP-HOTEL LIFT LOBBY** |  | 2016-08-21 | 2017-02-04 |  |  |
| B5-UPSD-C21 |  | Clearance process for Measurements , Framing&Enabling Works | 5d | 2016-08-21 | 2016-08-25 | B6-UPHLL-1stP001 | 10d |
| B6-UPHLL-1stP001 |  | MEP 1st , 2nd Fix and Wall System | 0d | 2016-08-21 | 2016-08-21 | RM-SA-005 | 10d |
| B5-UPSD-C31 |  | Measurements , Framing & Enabling Works | 14d | 2016-08-27 | 2016-09-14 | B5-UPSD-C21 | 10d |
| B6-UPHLL-C001 |  | Installation of Celling System | 28d | 2016-09-15 | 2016-10-18 | B6-UPHLL-1stP001, RM-SA-005, Con000, B5-UPSD-C31 | 10d |
| B6-UPHLL-2ndP002 |  | MEP Ceiling Closure Clearance | 7d | 2016-10-19 | 2016-10-26 | B6-UPHLL-C001, RM-SA-005 | 10d |
| B6-UPHLL-3rdP003 |  | Flooring (by others) | 14d | 2016-10-27 | 2016-11-12 | RM-SA-005, B6-UPHLL-2ndP002 | 10d |
| B6-UPHLL-C002 |  | Ceiling Closure | 28d | 2016-11-13 | 2016-12-17 | B6-UPHLL-2ndP002, RM-SA-005, Con000, B6-UPHLL-PR180, B6-UPHLL-PR140 FF+2d, B6-UPHLL-3rdP003 | 10d |
| B6-UPHLL-C003 |  | Installation of Light Fittings | 14d | 2016-12-18 | 2017-01-02 | B6-UPHLL-3rdP003, RM-SA-005, Con000, B6-UPHLL-C002 | 10d |
| B6-UPHLL-C004 |  | Installation of Mirror | 7d | 2017-01-03 | 2017-01-10 | B6-UPHLL-C003, RM-SA-005, Con000, B6-UPHLL-PR130, RM-AC-005 | 10d |
| B6-UPHLL-C005 |  | FF&E | 7d | 2017-01-11 | 2017-01-18 | B6-UPHLL-C004, RM-SA-005, Con000, RM-AC-006 | 10d |
| B6-UPHLL-S006 |  | Snagging and De-Snagging | 14d | 2017-01-19 | 2017-02-04 | B6-UPHLL-C005, RM-SA-005, Con000 | 10d |
|  | 6 | **Bill 7-UP-RESIDENCE'S LIFT LOBBY** |  | 2016-07-24 | 2017-01-30 |  |  |
| B5-UPSD-C41 |  | Clearance process for Measurements , Framing&Enabling Works | 5d | 2016-07-24 | 2016-07-28 | B7-UPRLL-1stP001 | 15d |
| B7-UPRLL-1stP001 |  | MEP 1st , 2nd Fix and Wall System | 0d | 2016-07-24 | 2016-07-24 | RM-SA-006 | 15d |
| B5-UPSD-C51 |  | Measurements , Framing & Enabling Works | 14d | 2016-07-30 | 2016-08-14 | B5-UPSD-C41 | 15d |
| B7-UPRLL-C001 |  | Installation of Celling System | 28d | 2016-08-15 | 2016-09-19 | B7-UPRLL-1stP001, RM-SA-006, Con000, B5-UPSD-C51 | 15d |
| B7-UPRLL-2ndP002 |  | MEP Ceiling Closure Clearance | 7d | 2016-09-20 | 2016-09-27 | B7-UPRLL-C001, RM-SA-006 | 15d |
| B7-UPRLL-C002 |  | Ceiling Closure | 28d | 2016-09-28 | 2016-10-31 | B7-UPRLL-2ndP002, RM-SA-006, Con000, B7-UPRLL-PR180 FF+7d, B7-UPRLL-SDA160 FF | 15d |
| B7-UPRLL-C012 |  | 1st Coat of Paint | 30d | 2016-10-31 | 2016-11-30 | B7-UPRLL-C002 | 18.64d |
| B7-UPRLL-3rdP003 |  | Flooring (by others) | 7d | 2016-11-01 | 2016-11-08 | B7-UPRLL-C002, RM-SA-006 | 32d |
| B7-UPRLL-C004 |  | Installation of Wooden wall panelling | 21d | 2016-11-01 | 2016-11-24 | RM-SA-006, Con000, RM-AC-006, B7-UPRLL-SDA130, B7-UPRLL-SDA160, B7-UPRLL-C002 | 34d |
| B7-UPRLL-C003 |  | Final Coat of Paint | 30d | 2016-12-01 | 2017-01-05 | B7-UPRLL-3rdP003, RM-SA-006, Con000, B7-UPRLL-SDA130, B7-UPRLL-SDA160, B7-UPRLL-C012 | 14d |
| B7-UPRLL-C005 |  | Installation of Steel wall panelling | 15d | 2016-12-01 | 2016-12-19 | RM-SA-006, Con000, B7-UPRLL-SDA160, B7-UPRLL-C012 | 15d |
| B7-UPRLL-C006 |  | Apply of Sibu Finish | 15d | 2016-12-01 | 2016-12-19 | RM-SA-006, Con000, RM-AC-006, B7-UPRLL-SDA160, B7-UPRLL-C012 | 15d |
| B7-UPRLL-C007 |  | Installation of Light Fittings | 21d | 2016-12-20 | 2017-01-12 | B7-UPRLL-C004, B7-UPRLL-C005, B7-UPRLL-C006, RM-SA-006, Con000 | 15d |
| B7-UPRLL-C008 |  | FF&E | 7d | 2017-01-07 | 2017-01-14 | B7-UPRLL-C003, RM-SA-006, Con000, RM-AC-006, B7-UPRLL-SDA170 | 14d |
| B7-UPRLL-S009 |  | Snagging and De-Snagging | 14d | 2017-01-15 | 2017-01-30 | B7-UPRLL-C007, B7-UPRLL-C008, RM-SA-006, Con000 | 14d |
|  | 7 | **Bill 8-UP-FRONT OFFICE** |  | 2016-07-31 | 2017-01-30 |  |  |
| B5-UPSD-C61 |  | Clearance process for Measurements , Framing&Enabling Works | 5d | 2016-07-31 | 2016-08-04 | B8-UPFO-1stP001 | 14d |
| B8-UPFO-1stP001 |  | MEP 1st , 2nd Fix and Wall System | 0d | 2016-07-31 | 2016-07-31 | RM-SA-007 | 14d |
| B5-UPSD-C71 |  | Measurements , Framing & Enabling Works | 14d | 2016-08-06 | 2016-08-21 | B5-UPSD-C61 | 14d |
| B8-UPFO-C001 |  | Installation of Celling System | 21d | 2016-08-22 | 2016-09-18 | B8-UPFO-1stP001, RM-SA-007, Con000, B5-UPSD-C71 | 14d |
| B8-UPFO-2ndP002 |  | MEP Ceiling Closure Clearance | 7d | 2016-09-19 | 2016-09-26 | B8-UPFO-C001, RM-SA-007 | 14d |
| B8-UPFO-C002 |  | Ceiling Closure | 21d | 2016-09-27 | 2016-10-22 | B8-UPFO-2ndP002, RM-SA-007, Con000, B8-UPFO-PR180 | 14d |
| B8-UPFO-C003 |  | 1st Coat of Paint | 30d | 2016-10-23 | 2016-11-26 | RM-SA-007, Con000, B8-UPFO-C002 | 14d |
| B8-UPFO-C004 |  | Installation of Doors & Ironmongery | 7d | 2016-11-27 | 2016-12-05 | B8-UPFO-C003, RM-SA-007, Con000, B8-UPFO-PR260, RM-AC-007 | 14d |
| B8-UPFO-C013 |  | Final Coat of Paint | 30d | 2016-12-06 | 2017-01-10 | B8-UPFO-C003, B8-UPFO-C004 | 14d |
| B8-UPFO-C014 |  | Installation of Joinery Works | 14d | 2016-12-06 | 2016-12-22 | B8-UPFO-C003, B8-UPFO-PR100 FF+7d, RM-AC-007, B8-UPFO-C004 | 30d |
| B8-UPFO-C005 |  | Installation of Carpet | 7d | 2017-01-11 | 2017-01-18 | B8-UPFO-C004, RM-SA-007, Con000, B8-UPFO-PR200, B8-UPFO-C014, B8-UPFO-C013 | 14d |
| B8-UPFO-C006 |  | FF&E | 3d | 2017-01-19 | 2017-01-22 | B8-UPFO-C004, B8-UPFO-C005, RM-SA-007, Con000, RM-AC-008, B8-UPFO-SDA230, B8-UPFO-C013 | 14d |
| B8-UPFO-S007 |  | Snagging and De-Snagging | 7d | 2017-01-23 | 2017-01-30 | B8-UPFO-C005, B8-UPFO-C006, RM-SA-007, Con000, B8-UPFO-C014, B8-UPFO-C013 | 14d |
|  | 8 | **Bill 9-UP-CHOCOLATE BOUTIQUE** |  | 2016-07-17 | 2017-02-12 |  |  |
| B5-UPSD-C81 |  | Clearance process for Measurements , Framing&Enabling Works | 5d | 2016-07-17 | 2016-07-21 | B9-UPCB-1stP001 | 40d |
| B9-UPCB-1stP001 |  | MEP 1st , 2nd Fix and Wall System | 0d | 2016-07-17 | 2016-07-17 | RM-SA-008 | 40d |
| B5-UPSD-C91 |  | Measurements , Framing & Enabling Works | 14d | 2016-07-23 | 2016-08-07 | B5-UPSD-C81 | 40d |
| B9-UPCB-C001 |  | Installation of Celling System | 21d | 2016-08-08 | 2016-08-31 | B9-UPCB-1stP001, RM-SA-008, Con000, B5-UPSD-C91 | 40d |
| B9-UPCB-2ndP002 |  | MEP Ceiling Closure Clearance | 7d | 2016-09-01 | 2016-09-08 | RM-SA-008, B9-UPCB-C001 | 40d |
| B9-UPCB-C002 |  | Ceiling Closure | 21d | 2016-09-10 | 2016-10-08 | B9-UPCB-2ndP002, RM-SA-008, Con000, B9-UPCB-PR180 | 40d |
| B9-UPCB-C003 |  | Installation of Wall Tiling | 10d | 2016-10-13 | 2016-10-25 | B9-UPCB-C002, RM-SA-008, Con000, B9-UPCB-PR170 | 43.8d |
| B9-UPCB-3rdP003 |  | Flooring (by others) | 10d | 2016-10-25 | 2016-11-06 | B9-UPCB-C003, RM-SA-008 | 43.8d |
| B9-UPCB-C014 |  | Apply of Sibu Finish | 14d | 2016-11-06 | 2016-11-22 | B9-UPCB-C003, RM-SA-008, Con000, B9-UPCB-3rdP003 | 64.8d |
| B9-UPCB-C007 |  | Installation of Metal panelling | 14d | 2016-11-20 | 2016-12-07 | RM-SA-008, Con000, B9-UPCB-PR140, B9-UPCB-C002 | 3.7d |
| B9-UPCB-C005 |  | Installation of Metal Skirting | 3d | 2016-12-07 | 2016-12-12 | B9-UPCB-C007, RM-SA-008, Con000, B9-UPCB-PR140 FF+5d | 45.7d |
| B9-UPCB-C013 |  | Aluminium Works | 14d | 2016-12-07 | 2016-12-25 | B9-UPCB-C007, RM-SA-008, Con000, B9-UPCB-PR140 FF+5d | 3.7d |
| B9-UPCB-C004 |  | Paint Works | 21d | 2016-12-25 | 2017-01-18 | B9-UPCB-3rdP003, RM-SA-008, Con000, B9-UPCB-PR120, B9-UPCB-C013 | 3.7d |
| B9-UPCB-C006 |  | Installation of Wooden wall panelling | 14d | 2016-12-25 | 2017-01-10 | B9-UPCB-C004 SS, RM-SA-008, Con000, B9-UPCB-PR100 FF+7d, RM-AC-008 | 20.7d |
| B9-UPCB-C008 |  | Installation of Joinery Works | 14d | 2016-12-28 | 2017-01-14 | B9-UPCB-C004 SS+3d, RM-SA-008, Con000, B9-UPCB-PR100, RM-AC-008 | 17.7d |
| B9-UPCB-C009 |  | Installation of Mirror | 2d | 2017-01-14 | 2017-01-16 | B9-UPCB-C007, B9-UPCB-C006, B9-UPCB-C008, B9-UPCB-C005, RM-SA-008, Con000, B9-UPCB-PR130 | 17.7d |
| B9-UPCB-C011 |  | Installation of Doors & Ironmongery | 2d | 2017-01-14 | 2017-01-16 | RM-SA-008, Con000, RM-AC-008, B9-UPCB-C008 | 19.7d |
| B9-UPCB-C010 |  | Installation of Light Fittings | 14d | 2017-01-18 | 2017-02-04 | RM-SA-008, Con000, B9-UPCB-C004 | 3.7d |
| B9-UPCB-C012 |  | FF&E | 2d | 2017-01-18 | 2017-01-21 | B9-UPCB-C004, RM-SA-008, Con000, B9-UPCB-C013, B9-UPCB-C008, B9-UPCB-C007, B9-UPCB-C006, B9-UPCB-C009 | 15.7d |
| B9-UPCB-S13 |  | Snagging and De-Snagging | 7d | 2017-02-04 | 2017-02-12 | B9-UPCB-C012, B9-UPCB-C014, RM-SA-008, Con000, B9-UPCB-C011, B9-UPCB-C013, B9-UPCB-C010 | 3.7d |

| ID | WBS | Task | Duration | Start | Finish | Predecessors | Total float |
| --- | --- | --- | --- | --- | --- | --- | --- |
|  | 9 | **Bill 10-UP-RETAIL** |  | 2016-07-31 | 2017-02-02 |  |  |
| B10-UPRT-1stP001 |  | MEP 1st , 2nd Fix and Wall System | 0d | 2016-07-31 | 2016-07-31 | RM-SA-009 | 14d |
| B10-UPRT-3rdP013 |  | Celling System | 35d | 2016-07-31 | 2016-09-04 | B10-UPRT-1stP001 | 16d |
| B10-UPRT-3rdP003 |  | Flooring (by others) | 21d | 2016-09-04 | 2016-10-01 | RM-SA-009, B10-UPRT-1stP001, B10-UPRT-3rdP013 | 11d |
| B5-UPSD-C101 |  | Clearance process for Measurements , Framing&Enabling Works | 5d | 2016-10-03 | 2016-10-08 | B10-UPRT-3rdP003 | 11d |
| B5-UPSD-C111 |  | Measurements , Framing & Enabling Works | 14d | 2016-10-09 | 2016-10-24 | B5-UPSD-C101 | 11d |
| B10-UPRT-C002 |  | Installation of Wall Tiling | 28d | 2016-10-25 | 2016-11-26 | RM-SA-009, Con000, B10-UPRT-PR170 FF+5d, B10-UPRT-1stP001, B10-UPRT-3rdP003, B5-UPSD-C111 | 11d |
| B10-UPRT-C001 |  | Paint Works | 30d | 2016-10-31 | 2016-12-05 | B10-UPRT-1stP001, B10-UPRT-3rdP003, RM-SA-009, Con000, B10-UPRT-PR120 FF+3d, B5-UPSD-C111, B10-UPRT-C002 FF+7d | 11d |
| B10-UPRT-C005 |  | Installation of Glazing Works | 21d | 2016-11-27 | 2016-12-22 | B10-UPRT-C002, RM-SA-009, Con000, B10-UPRT-PR130, RM-AC-009 | 33d |
| B10-UPRT-C004 |  | Aluminium Works | 21d | 2016-12-06 | 2016-12-31 | RM-SA-009, Con000, B10-UPRT-C001 | 11d |
| B10-UPRT-C003 |  | Installation of Light Fittings | 15d | 2017-01-01 | 2017-01-17 | B10-UPRT-C004, B10-UPRT-C002, RM-SA-009, Con000 | 11d |
| B10-UPRT-C006 |  | FF&E | 7d | 2017-01-18 | 2017-01-25 | B10-UPRT-C001, RM-SA-009, Con000, B10-UPRT-C002, B10-UPRT-C003, B10-UPRT-C004, B10-UPRT-C005, B10-UPRT-SDA170 | 11d |
| B10-UPRT-S007 |  | Snagging and De-Snagging | 7d | 2017-01-26 | 2017-02-02 | B10-UPRT-C001, B10-UPRT-C003, B10-UPRT-C004, B10-UPRT-C005, B10-UPRT-C006, RM-SA-009, Con000 | 11d |
|  | 10 | **Bill 11-UP-REST ROOMS** |  | 2016-07-24 | 2017-02-04 |  |  |
| B11-UPRR-1stP001 |  | MEP 1st , 2nd Fix and Wall System | 0d | 2016-07-24 | 2016-07-24 | RM-SA-010 | 10d |
| B5-UPSD-C121 |  | Clearance process for Measurements , Framing&Enabling Works | 5d | 2016-07-24 | 2016-07-28 | B11-UPRR-1stP001 | 10d |
| B5-UPSD-C131 |  | Measurements , Framing & Enabling Works | 14d | 2016-07-30 | 2016-08-14 | B5-UPSD-C121, B5-UPSD-C121 FF, B5-UPSD-C121 SS | 10d |
| B11-UPRR-C001 |  | Installation of Celling System | 30d | 2016-08-15 | 2016-09-21 | B11-UPRR-1stP001, RM-SA-010, Con000, B5-UPSD-C131 | 10d |
| B11-UPRR-2ndP002 |  | MEP Ceiling Closure Clearance | 7d | 2016-09-22 | 2016-09-29 | B11-UPRR-C001, RM-SA-010 | 10d |
| B11-UPRR-C002 |  | Ceiling Closure | 30d | 2016-10-01 | 2016-11-05 | B11-UPRR-2ndP002, RM-SA-010, Con000, B11-UPRR-PR180 | 10d |
| B11-UPRR3rdP003 |  | Flooring (by others) | 14d | 2016-11-06 | 2016-11-21 | B11-UPRR-C002, RM-SA-010 | 10d |
| B11-UPRR-C003 |  | Paint Works | 30d | 2016-11-22 | 2016-12-28 | B11-UPRR3rdP003, RM-SA-010, Con000 | 10d |
| B11-UPRR-C010 |  | Installation of Joinery Works | 14d | 2016-11-22 | 2016-12-08 | B11-UPRR-C003 SS, RM-SA-010, Con000, B11-UPRR-PR100 FF+7d, RM-AC-010 | 10d |
| B11-UPRR-C007 |  | Installation of Wall Covering | 7d | 2016-12-10 | 2016-12-18 | B11-UPRR-C010, RM-SA-010, Con000, B11-UPRR-PR160, RM-AC-010 | 10d |
| B11-UPRR-C004 |  | Installation of Metal Skirting | 7d | 2016-12-19 | 2016-12-26 | B11-UPRR-C007, RM-SA-010, Con000, B11-UPRR-PR140 | 10d |
| B11-UPRR-C008 |  | Installation of Glazing Works | 14d | 2016-12-27 | 2017-01-11 | B11-UPRR-C004, B11-UPRR-C010, RM-SA-010, Con000, B11-UPRR-PR130 | 10d |
| B11-UPRR-C005 |  | Installation of Doors & Ironmongery | 7d | 2017-01-12 | 2017-01-19 | B11-UPRR-C008, RM-SA-010, Con000, B11-UPRR-PR260, RM-AC-010 | 16d |
| B11-UPRR-C006 |  | Installation of Light Fittings | 14d | 2017-01-12 | 2017-01-28 | B11-UPRR-C008, RM-SA-010, Con000 | 10d |
| B11-UPRR-C009 |  | Installation of Sanitary Ware | 7d | 2017-01-12 | 2017-01-19 | B11-UPRR-C008, RM-SA-010, Con000, B11-UPRR-PR270 | 16d |
| B11-UPRR-S011 |  | Snagging and De-Snagging | 7d | 2017-01-28 | 2017-02-04 | B11-UPRR-C009, RM-SA-010, Con000, B11-UPRR-C006 FS-1d, B11-UPRR-C005 | 10d |
|  | 11 | **Bill 12-UP-PRAYER ROOMS** |  | 2016-07-05 | 2017-02-02 |  |  |
| B12-UPPR-1stP001 |  | MEP 1st , 2nd Fix and Wall System | 0d | 2016-07-05 | 2016-07-05 | RM-SA-011 | 11d |
| B5-UPSD-C141 |  | Clearance process for Measurements , Framing&Enabling Works | 5d | 2016-07-05 | 2016-07-12 | B12-UPPR-1stP001 | 11d |
| B5-UPSD-C151 |  | Measurements , Framing & Enabling Works | 14d | 2016-07-13 | 2016-07-28 | B5-UPSD-C141, B5-UPSD-C141 FF, B5-UPSD-C141 SS | 11d |
| B12-UPPR-C001 |  | Installation of Celling System | 28d | 2016-07-30 | 2016-08-30 | B12-UPPR-1stP001, RM-SA-011, Con000, B5-UPSD-C151 | 11d |
| B12-UPPR-2ndP002 |  | MEP Ceiling Closure Clearance | 7d | 2016-08-31 | 2016-09-07 | B12-UPPR-C001, RM-SA-011 | 11d |
| B12-UPPR-C002 |  | Ceiling Closure | 21d | 2016-09-08 | 2016-10-06 | B12-UPPR-2ndP002, RM-SA-011, Con000, B12-UPPR-PR180 FF+14d | 11d |
| B12-UPPR-3rdP003 |  | Flooring (by others) | 7d | 2016-10-08 | 2016-10-15 | B12-UPPR-C002, RM-SA-011 | 11d |
| B12-UPPR-C003 |  | Paint Works | 30d | 2016-10-16 | 2016-11-19 | B12-UPPR-3rdP003, RM-SA-011, Con000 | 11d |
| B12-UPPR-C004 |  | Installation of Doors & Ironmongery | 7d | 2016-11-20 | 2016-11-27 | RM-SA-011, Con000, B12-UPPR-PR260, RM-AC-011, B12-UPPR-C003 | 11d |
| B12-UPPR-C007 |  | Installation of Wall Covering | 7d | 2016-11-20 | 2016-11-27 | B12-UPPR-C003, RM-SA-011, Con000, B12-UPPR-PR160, RM-AC-011 | 25d |
| B12-UPPR-C005 |  | Installation of Light Fittings | 14d | 2016-11-28 | 2016-12-15 | B12-UPPR-C003, RM-SA-011, Con000, B12-UPPR-C004 | 11d |
| B12-UPPR-C006 |  | Installation of Timber Flooring | 14d | 2016-12-17 | 2017-01-01 | B12-UPPR-C003, B12-UPPR-C007, RM-SA-011, Con000, RM-AC-011, B12-UPPR-C005 | 11d |
| B12-UPPR-C009 |  | Installation of Joinery Works | 14d | 2017-01-02 | 2017-01-17 | B12-UPPR-C003 SS, RM-SA-011, Con000, B12-UPPR-PR100 FF+5d, RM-AC-011, B12-UPPR-C004, B12-UPPR-C006 | 11d |
| B12-UPPR-C008 |  | Installation of Carpet | 7d | 2017-01-18 | 2017-01-25 | B12-UPPR-C007, B12-UPPR-C006, B12-UPPR-C009, RM-SA-011, Con000, B12-UPPR-PR200, B12-UPPR-C005 | 11d |
| B12-UPPR-S010 |  | Snagging and De-Snagging | 7d | 2017-01-26 | 2017-02-02 | B12-UPPR-C008, B12-UPPR-C003, RM-SA-011, Con000, B12-UPPR-C005, B12-UPPR-C004 | 11d |
|  | 12 | **Bill 13-UP-RESIDENCES LOBBY** |  | 2016-08-07 | 2017-02-14 |  |  |
| B13-UPRL-1stP001 |  | MEP 1st , 2nd Fix and Wall System | 0d | 2016-08-07 | 2016-08-07 | RM-SA-012 | 1d |
| B5-UPSD-C161 |  | Clearance process for Measurements , Framing&Enabling Works | 5d | 2016-08-07 | 2016-08-11 | B13-UPRL-1stP001 | 1d |
| B5-UPSD-C171 |  | Measurements , Framing & Enabling Works | 14d | 2016-08-13 | 2016-08-28 | B5-UPSD-C161, B5-UPSD-C161 FF, B5-UPSD-C161 SS | 1d |
| B13-UPRL-C001 |  | Installation of Celling System | 21d | 2016-08-29 | 2016-09-25 | B13-UPRL-1stP001, RM-SA-012, Con000, B13-UPRL-1stP001 FF, B5-UPSD-C171 | 1d |
| B13-UPRL-2ndP002 |  | MEP Ceiling Closure Clearance | 7d | 2016-09-26 | 2016-10-04 | RM-SA-012, B13-UPRL-C001 | 1d |
| B13-UPRL-C002 |  | Ceiling Closure | 21d | 2016-10-05 | 2016-10-29 | B13-UPRL-2ndP002, RM-SA-012, Con000, B13-UPRL-PR180 | 1d |
| B13-UPRL-3rdP003 |  | Flooring (by others) | 14d | 2016-10-30 | 2016-11-14 | B13-UPRL-C002, RM-SA-012 | 1d |
| B13-UPRL-C003 |  | Paint Works | 30d | 2016-11-15 | 2016-12-21 | B13-UPRL-3rdP003, RM-SA-012, Con000 | 1d |
| B13-UPRL-C004 |  | Installation of Wooden wall panelling | 14d | 2016-12-22 | 2017-01-07 | B13-UPRL-C003, RM-SA-012, Con000, B13-UPRL-PR100, RM-AC-012 | 1d |
| B13-UPRL-C007 |  | Installation of Metal panelling | 5d | 2017-01-08 | 2017-01-12 | B13-UPRL-C004, RM-SA-012, Con000, B13-UPRL-PR140 | 1d |
| B13-UPRL-C009 |  | Installation of Joinery Works | 15d | 2017-01-08 | 2017-01-24 | B13-UPRL-C003, RM-SA-012, Con000, B13-UPRL-PR100, RM-AC-012, B13-UPRL-C004 | 12d |
| B13-UPRL-C008 |  | Aluminium Works | 5d | 2017-01-09 | 2017-01-14 | B13-UPRL-C007 SS+1d, RM-SA-012, Con000 | 1d |
| B13-UPRL-C005 |  | Installation of Mirror | 5d | 2017-01-15 | 2017-01-19 | B13-UPRL-C004, B13-UPRL-C007, B13-UPRL-C008, RM-SA-012, Con000, RM-AC-012 | 1d |
| B13-UPRL-C006 |  | Installation of Light Fittings | 15d | 2017-01-21 | 2017-02-06 | B13-UPRL-C005, RM-SA-012, Con000 | 1d |
| B13-UPRL-S010 |  | Snagging and De-Snagging | 7d | 2017-02-07 | 2017-02-14 | B13-UPRL-C006, B13-UPRL-C009, B13-UPRL-C003, RM-SA-012, Con000 | 1d |
|  | 15 | **Bill 20-UP-COFFEE BAR** |  | 2016-07-10 | 2016-12-10 |  |  |
| B20-UPCB-1stP001 |  | MEP 1st , 2nd Fix and Wall System | 0d | 2016-07-10 | 2016-07-10 | RM-SA-015 | 71d |
| B20-UPCB-3rdP003 |  | Flooring (by others) | 21d | 2016-07-10 | 2016-08-02 | B20-UPCB-1stP001, RM-SA-015 | 71d |
| B5-UPSD-C221 |  | Clearance process for Measurements , Framing&Enabling Works | 5d | 2016-08-03 | 2016-08-08 | B20-UPCB-1stP001, B20-UPCB-3rdP003, RM-SA-015 | 71d |
| B5-UPSD-C231 |  | Measurements , Framing & Enabling Works | 14d | 2016-08-09 | 2016-08-24 | B5-UPSD-C221 | 71d |
| B20-UPCB-C002 |  | Installation of Timber Flooring | 28d | 2016-09-14 | 2016-10-17 | B20-UPCB-3rdP003, RM-SA-015, Con000, RM-AC-015, B5-UPSD-C231, B20-UPCB-SDA150 | 57d |
| B20-UPCB-C001 |  | Installation of Light Fittings | 28d | 2016-10-18 | 2016-11-19 | B20-UPCB-1stP001, RM-SA-015, Con000, B20-UPCB-3rdP003, B20-UPCB-C002 | 67d |
| B20-UPCB-C003 |  | Installation of Joinery Works | 38d | 2016-10-18 | 2016-12-01 | B20-UPCB-C002, RM-SA-015, Con000, B20-UPCB-PR100 FF+7d, RM-AC-015 | 57d |

| ID | WBS | Task | Duration | Start | Finish | Predecessors | Total float |
| --- | --- | --- | --- | --- | --- | --- | --- |
| B20-UPCB-C004 |  | Snagging and De-Snagging | 7d | 2016-12-03 | 2016-12-10 | B20-UPCB-C003, RM-SA-015, Con000, B20-UPCB-C001 | 57d |
|  | 16 | **Bill 28-LIFT CAR - TOWER A, B & D** |  | 2016-08-14 | 2017-02-15 |  |  |
| B28-TsLC-1stP001 |  | MEP 1st , 2nd Fix and Wall System | 0d | 2016-08-14 | 2016-08-14 | RM-SA-016 | 6d |
| B5-UPSD-C241 |  | Clearance process for Measurements , Framing&Enabling Works | 5d | 2016-08-14 | 2016-08-18 | B28-TsLC-1stP001 | 6d |
| B5-UPSD-C251 |  | Measurements , Framing & Enabling Works | 14d | 2016-08-20 | 2016-09-04 | B5-UPSD-C241 | 6d |
| B28-TsLC-C001 |  | Installation of Celling System | 21d | 2016-09-05 | 2016-10-03 | B28-TsLC-1stP001, RM-SA-016, Con000, B5-UPSD-C251 | 6d |
| B28-TsLC-2ndP002 |  | MEP Ceiling Closure Clearance | 7d | 2016-10-04 | 2016-10-11 | B28-TsLC-C001, RM-SA-016 | 6d |
| B28-TsLC-C002 |  | Ceiling Closure | 21d | 2016-10-12 | 2016-11-05 | B28-TsLC-2ndP002, RM-SA-016, Con000, B28-TsLC-PR180 | 6d |
| B28-TsLC-C009 |  | Installation of Metal Raling | 21d | 2016-11-06 | 2016-11-29 | B28-TsLC-C002, RM-SA-016, Con000 | 46d |
| B28-TsLC-3rdP003 |  | Flooring (by others) | 14d | 2016-11-12 | 2016-11-27 | B28-TsLC-C002 FS+5d, RM-SA-016 | 6d |
| B28-TsLC-C006 |  | Installation of Metal panelling | 14d | 2016-12-06 | 2016-12-22 | B28-TsLC-C002, RM-SA-016, Con000, B28-TsLC-PR140, B28-TsLC-3rdP003 | 0d |
| B28-TsLC-C005 |  | Installation of Light Fittings | 14d | 2016-12-24 | 2017-01-08 | B28-TsLC-C002, RM-SA-016, Con000, B28-TsLC-3rdP003, B28-TsLC-C006 | 0d |
| B28-TsLC-C004 |  | Installation of Wooden wall panelling | 14d | 2017-01-09 | 2017-01-24 | B28-TsLC-C002, RM-SA-016, Con000, B28-TsLC-PR100, RM-AC-016, B28-TsLC-C005 | 0d |
| B28-TsLC-C003 |  | Installation of Metal Skirting | 5d | 2017-01-25 | 2017-01-30 | B28-TsLC-3rdP003, B28-TsLC-C004, B28-TsLC-C005, B28-TsLC-C006, B28-TsLC-C009, RM-SA-016, Con000, B28-TsLC-PR140 | 0d |
| B28-TsLC-C007 |  | Installation of Glazing Works | 7d | 2017-01-31 | 2017-02-07 | RM-SA-016, B28-TsLC-C006, B28-TsLC-C005, B28-TsLC-C004, B28-TsLC-C003, B28-TsLC-C009, Con000, B28-TsLC-PR130 | 0d |
| B28-TsLC-C008 |  | Installation of Wall Covering | 5d | 2017-01-31 | 2017-02-05 | B28-TsLC-C004, B28-TsLC-C005, B28-TsLC-C006, B28-TsLC-C009, B28-TsLC-C003, RM-SA-016, Con000, B28-TsLC-PR220, RM-AC-016 | 2d |
| B28-TsLC-S010 |  | Snagging and De-Snagging | 7d | 2017-02-08 | 2017-02-15 | B28-TsLC-C008, RM-SA-016, B28-TsLC-C007, Con000 | 0d |
|  | 17 | **Bill 29-SPA** |  | 2016-08-07 | 2017-02-06 |  |  |
| B29-SPALC-1stP001 |  | MEP 1st , 2nd Fix and Wall System | 0d | 2016-08-07 | 2016-08-07 | RM-SA-017 | 14d |
| B5-UPSD-C261 |  | Clearance process for Measurements , Framing&Enabling Works | 5d | 2016-08-07 | 2016-08-11 | B29-SPALC-1stP001 | 14d |
| B5-UPSD-C271 |  | Measurements , Framing & Enabling Works | 14d | 2016-08-13 | 2016-08-28 | B5-UPSD-C261 | 14d |
| B29-SPALC-C001 |  | Installation of Celling System | 28d | 2016-08-29 | 2016-10-04 | B29-SPALC-1stP001, RM-SA-017, Con000, B5-UPSD-C271 | 14d |
| B29-SPALC-2ndP002 |  | MEP Ceiling Closure Clearance | 7d | 2016-10-05 | 2016-10-12 | B29-SPALC-C001, RM-SA-017 | 14d |
| B29-SPALC-C002 |  | Ceiling Closure | 28d | 2016-10-13 | 2016-11-14 | B29-SPALC-2ndP002, RM-SA-017, Con000, B29-SPALC-PR180 | 14d |
| B29-SPALC-3rdP003 |  | Flooring (by others) | 10d | 2016-11-15 | 2016-11-26 | B29-SPALC-C002, RM-SA-017 | 14d |
| B29-SPALC-C003 |  | Paint Works | 30d | 2016-11-27 | 2017-01-02 | B29-SPALC-3rdP003, RM-SA-017, Con000, B29-SPALC-PR120 | 14d |
| B29-SPALC-C004 |  | Installation of Wall Tiling | 10d | 2016-11-27 | 2016-12-08 | B29-SPALC-C003 SS, RM-SA-017, Con000, B29-SPALC-PR170, B29-SPALC-PR190 | 28d |
| B29-SPALC-C017 |  | Installation of Steel wall panelling | 21d | 2016-12-01 | 2016-12-26 | B29-SPALC-C003 SS+3d, RM-SA-017, Con000, B29-SPALC-PR140 | 14d |
| B29-SPALC-C011 |  | Installation of Wooden wall panelling | 21d | 2016-12-08 | 2017-01-02 | B29-SPALC-C003 SS+3d, RM-SA-017, Con000, RM-AC-017, B29-SPALC-PR210, B29-SPALC-PR100 FF+7d | 8d |
| B29-SPALC-C015 |  | Installation of Joinery Works | 14d | 2016-12-08 | 2016-12-25 | B29-SPALC-C003 SS+3d, RM-SA-017, Con000, B29-SPALC-PR100, RM-AC-017, B29-SPALC-PR210 | 15d |
| B29-SPALC-C007 |  | Installation of Doors & Ironmongery | 5d | 2016-12-17 | 2016-12-21 | B29-SPALC-C003 SS+3d, RM-SA-017, Con000, RM-AC-017, B29-SPALC-PR260 | 18d |
| B29-SPALC-C005 |  | Installation of Metal Skirting | 7d | 2017-01-03 | 2017-01-10 | B29-SPALC-C004, B29-SPALC-C007, B29-SPALC-C011, B29-SPALC-C015, B29-SPALC-C017, RM-SA-017, Con000, B29-SPALC-PR140 | 15d |
| B29-SPALC-C006 |  | Installation of Mirror | 7d | 2017-01-03 | 2017-01-10 | B29-SPALC-C004, B29-SPALC-C007, B29-SPALC-C011, B29-SPALC-C015, B29-SPALC-C017, RM-SA-017, Con000, B29-SPALC-PR130 | 15d |
| B29-SPALC-C008 |  | Installation of Light Fittings | 14d | 2017-01-03 | 2017-01-18 | B29-SPALC-C004, B29-SPALC-C007, B29-SPALC-C011, B29-SPALC-C015, B29-SPALC-C017, RM-SA-017, Con000 | 8d |
| B29-SPALC-C009 |  | Installation of Timber Flooring | 14d | 2017-01-03 | 2017-01-18 | B29-SPALC-C004, B29-SPALC-C007, B29-SPALC-C011, B29-SPALC-C015, B29-SPALC-C017, RM-SA-017, Con000, RM-AC-017 | 8d |
| B29-SPALC-C012 |  | Installation of Floor Tiling | 14d | 2017-01-03 | 2017-01-18 | B29-SPALC-C004, B29-SPALC-C007, B29-SPALC-C011, B29-SPALC-C015, B29-SPALC-C017, RM-SA-017, Con000, B29-SPALC-PR170, B29-SPALC-PR190 | 8d |
| B29-SPALC-C010 |  | Installation of Wall Covering | 7d | 2017-01-19 | 2017-01-26 | B29-SPALC-C005, B29-SPALC-C006, B29-SPALC-C008, B29-SPALC-C009, B29-SPALC-C012, B29-SPALC-C003, RM-SA-017, Con000, B29-SPALC-PR160, RM-AC-017, B29-SPALC-PR210 | 10d |
| B29-SPALC-C013 |  | Installation of Glazing Works | 9d | 2017-01-19 | 2017-01-29 | B29-SPALC-C005, B29-SPALC-C006, B29-SPALC-C008, B29-SPALC-C009, B29-SPALC-C012, RM-SA-017, Con000, B29-SPALC-PR130, RM-AC-017 | 8d |
| B29-SPALC-C014 |  | Installation of Sanitary Ware | 9d | 2017-01-19 | 2017-01-29 | B29-SPALC-C005, B29-SPALC-C006, B29-SPALC-C008, B29-SPALC-C009, B29-SPALC-C012, RM-SA-017, Con000 | 8d |
| B29-SPALC-S018 |  | Snagging and De-Snagging | 7d | 2017-01-30 | 2017-02-06 | B29-SPALC-C003, B29-SPALC-C010, B29-SPALC-C013, B29-SPALC-C014, RM-SA-017, Con000 | 8d |
|  | 18 | **Bill 34-UP-SPEAK EASY BAR** |  | 2016-07-05 | 2017-02-07 |  |  |
| B34-UPSEB-1stP001 |  | MEP 1st , 2nd Fix and Wall System | 0d | 2016-07-05 | 2016-07-05 | RM-SA-020 | 14d |
| B5-UPSD-C301 |  | Clearance process for Measurements , Framing&Enabling Works | 5d | 2016-07-05 | 2016-07-12 | B34-UPSEB-1stP001 | 14d |
| B5-UPSD-C311 |  | Measurements , Framing & Enabling Works | 14d | 2016-07-12 | 2016-07-27 | B5-UPSD-C301 FS-1d | 14d |
| B34-UPSEB-C001 |  | Installation of Celling System | 21d | 2016-07-28 | 2016-08-21 | B34-UPSEB-1stP001, RM-SA-020, Con000, B5-UPSD-C311 | 14d |
| B34-UPSEB-2ndP002 |  | MEP Ceiling Closure Clearance | 7d | 2016-08-22 | 2016-08-29 | B34-UPSEB-C001, RM-SA-020 | 14d |
| B34-UPSEB-C002 |  | Ceiling Closure | 21d | 2016-09-06 | 2016-10-05 | B34-UPSEB-2ndP002, RM-SA-020, Con000, B34-UPSEB-PR180 | 7.6d |
| B34-UPSEB-3rdP003 |  | Flooring (by others) | 14d | 2016-10-05 | 2016-10-22 | RM-SA-020, B34-UPSEB-C002 | 7.6d |
| B34-UPSEB-C004 |  | Installation of Wall Tiling | 14d | 2016-10-22 | 2016-11-07 | RM-SA-020, Con000, B34-UPSEB-PR190, B34-UPSEB-3rdP003 | 7.6d |
| B34-UPSEB-C003 |  | Paint Works | 21d | 2016-11-07 | 2016-12-03 | B34-UPSEB-3rdP003, RM-SA-020, Con000, B34-UPSEB-PR120, B34-UPSEB-C004 | 7.6d |
| B34-UPSEB-C011 |  | Installation of Wooden wall panelling | 21d | 2016-11-10 | 2016-12-06 | B34-UPSEB-C003 SS+3d, RM-SA-020, Con000, RM-AC-020, B34-UPSEB-C002 | 18.6d |
| B34-UPSEB-C017 |  | Installation of Steel wall panelling | 21d | 2016-11-10 | 2016-12-06 | B34-UPSEB-C003 SS+3d, RM-SA-020, Con000, B34-UPSEB-PR140 | 18.6d |
| B34-UPSEB-C015 |  | Installation of Joinery Works | 14d | 2016-12-03 | 2016-12-20 | B34-UPSEB-C003, RM-SA-020, Con000, B34-UPSEB-PR110 FF+7d, B34-UPSEB-PR130, B34-UPSEB-PR100 FF+7d, RM-AC-020 | 7.6d |
| B34-UPSEB-C005 |  | Installation of Metal Skirting | 7d | 2016-12-20 | 2016-12-28 | B34-UPSEB-C011, B34-UPSEB-C015, B34-UPSEB-C017, RM-SA-020, Con000, B34-UPSEB-PR140 | 21.6d |
| B34-UPSEB-C006 |  | Installation of Mirror | 7d | 2016-12-20 | 2016-12-28 | B34-UPSEB-C011, B34-UPSEB-C015, B34-UPSEB-C017, RM-SA-020, Con000, B34-UPSEB-PR130 | 21.6d |
| B34-UPSEB-C008 |  | Installation of Light Fittings | 14d | 2016-12-20 | 2017-01-05 | B34-UPSEB-C011, B34-UPSEB-C015, B34-UPSEB-C017, RM-SA-020, Con000, B34-UPSEB-C002 | 14.6d |
| B34-UPSEB-C009 |  | Installation of Timber Flooring | 21d | 2016-12-20 | 2017-01-14 | B34-UPSEB-C011, B34-UPSEB-C015, B34-UPSEB-C017, RM-SA-020, Con000, RM-AC-020, B34-UPSEB-C002 | 7.6d |
| B34-UPSEB-C012 |  | Installation of Floor Tiling | 7d | 2016-12-20 | 2016-12-28 | B34-UPSEB-C011, B34-UPSEB-C015, B34-UPSEB-C017, RM-SA-020, Con000, B34-UPSEB-PR170, B34-UPSEB-C002 | 21.6d |
| B34-UPSEB-C010 |  | Installation of Wall Covering | 7d | 2017-01-14 | 2017-01-22 | B34-UPSEB-C005, B34-UPSEB-C006, B34-UPSEB-C008, B34-UPSEB-C009, B34-UPSEB-C012, B34-UPSEB-C003, RM-SA-020, Con000, B34-UPSEB-PR160, RM-AC-020, B34-UPSEB-C002 | 14.6d |
| B34-UPSEB-C013 |  | Installation of Glazing Works | 7d | 2017-01-14 | 2017-01-22 | B34-UPSEB-C005, B34-UPSEB-C006, B34-UPSEB-C008, B34-UPSEB-C009, B34-UPSEB-C012, RM-SA-020, Con000, RM-AC-020 | 7.6d |
| B34-UPSEB-C014 |  | Installation of Sanitary Ware | 7d | 2017-01-14 | 2017-01-22 | B34-UPSEB-C005, B34-UPSEB-C006, B34-UPSEB-C008, B34-UPSEB-C009, B34-UPSEB-C012, RM-SA-020, Con000 | 14.6d |
| B34-UPSEB-C016 |  | Sanitary Ware | 7d | 2017-01-14 | 2017-01-22 | B34-UPSEB-C005, B34-UPSEB-C006, B34-UPSEB-C008, B34-UPSEB-C009, B34-UPSEB-C012, RM-SA-020, Con000 | 14.6d |
| B34-UPSEB-C007 |  | Installation of Doors & Ironmongery | 7d | 2017-01-22 | 2017-01-30 | RM-SA-020, Con000, B34-UPSEB-PR260, RM-AC-020, B34-UPSEB-C013 | 7.6d |
| B34-UPSEB-S018 |  | Snagging and De-Snagging | 7d | 2017-01-30 | 2017-02-07 | B34-UPSEB-C003, B34-UPSEB-C010, B34-UPSEB-C013, B34-UPSEB-C014, B34-UPSEB-C016, RM-SA-020, Con000, B34-UPSEB-C007 | 7.6d |
|  | 20 | **Bill 35-LIFT CAR - TOWER C** |  | 2016-08-07 | 2017-02-14 |  |  |
| B35-TCSR-1stP001 |  | MEP 1st , 2nd Fix and Wall System | 0d | 2016-08-07 | 2016-08-07 | RM-SA-021 | 23d |
| B5-UPSD-C321 |  | Clearance process for Measurements , Framing&Enabling Works | 5d | 2016-08-07 | 2016-08-11 | B35-TCSR-1stP001 | 23d |
| B5-UPSD-C331 |  | Measurements , Framing & Enabling Works | 14d | 2016-08-13 | 2016-08-28 | B5-UPSD-C321 | 23d |
| B35-TCSR-C001 |  | Installation of Celling System | 28d | 2016-08-29 | 2016-10-04 | B35-TCSR-1stP001, RM-SA-021, Con000, B5-UPSD-C331 | 23d |
| B35-TCSR-2ndP002 |  | MEP Ceiling Closure Clearance | 7d | 2016-10-05 | 2016-10-12 | B35-TCSR-C001, RM-SA-021 | 23d |

| ID | WBS | Task | Duration | Start | Finish | Predecessors | Complete | Total float | Constraint |
| --- | --- | --- | --- | --- | --- | --- | --- | --- | --- |
| B35-TCSR-C002 |  | Ceiling Closure | 28d | 2016-10-13 | 2016-11-14 | B35-TCSR-2ndP002, RM-SA-021, Con000, B35-TCSR-PR180 |  | 23d |  |
| B35-TCSR-3rdP003 |  | Flooring (by others) | 14d | 2016-11-15 | 2016-12-01 | B35-TCSR-C002, RM-SA-021 |  | 23d |  |
| B35-TCSR-C004 |  | Installation of Light Fittings | 14d | 2016-12-03 | 2016-12-19 | B35-TCSR-3rdP003, RM-SA-021, Con000 |  | 43d |  |
| B35-TCSR-C005 |  | Installation of Metal panelling | 21d | 2016-12-29 | 2017-01-22 | B35-TCSR-3rdP003, RM-SA-021, Con000, B35-TCSR-PR140, B35-TCLC-SDA160 |  | 1d |  |
| B35-TCSR-C006 |  | Installation of Metal Raling | 14d | 2016-12-29 | 2017-01-14 | B35-TCSR-3rdP003, RM-SA-021, Con000, B35-TCSR-PR140, RM-AC-021 |  | 21d |  |
| B35-TCSR-C003 |  | Installation of Metal Skirting | 14d | 2017-01-23 | 2017-02-07 | B35-TCSR-3rdP003 FS+3d, B35-TCSR-C005, RM-SA-021, Con000, B35-TCSR-PR140 |  | 1d |  |
| B35-TCSR-S007 |  | Snagging and De-Snagging | 7d | 2017-02-07 | 2017-02-14 | B35-TCSR-C003 FS-1d, B35-TCSR-C004, B35-TCSR-C005, B35-TCSR-C006, RM-SA-021, Con000 |  | 1d |  |
|  | 21 | **Bill 39-LG- LIFT LOBBY** |  | 2016-08-14 | 2017-02-11 |  |  |  |  |
| B39-LGLL-1stP001 |  | MEP 1st , 2nd Fix and Wall System | 0d | 2016-08-14 | 2016-08-14 | RM-SA-022 |  | 10d |  |
| B5-UPSD-C341 |  | Clearance process for Measurements , Framing&Enabling Works | 5d | 2016-08-14 | 2016-08-18 | B39-LGLL-1stP001 |  | 10d |  |
| B5-UPSD-C351 |  | Measurements , Framing & Enabling Works | 14d | 2016-08-20 | 2016-09-04 | B5-UPSD-C341 |  | 10d |  |
| B39-LGLL-C001 |  | Installation of Celling System | 21d | 2016-09-05 | 2016-10-03 | B39-LGLL-1stP001, RM-SA-022, Con000, B5-UPSD-C351 |  | 10d |  |
| B39-LGLL-2ndP002 |  | MEP Ceiling Closure Clearance | 7d | 2016-10-04 | 2016-10-11 | B39-LGLL-C001, RM-SA-022 |  | 10d |  |
| B39-LGLL-C002 |  | Ceiling Closure | 14d | 2016-10-12 | 2016-10-27 | B39-LGLL-2ndP002, RM-SA-022, Con000, B39-LGLL-PR180 |  | 10d |  |
| B39-LGLL-3rdP003 |  | Floor Tiling | 14d | 2016-10-29 | 2016-11-13 | B39-LGLL-C002, RM-SA-022 |  | 10d |  |
| B39-LGLL-C003 |  | Paint Works | 21d | 2016-11-14 | 2016-12-08 | B39-LGLL-3rdP003, RM-SA-022, Con000 |  | 10d |  |
| B39-LGLL-C005 |  | Installation of Light Fittings | 14d | 2016-12-10 | 2016-12-26 | RM-SA-022, Con000, B39-LGLL-C003 |  | 10d |  |
| B39-LGLL-C008 |  | Installation of Steel wall panelling | 28d | 2016-12-18 | 2017-01-18 | B39-LGLL-C003 SS+3d, RM-SA-022, Con000, B39-LGLL-PR140 |  | 4d |  |
| B39-LGLL-C007 |  | Installation of Wooden wall panelling | 14d | 2016-12-29 | 2017-01-14 | B39-LGLL-C003, RM-SA-022, Con000, B39-LGLL-PR100, RM-AC-022, B39-LGLL-C005 |  | 8d |  |
| B39-LGLL-C004 |  | Installation of Metal Skirting | 3d | 2017-01-19 | 2017-01-22 | B39-LGLL-C007, B39-LGLL-C008, RM-SA-022, Con000, B39-LGLL-PR140 |  | 4d |  |
| B39-LGLL-C006 |  | Installation of Glazing Works | 10d | 2017-01-23 | 2017-02-02 | B39-LGLL-C004, RM-SA-022, Con000, B39-LGLL-PR130, RM-AC-022 |  | 4d |  |
| B39-LGLL-S009 |  | Snagging and De-Snagging | 7d | 2017-02-04 | 2017-02-11 | B39-LGLL-C005, B39-LGLL-C006, B39-LGLL-C003, RM-SA-022, Con000 |  | 4d |  |
|  | 13 | **Variation No: 009** |  | 2016-07-04 | 2017-02-15 |  |  |  |  |
|  | 6 | **Variation No,009 Milestones** |  | 2016-07-04 | 2016-11-27 |  |  |  |  |
| A1000 |  | Reciept of Engineering Instruction | 0d | 2016-07-04 A | 2016-07-04 A | KD01 | 100% |  | start on or after 2016-07-05 |
|  | 1 | **Design Freeze** |  | 2016-07-05 | 2016-07-05 |  |  |  |  |
| A1010 |  | Design Freeze & Receipt of IFC Drawing BILL 17 - P1 - FAMILY FRIENDLY RESTAURANT | 0d | 2016-07-05 | 2016-07-05 | A1000 |  | 27.3d |  |
| A1020 |  | Design Freeze & Receipt of IFC Drawing BILL 17.2 - P1 - PUBLIC TOILETS | 0d | 2016-07-05 | 2016-07-05 | A1000 |  | 16.3d |  |
| A1030 |  | Design Freeze & Receipt of IFC Drawing BILL 21 - P1 - KID'S CLUB | 0d | 2016-07-05 | 2016-07-05 | A1000 |  | 16.3d |  |
| A1040 |  | Design Freeze & Receipt of IFC Drawing BILL 24 - 8F - GYM - TOWER C | 0d | 2016-07-05 | 2016-07-05 | A1000 |  | 7.3d |  |
| A1050 |  | Design Freeze & Receipt of IFC Drawing BILL 25 - 8F - MALE AND FEMALE TOILETS FOR GYM - TOWER C | 0d | 2016-07-05 | 2016-07-05 | A1000 |  | 7.3d |  |
| A1060 |  | Design Freeze & Receipt of IFC Drawing BILL 26 - 8F - SALON - TOWER C | 0d | 2016-07-05 | 2016-07-05 | A1000 |  | 7.3d |  |
| A1070 |  | Design Freeze & Receipt of IFC Drawing BILL 27.1 - 8F - GYM - TOWER A | 0d | 2016-07-05 | 2016-07-05 | A1000 |  | 7.3d |  |
| A1080 |  | Design Freeze & Receipt of IFC Drawing BILL 27.2 - 8F - GYM - TOWER B | 0d | 2016-07-05 | 2016-07-05 | A1000 |  | 7.3d |  |
| A1090 |  | Design Freeze & Receipt of IFC Drawing BILL 27.3 - 8F - GYM - TOWER D | 0d | 2016-07-05 | 2016-07-05 | A1000 |  | 7.3d |  |
| A1100 |  | Design Freeze & Receipt of IFC Drawing BILL 36 - UG - BARBER SHOP - TOWER C | 0d | 2016-07-05 | 2016-07-05 | A1000 |  | 7.3d |  |
| A1880 |  | Design Freeze & Receipt of IFC Drawing Bill 14-P1-PRE-FUNCTION | 0d | 2016-07-05 | 2016-07-05 | A1000 |  | 27.3d |  |
| A2260 |  | Design Freeze & Receipt of IFC Drawing Bill 15-P1-REST ROOMS (PRE-FUNTION) | 0d | 2016-07-05 | 2016-07-05 | A1000 |  | 27.3d |  |
| A2270 |  | Design Freeze & Receipt of IFC DrawingBill 33-P1-SCREENING ROOM | 0d | 2016-07-05 | 2016-07-05 | A1000 |  | 16.3d |  |
| A5310 |  | Design Freeze & Receipt of IFC Drawing BILL 37 - 7F - PUBLIC TOILETS | 0d | 2016-07-05 | 2016-07-05 | A1000 |  | 16.3d |  |
| A5540 |  | Design Freeze & Receipt of IFC Drawing BILL 38 - UG - GROCERY - TOWER A | 0d | 2016-07-05 | 2016-07-05 | A1000 |  | 7.3d |  |
| A5800 |  | Design Freeze & Receipt of IFC Drawing BILL 32 - Work Play Suite | 0d | 2016-07-05 | 2016-07-05 | A1000 |  | 56.3d |  |
|  | 2 | **Site Access** |  | 2016-09-18 | 2016-10-16 |  |  |  |  |
| A5250 |  | Site Access Bill 14-P1-PRE-FUNCTION | 0d | 2016-09-18 | 2016-09-18 | A1000 |  | 2.66d | start on or after 2016-09-18 |
| A5260 |  | Site Access Bill 15-P1-REST ROOMS (PRE-FUNTION) | 0d | 2016-09-18 | 2016-09-18 | A1000 |  | 2.66d | start on or after 2016-09-18 |
| A5270 |  | Site Access Bill 33-P1-SCREENING ROOM | 0d | 2016-09-18 | 2016-09-18 | A1000 |  | 1.66d | start on or after 2016-09-18 |
| A1110 |  | Site Access BILL 17 - P1 - FAMILY FRIENDLY RESTAURANT | 0d | 2016-10-02 | 2016-10-02 | A1000 |  | 2.66d | start on or after 2016-10-02 |
| A1120 |  | Site Access BILL 17.2 - P1 - PUBLIC TOILETS | 0d | 2016-10-02 | 2016-10-02 | A1000 |  | 2.66d | start on or after 2016-10-02 |
| A1130 |  | Site Access BILL 21 - P1 - KID'S CLUB | 0d | 2016-10-02 | 2016-10-02 | A1000 |  | 3.66d | start on or after 2016-10-02 |
| A1140 |  | Site Access BILL 24 - 8F - GYM - TOWER C | 0d | 2016-10-02 | 2016-10-02 | A1000 |  | 2.66d | start on or after 2016-10-02 |
| A1150 |  | Site Access BILL 25 - 8F - MALE AND FEMALE TOILETS FOR GYM - TOWER C | 0d | 2016-10-02 | 2016-10-02 | A1000 |  | 4.66d | start on or after 2016-10-02 |
| A1160 |  | Site Access BILL 26 - 8F - SALON - TOWER C | 0d | 2016-10-02 | 2016-10-02 | A1000 |  | 2.66d | start on or after 2016-10-02 |
| A1170 |  | Site Access BILL 27.1 - 8F - GYM - TOWER A | 0d | 2016-10-02 | 2016-10-02 | A1000 |  | 2.66d | start on or after 2016-10-02 |
| A1180 |  | Site Access BILL 27.2 - 8F - GYM - TOWER B | 0d | 2016-10-02 | 2016-10-02 | A1000 |  | 2.66d | start on or after 2016-10-02 |
| A1190 |  | Site Access BILL 27.3 - 8F - GYM - TOWER D | 0d | 2016-10-02 | 2016-10-02 | A1000 |  | 2.66d | start on or after 2016-10-02 |
| A5320 |  | Site Access BILL 37 - 7F - PUBLIC TOILETS | 0d | 2016-10-02 | 2016-10-02 | A1000 |  | 2.66d | start on or after 2016-10-02 |
| A1200 |  | Site Access BILL 36 - UG - BARBER SHOP - TOWER C | 0d | 2016-10-09 | 2016-10-09 | A1000 |  | 0.66d | start on or after 2016-10-09 |
| A5550 |  | Site Access BILL 38 - UG - GROCERY - TOWER A | 0d | 2016-10-16 | 2016-10-16 | A1000 |  | -0.34d | start on or after 2016-10-16 |
| A5810 |  | Site Access BILL 32 - Work Play Suite | 0d | 2016-10-16 | 2016-10-16 | A1000 |  | -0.34d | start on or after 2016-10-16 |
|  | 3 | **Wild Air Milestones** |  | 2016-11-20 | 2016-11-27 |  |  |  |  |
| A5290 |  | A/C Bill 15-P1-REST ROOMS (PRE-FUNTION) | 0d | 2016-11-20 | 2016-11-20 | A5260 |  | 48.3d | start on or after 2016-11-20 |
| A1210 |  | A/C BILL 17 - P1 - FAMILY FRIENDLY RESTAURANT | 0d | 2016-11-27 | 2016-11-27 | A1110 |  | 34.3d | start on or after 2016-11-27 |
| A1220 |  | A/C BILL 17.2 - P1 - PUBLIC TOILETS | 0d | 2016-11-27 | 2016-11-27 | A1120 |  | 34.3d | start on or after 2016-11-27 |
| A1230 |  | A/C BILL 21 - P1 - KID'S CLUB | 0d | 2016-11-27 | 2016-11-27 | A1130 |  | 20.3d | start on or after 2016-11-27 |
| A1240 |  | A/C BILL 24 - 8F - GYM - TOWER C | 0d | 2016-11-27 | 2016-11-27 | A1140 |  | 18.3d | start on or after 2016-11-27 |
| A1250 |  | A/C BILL 25 - 8F - MALE AND FEMALE TOILETS FOR GYM - TOWER C | 0d | 2016-11-27 | 2016-11-27 | A1150 |  | 21.3d | start on or after 2016-11-27 |
| A1260 |  | A/C BILL 26 - 8F - SALON - TOWER C | 0d | 2016-11-27 | 2016-11-27 | A1160 |  | 22.3d | start on or after 2016-11-27 |
| A1270 |  | A/C BILL 27.1 - 8F - GYM - TOWER A | 0d | 2016-11-27 | 2016-11-27 | A1170 |  | 22.3d | start on or after 2016-11-27 |
| A1280 |  | A/C BILL 27.2 - 8F - GYM - TOWER B | 0d | 2016-11-27 | 2016-11-27 | A1180 |  | 22.3d | start on or after 2016-11-27 |
| A1290 |  | A/C BILL 27.3 - 8F - GYM - TOWER D | 0d | 2016-11-27 | 2016-11-27 | A1190 |  | 22.3d | start on or after 2016-11-27 |

| ID | WBS | Task | Duration | Start | Finish | Predecessors | Total float | Constraint |
| --- | --- | --- | --- | --- | --- | --- | --- | --- |
| A1300 |  | A/C BILL 36 - UG - BARBER SHOP - TOWER C | 0d | 2016-11-27 | 2016-11-27 | A1200 | 23.3d | start on or after 2016-11-27 |
| A5280 |  | A/C Bill 14-P1-PRE-FUNCTION | 0d | 2016-11-27 | 2016-11-27 | A5250 | 24.3d | start on or after 2016-11-27 |
| A5300 |  | A/C Bill 33-P1-SCREENING ROOM | 0d | 2016-11-27 | 2016-11-27 | A5270 | 30.3d | start on or after 2016-11-27 |
| A5330 |  | A/C BILL 25 - BILL37 - 7F - PUBLIC TOILETS | 0d | 2016-11-27 | 2016-11-27 | A5320 | 24.3d | start on or after 2016-11-27 |
| A5560 |  | A/C BILL 25 - 8F - MALE AND FEMALE TOILETS FOR GYM - TOWER C | 0d | 2016-11-27 | 2016-11-27 | A5320, A5550 | 21.3d | start on or after 2016-11-27 |
| A5570 |  | A/C BILL 38 - UG - GROCERY - TOWER A | 0d | 2016-11-27 | 2016-11-27 | A5550 | 18.3d | start on or after 2016-11-27 |
| A5820 |  | A/C BILL 32 Work Play Suite | 0d | 2016-11-27 | 2016-11-27 | A5810 | 18.3d | start on or after 2016-11-27 |
|  | 2 | **Engineering Phase** |  | 2016-07-05 | 2016-10-25 |  |  |  |
|  | 1 | **Shop Drawing Process** |  | 2016-07-05 | 2016-09-28 |  |  |  |
|  | 1 | **BILL 17 - P1 - FAMILY FRIENDLY RESTAURANT** |  | 2016-07-05 | 2016-09-05 |  |  |  |
| A1330 |  | Preparation and Submission of Shop Drawing | 28d | 2016-07-05 | 2016-08-15 | A1010, A1000 | 17d |  |
| A1340 |  | Review and Approval of Shop Drawing | 21d | 2016-08-16 | 2016-09-05 | A1330 | 23d |  |
|  | 11 | **Bill 14-P1-PRE-FUNCTION** |  | 2016-07-05 | 2016-09-05 |  |  |  |
| A5190 |  | Preparation and Submission of Shop Drawing | 28d | 2016-07-05 | 2016-08-15 | A1880, A1000, RM-DF-013 | 17d |  |
| A5200 |  | Review and Approval of Shop Drawing | 21d | 2016-08-16 | 2016-09-05 | A5190 | 23d |  |
|  | 12 | **Bill 15-P1-REST ROOMS (PRE-FUNTION)** |  | 2016-07-05 | 2016-09-05 |  |  |  |
| A5210 |  | Preparation and Submission of Shop Drawing | 28d | 2016-07-05 | 2016-08-15 | A2260, A1000, RM-DF-014 | 17d |  |
| A5220 |  | Review and Approval of Shop Drawing | 21d | 2016-08-16 | 2016-09-05 | A5210 | 23d |  |
|  | 16 | **Bill 32 Work Play Suite** |  | 2016-07-05 | 2016-09-05 |  |  |  |
| A5830 |  | Preparation and Submission of Shop Drawing | 28d | 2016-07-05 | 2016-08-15 | A5800 | 38d |  |
| A5840 |  | Review and Approval of Shop Drawing | 21d | 2016-08-16 | 2016-09-05 | A5830 | 54d |  |
|  | 13 | **Bill 33-P1-SCREENING ROOM** |  | 2016-07-05 | 2016-09-17 |  |  |  |
| A5230 |  | Preparation and Submission of Shop Drawing | 35d | 2016-07-05 | 2016-08-24 | A2270, A1000, RM-DF-019 | 10d |  |
| A5240 |  | Review and Approval of Shop Drawing | 21d | 2016-08-25 | 2016-09-17 | A5230 | 14d |  |
|  | 14 | **BILL 37 - 7F - PUBLIC TOILETS** |  | 2016-07-05 | 2016-09-17 |  |  |  |
| A5340 |  | Preparation and Submission of Shop Drawing | 35d | 2016-07-05 | 2016-08-24 | A5310, A5540, A1000 | 10d |  |
| A5350 |  | Review and Approval of Shop Drawing | 21d | 2016-08-25 | 2016-09-17 | A5340 | 14d |  |
|  | 2 | **BILL 17.2 - P1 - PUBLIC TOILETS** |  | 2016-07-05 | 2016-09-17 |  |  |  |
| A1350 |  | Preparation and Submission of Shop Drawing | 35d | 2016-07-05 | 2016-08-24 | A1020, A1000 | 10d |  |
| A1360 |  | Review and Approval of Shop Drawing | 21d | 2016-08-25 | 2016-09-17 | A1350 | 14d |  |
|  | 3 | **BILL 21 - P1 - KID'S CLUB** |  | 2016-07-05 | 2016-09-17 |  |  |  |
| A1370 |  | Preparation and Submission of Shop Drawing | 35d | 2016-07-05 | 2016-08-24 | A1030, A1000 | 10d |  |
| A1380 |  | Review and Approval of Shop Drawing | 21d | 2016-08-25 | 2016-09-17 | A1370 | 14d |  |
|  | 4 | **BILL 24 - 8F - GYM - TOWER C** |  | 2016-07-05 | 2016-09-28 |  |  |  |
| A1390 |  | Preparation and Submission of Shop Drawing | 42d | 2016-07-05 | 2016-09-04 | A1040, A1000 | 3d |  |
| A1400 |  | Review and Approval of Shop Drawing | 21d | 2016-09-05 | 2016-09-28 | A1390 | 3d |  |
|  | 5 | **BILL 25 - 8F - MALE AND FEMALE TOILETS FOR GYM - TOWER C** |  | 2016-07-05 | 2016-09-28 |  |  |  |
| A1410 |  | Preparation and Submission of Shop Drawing | 42d | 2016-07-05 | 2016-09-04 | A1050, A1000 | 3d |  |
| A1420 |  | Review and Approval of Shop Drawing | 21d | 2016-09-05 | 2016-09-28 | A1410 | 3d |  |
|  | 6 | **BILL 26 - 8F - SALON - TOWER C** |  | 2016-07-05 | 2016-09-28 |  |  |  |
| A1430 |  | Preparation and Submission of Shop Drawing | 42d | 2016-07-05 | 2016-09-04 | A1060, A1000 | 3d |  |
| A1440 |  | Review and Approval of Shop Drawing | 21d | 2016-09-05 | 2016-09-28 | A1430 | 3d |  |
|  | 7 | **BILL 27.1 - 8F - GYM - TOWER A** |  | 2016-07-05 | 2016-09-28 |  |  |  |
| A1450 |  | Preparation and Submission of Shop Drawing | 42d | 2016-07-05 | 2016-09-04 | A1070, A1000 | 3d |  |
| A1460 |  | Review and Approval of Shop Drawing | 21d | 2016-09-05 | 2016-09-28 | A1450 | 3d |  |
|  | 8 | **BILL 27.2 - 8F - GYM - TOWER B** |  | 2016-07-05 | 2016-09-28 |  |  |  |
| A1470 |  | Preparation and Submission of Shop Drawing | 42d | 2016-07-05 | 2016-09-04 | A1080, A1000 | 3d |  |
| A1480 |  | Review and Approval of Shop Drawing | 21d | 2016-09-05 | 2016-09-28 | A1470 | 3d |  |
|  | 9 | **BILL 27.3 - 8F - GYM - TOWER D** |  | 2016-07-05 | 2016-09-28 |  |  |  |
| A1490 |  | Preparation and Submission of Shop Drawing | 42d | 2016-07-05 | 2016-09-04 | A1090, A1000 | 3d |  |
| A1500 |  | Review and Approval of Shop Drawing | 21d | 2016-09-05 | 2016-09-28 | A1490 | 3d |  |
|  | 10 | **BILL 36 - UG - BARBER SHOP - TOWER C** |  | 2016-07-05 | 2016-09-28 |  |  |  |
| A1510 |  | Preparation and Submission of Shop Drawing | 42d | 2016-07-05 | 2016-09-04 | A1100, A1000 | 3d |  |
| A1520 |  | Review and Approval of Shop Drawing | 21d | 2016-09-05 | 2016-09-28 | A1510 | 3d |  |
|  | 15 | **BILL 38 - UG - GROCERY - TOWER A** |  | 2016-07-05 | 2016-09-28 |  |  |  |
| A5580 |  | Preparation and Submission of Shop Drawing | 42d | 2016-07-05 | 2016-09-04 | A5540, A1000 | 3d |  |
| A5590 |  | Review and Approval of Shop Drawing | 21d | 2016-09-05 | 2016-09-28 | A5580 | 3d |  |
|  | 2 | **Material Process** |  | 2016-07-05 | 2016-10-25 |  |  |  |
|  | 1 | **Wall Material** |  | 2016-07-05 | 2016-10-19 |  |  |  |
|  | 1 | **Preparation and Submission** |  | 2016-07-05 | 2016-09-27 |  |  |  |
| A1690 |  | Preparation and Submission of Paint Finish to Walls | 7d | 2016-07-05 | 2016-07-17 | A1000 | 6d |  |
| A1700 |  | Preparation and Submission of Stone Finish to Wall | 7d | 2016-07-05 | 2016-07-17 | A1690 SS, A1000 | 6d |  |
| A1710 |  | Preparation and Submission of Wall Tiling | 7d | 2016-07-18 | 2016-07-26 | A1700, A1000 | 6d |  |
| A1720 |  | Preparation and Submission of Metal Finish to Wall | 7d | 2016-07-27 | 2016-08-04 | A1710, A1000 | 6d |  |
| A1730 |  | Preparation and Submission of Wall Paper | 7d | 2016-08-07 | 2016-08-15 | A1720, A1000 | 6d |  |
| A1740 |  | Preparation and Submission of Clear Acrylic Panel | 7d | 2016-08-16 | 2016-08-24 | A1730, A1000 | 6d |  |
| A1750 |  | Preparation and Submission of Wood Wall Panels | 7d | 2016-08-25 | 2016-09-04 | A1740, A1000 | 6d |  |
| A1760 |  | Preparation and Submission of Glass/Mirrors | 7d | 2016-09-05 | 2016-09-18 | A1750, A1000 | 6d |  |
| A1770 |  | Preparation and Submission of Brick Panel | 7d | 2016-09-19 | 2016-09-27 | A1760, A1000 | 6d |  |
|  | 2 | **Review and Approval** |  | 2016-07-18 | 2016-10-19 |  |  |  |

| ID | WBS | Task | Duration | Start | Finish | Predecessors | Total float |
| --- | --- | --- | --- | --- | --- | --- | --- |
| A1780 |  | Review and Approval of Paint Finish to Walls | 21d | 2016-07-18 | 2016-08-07 | A1690 | 89d |
| A1790 |  | Review and Approval of Stone Finish to Wall | 21d | 2016-07-18 | 2016-08-07 | A1700 | 40d |
| A1800 |  | Review and Approval of Wall Tiling | 21d | 2016-07-27 | 2016-08-16 | A1710 | 31d |
| A1810 |  | Review and Approval of Metal Finish to Wall | 21d | 2016-08-05 | 2016-08-25 | A1720 | 22d |
| A1820 |  | Review and Approval of Wall Paper | 21d | 2016-08-16 | 2016-09-05 | A1730 | 84d |
| A1830 |  | Review and Approval of Clear Acrylic Panel | 21d | 2016-08-25 | 2016-09-17 | A1740 | 17d |
| A1840 |  | Review and Approval of Wood Wall Panels | 21d | 2016-09-05 | 2016-09-28 | A1750 | 11d |
| A1850 |  | Review and Approval of Glass/Mirrors | 21d | 2016-09-19 | 2016-10-10 | A1760 | 8d |
| A1860 |  | Review and Approval of Brick Panel | 21d | 2016-09-28 | 2016-10-19 | A1770 | 8d |
|  | 2 | **Floor Material** |  | 2016-07-05 | 2016-10-19 |  |  |
|  | 1 | **Preparation and Submission** |  | 2016-07-05 | 2016-09-27 |  |  |
| A1530 |  | Preparation and Submission Metal Flooring | 7d | 2016-07-05 | 2016-07-17 | A1000 | 12d |
| A1540 |  | Preparation and Submission Wooden Flooring | 7d | 2016-07-18 | 2016-07-26 | A1530 SS, A1000, A1530 | 12d |
| A1550 |  | Preparation and Submission Floor Tiling | 7d | 2016-07-27 | 2016-08-04 | A1540, A1000 | 12d |
| A1560 |  | Preparation and Submission Stone Flooring | 7d | 2016-08-07 | 2016-08-15 | A1550, A1000 | 12d |
| A1570 |  | Preparation and Submission Carpet Flooring | 7d | 2016-08-16 | 2016-08-24 | A1560, A1000 | 25d |
| A1580 |  | Preparation and Submission Vinyl Flooring | 7d | 2016-08-25 | 2016-09-04 | A1570, A1000 | 25d |
| A1590 |  | Preparation and Submission Floor Painting | 7d | 2016-09-05 | 2016-09-18 | A1580, A1000 | 25d |
| A1600 |  | Preparation and Submission Rubber Flooring | 7d | 2016-09-19 | 2016-09-27 | A1590, A1000 | 25d |
|  | 2 | **Review and Approval** |  | 2016-07-18 | 2016-10-19 |  |  |
| A1610 |  | Review and Approval Metal Flooring | 21d | 2016-07-18 | 2016-08-07 | A1530, A1000 | 47d |
| A1620 |  | Review and Approval Wooden Flooring | 21d | 2016-07-27 | 2016-08-16 | A1540, A1000 | 48d |
| A1630 |  | Review and Approval Floor Tiling | 21d | 2016-08-05 | 2016-08-25 | A1550, A1000 | 27d |
| A1640 |  | Review and Approval Stone Flooring | 21d | 2016-08-16 | 2016-09-05 | A1560, A1000 | 16d |
| A1650 |  | Review and Approval Carpet Flooring | 21d | 2016-08-25 | 2016-09-17 | A1570, A1000 | 52d |
| A1660 |  | Review and Approval Vinyl Flooring | 21d | 2016-09-05 | 2016-09-28 | A1580, A1000 | 48d |
| A1670 |  | Review and Approval Floor Painting | 21d | 2016-09-19 | 2016-10-10 | A1590, A1000 | 59d |
| A1680 |  | Review and Approval Rubber Flooring | 21d | 2016-09-28 | 2016-10-19 | A1600, A1000 | 35d |
|  | 3 | **Celing Material** |  | 2016-07-05 | 2016-08-30 |  |  |
|  | 1 | **Preparation and Submission** |  | 2016-07-05 | 2016-08-09 |  |  |
| A1870 |  | Preparation and Submission of Suspended Ceiling | 10d | 2016-07-05 | 2016-07-20 | A1000 | 0d |
| A1890 |  | Preparation and Submission of Gypsum Ceiling | 7d | 2016-07-21 | 2016-07-31 | A1870, A1000 | 19d |
| A1900 |  | Preparation and Submission of Painting to Ceiling | 7d | 2016-08-01 | 2016-08-09 | A1890, A1000 | 26d |
|  | 2 | **Review and Approval** |  | 2016-07-21 | 2016-08-30 |  |  |
| A1910 |  | Review and Approval of Suspended Ceiling | 21d | 2016-07-21 | 2016-08-10 | A1870 | 0d |
| A1920 |  | Review and Approval of Gypsum Ceiling | 21d | 2016-08-01 | 2016-08-21 | A1890 | 25d |
| A1930 |  | Review and Approval of Painting to Ceiling | 21d | 2016-08-10 | 2016-08-30 | A1900 | 38d |
|  | 4 | **Carpentry and Joinery Material** |  | 2016-07-05 | 2016-09-28 |  |  |
|  | 1 | **Preparation and Submission** |  | 2016-07-05 | 2016-09-04 |  |  |
| A1940 |  | Preparation and Submission Internal Doors , Frames , Ironmongery and Hardware | 7d | 2016-07-05 | 2016-07-17 | A1000 | 12d |
| A1950 |  | Preparation and Submission Vanities & Counters | 7d | 2016-07-18 | 2016-07-26 | A1940, A1000 | 12d |
| A1960 |  | Preparation and Submission Shelves | 7d | 2016-07-27 | 2016-08-04 | A1950, A1000 | 12d |
| A1970 |  | Preparation and Submission Seatings | 7d | 2016-08-07 | 2016-08-15 | A1960, A1000 | 12d |
| A1980 |  | Preparation and Submission Wardrobes & Cabinets | 7d | 2016-08-16 | 2016-08-24 | A1970, A1000 | 12d |
| A1990 |  | Preparation and Submission Tables | 7d | 2016-08-25 | 2016-09-04 | A1980, A1000 | 15d |
|  | 2 | **Review and Approval** |  | 2016-07-18 | 2016-09-28 |  |  |
| A2000 |  | Review and Approval Internal Doors , Frames , Ironmongery and Hardware | 21d | 2016-07-18 | 2016-08-07 | A1940 | 81d |
| A2010 |  | Review and Approval Vanities & Counters | 21d | 2016-07-27 | 2016-08-16 | A1950 | 39d |
| A2020 |  | Review and Approval Shelves | 21d | 2016-08-05 | 2016-08-25 | A1960 | 45d |
| A2030 |  | Review and Approval Seatings | 21d | 2016-08-16 | 2016-09-05 | A1970 | 40d |
| A2040 |  | Review and Approval Wardrobes & Cabinets | 21d | 2016-08-25 | 2016-09-17 | A1980 | 18d |
| A2050 |  | Review and Approval Tables | 21d | 2016-09-05 | 2016-09-28 | A1990 | 21d |
|  | 5 | **Lighting Points and Fittings** |  | 2016-07-05 | 2016-10-25 |  |  |
|  | 1 | **Preparation and Submission** |  | 2016-07-05 | 2016-10-04 |  |  |
| A2060 |  | Preparation and Submission Recessed spotlight | 10d | 2016-07-05 | 2016-07-20 | A1000 | 11d |
| A2070 |  | Preparation and Submission Indirect LED Strip | 10d | 2016-07-21 | 2016-08-03 | A2060, A1000 | 11d |
| A2080 |  | Preparation and Submission Cover Plates | 10d | 2016-08-04 | 2016-08-17 | A2070, A1000 | 11d |
| A2090 |  | Preparation and Submission Recessed Down Light | 10d | 2016-08-18 | 2016-08-31 | A2080, A1000 | 11d |
| A2100 |  | Preparation and Submission Track Light | 10d | 2016-09-01 | 2016-09-19 | A2090, A1000 | 11d |
| A2110 |  | Preparation and Submission LED Pin Light | 10d | 2016-09-20 | 2016-10-04 | A2100, A1000 | 11d |
|  | 2 | **Review and Approval** |  | 2016-07-21 | 2016-10-25 |  |  |
| A2120 |  | Review and Approval Recessed spotlight | 21d | 2016-07-21 | 2016-08-10 | A2060 | 87d |
| A2130 |  | Review and Approval Indirect LED Strip | 21d | 2016-08-04 | 2016-08-24 | A2070 | 73d |
| A2140 |  | Review and Approval Cover Plates | 21d | 2016-08-18 | 2016-09-07 | A2080 | 59d |
| A2150 |  | Review and Approval Recessed Down Light | 21d | 2016-09-01 | 2016-09-24 | A2090 | 45d |
| A2160 |  | Review and Approval Track Light | 21d | 2016-09-20 | 2016-10-11 | A2100 | 29d |
| A2170 |  | Review and Approval LED Pin Light | 21d | 2016-10-05 | 2016-10-25 | A2110 | 15d |
|  | 6 | **Aluminium and Glazing Works** |  | 2016-07-05 | 2016-10-19 |  |  |
|  | 1 | **Preparation and Submission** |  | 2016-07-05 | 2016-09-27 |  |  |
| A2180 |  | Preparation and Submission Internal Glazed Partitions/ Dividing Screens | 14d | 2016-07-05 | 2016-07-26 | A1000 | 13d |

| ID | WBS | Task | Duration | Start | Finish | Predecessors | Total float |
| --- | --- | --- | --- | --- | --- | --- | --- |
| A2190 |  | Preparation and Submission Internal Glazed Doors | 14d | 2016-07-27 | 2016-08-15 | A2180, A1000 | 13d |
| A2200 |  | Preparation and Submission Windows | 14d | 2016-08-16 | 2016-09-04 | A2190, A1000 | 13d |
| A2210 |  | Preparation and Submission Balustrades and Railing | 14d | 2016-09-05 | 2016-09-27 | A2200, A1000 | 13d |
|  | 2 | **Review and Approval** |  | 2016-07-27 | 2016-10-19 |  |  |
| A2220 |  | Review and Approval Internal Glazed Partitions/ Dividing Screens | 21d | 2016-07-27 | 2016-08-16 | A2180 | 83d |
| A2230 |  | Review and Approval Internal Glazed Doors | 21d | 2016-08-16 | 2016-09-05 | A2190 | 63d |
| A2240 |  | Review and Approval Windows | 21d | 2016-09-05 | 2016-09-28 | A2200 | 37d |
| A2250 |  | Review and Approval Balustrades and Railing | 21d | 2016-09-28 | 2016-10-19 | A2210 | 19d |
|  | 7 | **Sanitary Appliances and Accessories** |  | 2016-07-05 | 2016-09-17 |  |  |
|  | 1 | **Preparation and Submission** |  | 2016-07-05 | 2016-08-24 |  |  |
| A2980 |  | Preparation and Submission of Sanitary Equipment & Fixture | 35d | 2016-07-05 | 2016-08-24 | A1000 | 38d |
|  | 2 | **Review and Approval** |  | 2016-08-25 | 2016-09-17 |  |  |
| A2990 |  | Review and Approval of Sanitary Equipment & Fixture | 21d | 2016-08-25 | 2016-09-17 | A2980 | 56d |
|  | 3 | **Procurement Phase** |  | 2016-08-07 | 2017-01-12 |  |  |
|  | 2 | **Floor Material** |  | 2016-08-07 | 2016-12-30 |  |  |
| A2340 |  | Fabrication and Delivery Metal Flooring | 70d | 2016-08-07 | 2016-10-20 | A1610, A1340 FF+21d, A1360 FF+21d, A1380 FF+21d, A1400 FF+21d, A1420 FF+21d, A1440 FF+21d, A1460 FF+21d, A1480 FF+21d, A1500 FF+21d, A1520 FF+21d, A5200 FF+21d, A5220 FF+21d, A5240 FF+21d, A5350 FF+21d, A5590 FF+21d, A1000 | 47.62d |
| A2350 |  | Fabrication and Delivery Wooden Flooring | 70d | 2016-08-16 | 2016-10-29 | A1620, A1340 FF+21d, A1360 FF+21d, A1380 FF+21d, A1400 FF+21d, A1420 FF+21d, A1440 FF+21d, A1460 FF+21d, A1480 FF+21d, A1500 FF+21d, A1520 FF+21d, A5200 FF+21d, A5220 FF+21d, A5240 FF+21d, A5350 FF+21d, A5590 FF+21d, A1000 | 48.62d |
| A2360 |  | Fabrication and Delivery Floor Tiling | 70d | 2016-09-01 | 2016-11-14 | A1630, A1340 FF+21d, A1360 FF+21d, A1380 FF+21d, A1400 FF+21d, A1420 FF+21d, A1440 FF+21d, A1460 FF+21d, A1480 FF+21d, A1500 FF+21d, A1520 FF+21d, A5200 FF+21d, A5220 FF+21d, A5240 FF+21d, A5350 FF+21d, A5590 FF+21d, A1000 | 21.31d |
| A2370 |  | Fabrication and Delivery Stone Flooring | 70d | 2016-09-05 | 2016-11-18 | A1640, A1340 FF+21d, A1360 FF+21d, A1380 FF+21d, A1400 FF+21d, A1420 FF+21d, A1440 FF+21d, A1460 FF+21d, A1480 FF+21d, A1500 FF+21d, A1520 FF+21d, A5200 FF+21d, A5220 FF+21d, A5240 FF+21d, A5350 FF+21d, A5590 FF+21d, A1000 | 16.62d |
| A2380 |  | Fabrication and Delivery Carpet Flooring | 84d | 2016-09-17 | 2016-12-13 | A1650, A1340 FF+21d, A1360 FF+21d, A1380 FF+21d, A1400 FF+21d, A1420 FF+21d, A1440 FF+21d, A1460 FF+21d, A1480 FF+21d, A1500 FF+21d, A1520 FF+21d, A5200 FF+21d, A5220 FF+21d, A5240 FF+21d, A5350 FF+21d, A5590 FF+21d, A1000 | 52.62d |
| A2390 |  | Fabrication and Delivery Vinyl Flooring | 77d | 2016-09-28 | 2016-12-17 | A1660, A1340 FF+21d, A1360 FF+21d, A1380 FF+21d, A1400 FF+21d, A1420 FF+21d, A1440 FF+21d, A1460 FF+21d, A1480 FF+21d, A1500 FF+21d, A1520 FF+21d, A5200 FF+21d, A5220 FF+21d, A5240 FF+21d, A5350 FF+21d, A5590 FF+21d, A1000 | 48.62d |
| A2400 |  | Fabrication and Delivery Floor Painting | 42d | 2016-10-10 | 2016-11-21 | A1670, A1340 FF+21d, A1360 FF+21d, A1380 FF+21d, A1400 FF+21d, A1420 FF+21d, A1440 FF+21d, A1460 FF+21d, A1480 FF+21d, A1500 FF+21d, A1520 FF+21d, A5200 FF+21d, A5220 FF+21d, A5240 FF+21d, A5350 FF+21d, A5590 FF+21d, A1000 | 59d |
| A2410 |  | Fabrication and Delivery Rubber Flooring | 70d | 2016-10-19 | 2016-12-30 | A1680, A1340 FF+21d, A1360 FF+21d, A1380 FF+21d, A1400 FF+21d, A1420 FF+21d, A1440 FF+21d, A1460 FF+21d, A1480 FF+21d, A1500 FF+21d, A1520 FF+21d, A5200 FF+21d, A5220 FF+21d, A5240 FF+21d, A5350 FF+21d, A5590 FF+21d, A1000 | 35.62d |
|  | 1 | **Wall Material** |  | 2016-08-14 | 2016-12-02 |  |  |
| A2520 |  | Fabrication and Delivery of Stone Finish to Wall | 63d | 2016-08-14 | 2016-10-20 | A1790, A1340 FF+21d, A1360 FF+21d, A1380 FF+21d, A1400 FF+21d, A1420 FF+21d, A1440 FF+21d, A1460 FF+21d, A1480 FF+21d, A1500 FF+21d, A1520 FF+21d, A5200 FF+21d, A5220 FF+21d, A5240 FF+21d, A5350 FF+21d, A5590 FF+21d | 33.62d |
| A2540 |  | Fabrication and Delivery of Metal Finish to Wall | 63d | 2016-08-25 | 2016-10-31 | A1810, A1340 FF+21d, A1360 FF+21d, A1380 FF+21d, A1400 FF+21d, A1420 FF+21d, A1440 FF+21d, A1460 FF+21d, A1480 FF+21d, A1500 FF+21d, A1520 FF+21d, A5200 FF+21d, A5220 FF+21d, A5240 FF+21d, A5350 FF+21d, A5590 FF+21d | 22.62d |
| A2530 |  | Fabrication and Delivery of Wall Tiling | 63d | 2016-09-01 | 2016-11-07 | A1800, A1340 FF+21d, A1360 FF+21d, A1380 FF+21d, A1400 FF+21d, A1420 FF+21d, A1440 FF+21d, A1460 FF+21d, A1480 FF+21d, A1500 FF+21d, A1520 FF+21d, A5200 FF+21d, A5220 FF+21d, A5240 FF+21d, A5350 FF+21d, A5590 FF+21d | 16.31d |
| A2550 |  | Fabrication and Delivery of Wall Paper | 49d | 2016-09-05 | 2016-10-28 | A1820, A1340 FF+21d, A1360 FF+21d, A1380 FF+21d, A1400 FF+21d, A1420 FF+21d, A1440 FF+21d, A1460 FF+21d, A1480 FF+21d, A1500 FF+21d, A1520 FF+21d, A5200 FF+21d, A5220 FF+21d, A5240 FF+21d, A5350 FF+21d, A5590 FF+21d | 84.62d |
| A2560 |  | Fabrication and Delivery of Clear Acrylic Panel | 49d | 2016-09-17 | 2016-11-06 | A1830, A1340 FF+21d, A1360 FF+21d, A1380 FF+21d, A1400 FF+21d, A1420 FF+21d, A1440 FF+21d, A1460 FF+21d, A1480 FF+21d, A1500 FF+21d, A1520 FF+21d, A5200 FF+21d, A5220 FF+21d, A5240 FF+21d, A5350 FF+21d, A5590 FF+21d | 17.62d |
| A2570 |  | Fabrication and Delivery of Wood Wall Panels | 63d | 2016-09-28 | 2016-12-02 | A1840, A1340 FF+21d, A1360 FF+21d, A1380 FF+21d, A1400 FF+21d, A1420 FF+21d, A1440 FF+21d, A1460 FF+21d, A1480 FF+21d, A1500 FF+21d, A1520 FF+21d, A5200 FF+21d, A5220 FF+21d, A5240 FF+21d, A5350 FF+21d, A5590 FF+21d | 11.62d |
| A2510 |  | Fabrication and Delivery of Paint Finish to Walls | 14d | 2016-10-06 | 2016-10-20 | A1780, A1340 FF+21d, A1360 FF+21d, A1380 FF+21d, A1400 FF+21d, A1420 FF+21d, A1440 FF+21d, A1460 FF+21d, A1480 FF+21d, A1500 FF+21d, A1520 FF+21d, A5200 FF+21d, A5220 FF+21d, A5240 FF+21d, A5350 FF+21d, A5590 FF+21d | 33.62d |
| A2580 |  | Fabrication and Delivery of Glass/Mirrors | 35d | 2016-10-10 | 2016-11-14 | A1850, A1340 FF+21d, A1360 FF+21d, A1380 FF+21d, A1400 FF+21d, A1420 FF+21d, A1440 FF+21d, A1460 FF+21d, A1480 FF+21d, A1500 FF+21d, A1520 FF+21d, A5200 FF+21d, A5220 FF+21d, A5240 FF+21d, A5350 FF+21d, A5590 FF+21d | 8.62d |
| A2590 |  | Fabrication and Delivery of Brick Panel | 35d | 2016-10-19 | 2016-11-23 | A1860, A1340 FF+21d, A1360 FF+21d, A1380 FF+21d, A1400 FF+21d, A1420 FF+21d, A1440 FF+21d, A1460 FF+21d, A1480 FF+21d, A1500 FF+21d, A1520 FF+21d, A5200 FF+21d, A5220 FF+21d, A5240 FF+21d, A5350 FF+21d, A5590 FF+21d | 8.62d |
|  | 3 | **Celing Material** |  | 2016-08-10 | 2016-10-23 |  |  |
| A2630 |  | Fabrication and Delivery of Suspended Ceiling | 70d | 2016-08-10 | 2016-10-23 | A1910, A1340 FF+21d, A1360 FF+21d, A1380 FF+21d, A1400 FF+21d, A1420 FF+21d, A1440 FF+21d, A1460 FF+21d, A1480 FF+21d, A1500 FF+21d, A1520 FF+21d, A5200 FF+21d, A5220 FF+21d, A5240 FF+21d, A5350 FF+21d, A5590 FF+21d | 0.62d |
| A2640 |  | Fabrication and Delivery of Gypsum Ceiling | 49d | 2016-08-28 | 2016-10-20 | A1920, A1340 FF+21d, A1360 FF+21d, A1380 FF+21d, A1400 FF+21d, A1420 FF+21d, A1440 FF+21d, A1460 FF+21d, A1480 FF+21d, A1500 FF+21d, A1520 FF+21d, A5200 FF+21d, A5220 FF+21d, A5240 FF+21d, A5350 FF+21d, A5590 FF+21d | 18.62d |
| A2650 |  | Fabrication and Delivery of Painting to Ceiling | 42d | 2016-09-04 | 2016-10-20 | A1930, A1340 FF+21d, A1360 FF+21d, A1380 FF+21d, A1400 FF+21d, A1420 FF+21d, A1440 FF+21d, A1460 FF+21d, A1480 FF+21d, A1500 FF+21d, A1520 FF+21d, A5200 FF+21d, A5220 FF+21d, A5240 FF+21d, A5350 FF+21d, A5590 FF+21d | 33.62d |
|  | 4 | **Carpentry and Joinery Material** |  | 2016-08-07 | 2016-12-17 |  |  |
| A2720 |  | Fabrication and Delivery Internal Doors , Frames , Ironmongery and Hardware | 84d | 2016-08-07 | 2016-11-03 | A2000, A1340 FF+21d, A1360 FF+21d, A1380 FF+21d, A1400 FF+21d, A1420 FF+21d, A1440 FF+21d, A1460 FF+21d, A1480 FF+21d, A1500 FF+21d, A1520 FF+21d, A5200 FF+21d, A5220 FF+21d, A5240 FF+21d, A5350 FF+21d, A5590 FF+21d | 81.62d |
| A2730 |  | Fabrication and Delivery Vanities & Counters | 91d | 2016-08-16 | 2016-11-19 | A2010, A1340 FF+21d, A1360 FF+21d, A1380 FF+21d, A1400 FF+21d, A1420 FF+21d, A1440 FF+21d, A1460 FF+21d, A1480 FF+21d, A1500 FF+21d, A1520 FF+21d, A5200 FF+21d, A5220 FF+21d, A5240 FF+21d, A5350 FF+21d, A5590 FF+21d | 39.62d |
| A2740 |  | Fabrication and Delivery Shelves | 77d | 2016-08-25 | 2016-11-14 | A2020, A1340 FF+21d, A1360 FF+21d, A1380 FF+21d, A1400 FF+21d, A1420 FF+21d, A1440 FF+21d, A1460 FF+21d, A1480 FF+21d, A1500 FF+21d, A1520 FF+21d, A5200 FF+21d, A5220 FF+21d, A5240 FF+21d, A5350 FF+21d, A5590 FF+21d | 45.62d |
| A2750 |  | Fabrication and Delivery Seatings | 77d | 2016-09-05 | 2016-11-25 | A2030, A1340 FF+21d, A1360 FF+21d, A1380 FF+21d, A1400 FF+21d, A1420 FF+21d, A1440 FF+21d, A1460 FF+21d, A1480 FF+21d, A1500 FF+21d, A1520 FF+21d, A5200 FF+21d, A5220 FF+21d, A5240 FF+21d, A5350 FF+21d, A5590 FF+21d | 40.62d |
| A2760 |  | Fabrication and Delivery Wardrobes & Cabinets | 84d | 2016-09-17 | 2016-12-13 | A2040, A1340 FF+21d, A1360 FF+21d, A1380 FF+21d, A1400 FF+21d, A1420 FF+21d, A1440 FF+21d, A1460 FF+21d, A1480 FF+21d, A1500 FF+21d, A1520 FF+21d, A5200 FF+21d, A5220 FF+21d, A5240 FF+21d, A5350 FF+21d, A5590 FF+21d | 18.62d |
| A2770 |  | Fabrication and Delivery Tables | 77d | 2016-09-28 | 2016-12-17 | A2050, A1340 FF+21d, A1360 FF+21d, A1380 FF+21d, A1400 FF+21d, A1420 FF+21d, A1440 FF+21d, A1460 FF+21d, A1480 FF+21d, A1500 FF+21d, A1520 FF+21d, A5200 FF+21d, A5220 FF+21d, A5240 FF+21d, A5350 FF+21d, A5590 FF+21d | 21.62d |
|  | 5 | **Lighting Points and Fittings** |  | 2016-08-10 | 2017-01-12 |  |  |
| A2840 |  | Fabrication and Delivery Recessed spotlight | 77d | 2016-08-10 | 2016-10-30 | A2120, A1340 FF+21d, A1360 FF+21d, A1380 FF+21d, A1400 FF+21d, A1420 FF+21d, A1440 FF+21d, A1460 FF+21d, A1480 FF+21d, A1500 FF+21d, A1520 FF+21d, A5200 FF+21d, A5220 FF+21d, A5240 FF+21d, A5350 FF+21d, A5590 FF+21d | 87.62d |
| A2850 |  | Fabrication and Delivery Indirect LED Strip | 77d | 2016-08-24 | 2016-11-13 | A2130, A1340 FF+21d, A1360 FF+21d, A1380 FF+21d, A1400 FF+21d, A1420 FF+21d, A1440 FF+21d, A1460 FF+21d, A1480 FF+21d, A1500 FF+21d, A1520 FF+21d, A5200 FF+21d, A5220 FF+21d, A5240 FF+21d, A5350 FF+21d, A5590 FF+21d | 73.62d |
| A2860 |  | Fabrication and Delivery Cover Plates | 77d | 2016-09-07 | 2016-11-27 | A2140, A1340 FF+21d, A1360 FF+21d, A1380 FF+21d, A1400 FF+21d, A1420 FF+21d, A1440 FF+21d, A1460 FF+21d, A1480 FF+21d, A1500 FF+21d, A1520 FF+21d, A5200 FF+21d, A5220 FF+21d, A5240 FF+21d, A5350 FF+21d, A5590 FF+21d | 59.62d |
| A2870 |  | Fabrication and Delivery Recessed Down Light | 77d | 2016-09-24 | 2016-12-13 | A2150, A1340 FF+21d, A1360 FF+21d, A1380 FF+21d, A1400 FF+21d, A1420 FF+21d, A1440 FF+21d, A1460 FF+21d, A1480 FF+21d, A1500 FF+21d, A1520 FF+21d, A5200 FF+21d, A5220 FF+21d, A5240 FF+21d, A5350 FF+21d, A5590 FF+21d | 45.62d |
| A2880 |  | Fabrication and Delivery Track Light | 77d | 2016-10-11 | 2016-12-29 | A2160, A1340 FF+21d, A1360 FF+21d, A1380 FF+21d, A1400 FF+21d, A1420 FF+21d, A1440 FF+21d, A1460 FF+21d, A1480 FF+21d, A1500 FF+21d, A1520 FF+21d, A5200 FF+21d, A5220 FF+21d, A5240 FF+21d, A5350 FF+21d, A5590 FF+21d | 29.62d |
| A2890 |  | Fabrication and Delivery LED Pin Light | 77d | 2016-10-25 | 2017-01-12 | A2170, A1340 FF+21d, A1360 FF+21d, A1380 FF+21d, A1400 FF+21d, A1420 FF+21d, A1440 FF+21d, A1460 FF+21d, A1480 FF+21d, A1500 FF+21d, A1520 FF+21d, A5200 FF+21d, A5220 FF+21d, A5240 FF+21d, A5350 FF+21d, A5590 FF+21d | 15.62d |
|  | 6 | **Aluminium and Glazing Works** |  | 2016-08-16 | 2017-01-06 |  |  |
| A2940 |  | Fabrication and Delivery Internal Glazed Partitions/ Dividing Screens | 63d | 2016-08-16 | 2016-10-22 | A2220, A1340 FF+21d, A1360 FF+21d, A1380 FF+21d, A1400 FF+21d, A1420 FF+21d, A1440 FF+21d, A1460 FF+21d, A1480 FF+21d, A1500 FF+21d, A1520 FF+21d, A5200 FF+21d, A5220 FF+21d, A5240 FF+21d, A5350 FF+21d, A5590 FF+21d | 83.62d |
| A2950 |  | Fabrication and Delivery Internal Glazed Doors | 63d | 2016-09-05 | 2016-11-11 | A2230, A1340 FF+21d, A1360 FF+21d, A1380 FF+21d, A1400 FF+21d, A1420 FF+21d, A1440 FF+21d, A1460 FF+21d, A1480 FF+21d, A1500 FF+21d, A1520 FF+21d, A5200 FF+21d, A5220 FF+21d, A5240 FF+21d, A5350 FF+21d, A5590 FF+21d | 63.62d |
| A2960 |  | Fabrication and Delivery Windows | 70d | 2016-09-28 | 2016-12-09 | A2240, A1340 FF+21d, A1360 FF+21d, A1380 FF+21d, A1400 FF+21d, A1420 FF+21d, A1440 FF+21d, A1460 FF+21d, A1480 FF+21d, A1500 FF+21d, A1520 FF+21d, A5200 FF+21d, A5220 FF+21d, A5240 FF+21d, A5350 FF+21d, A5590 FF+21d | 37.62d |
| A2970 |  | Fabrication and Delivery Balustrades and Railing | 77d | 2016-10-19 | 2017-01-06 | A2250, A1340 FF+21d, A1360 FF+21d, A1380 FF+21d, A1400 FF+21d, A1420 FF+21d, A1440 FF+21d, A1460 FF+21d, A1480 FF+21d, A1500 FF+21d, A1520 FF+21d, A5200 FF+21d, A5220 FF+21d, A5240 FF+21d, A5350 FF+21d, A5590 FF+21d | 19.62d |
|  | 7 | **Sanitary Appliances and Accessories** |  | 2016-09-17 | 2016-12-05 |  |  |
| A3000 |  | Fabrication and Delivery of Sanitary Equipment & Fixture | 77d | 2016-09-17 | 2016-12-05 | A2990, A1340 FF+21d, A1360 FF+21d, A1380 FF+21d, A1400 FF+21d, A1420 FF+21d, A1440 FF+21d, A1460 FF+21d, A1480 FF+21d, A1500 FF+21d, A1520 FF+21d, A5200 FF+21d, A5220 FF+21d, A5240 FF+21d, A5350 FF+21d, A5590 FF+21d | 56.62d |
|  | 4 | **Construction** |  | 2016-09-18 | 2017-02-15 |  |  |
|  | 1 | **BILL 17 - P1 - FAMILY FRIENDLY RESTAURANT** |  | 2016-10-03 | 2017-02-15 |  |  |
| A4930 |  | Prerequisite for Civil Works (MEP 1st , 2nd Fix and Block Works) | 0d | 2016-10-03 | 2016-10-03 | A1110 | 2d |
| A4940 |  | Area Clearance Process | 2d | 2016-10-03 | 2016-10-04 | A4930, A1110 | 2d |
| A4950 |  | Measurement , Framing and Enabling Works | 14d | 2016-10-05 | 2016-10-20 | A4940, A1110 | 2d |
| A4960 |  | Installation of Ceiling System | 10d | 2016-10-24 | 2016-11-03 | A4950, A2630, A1110 | 0d |
| A4970 |  | MEP Celing Closure Clearance | 3d | 2016-11-05 | 2016-11-07 | A4960, A1110 | 0d |
| A4980 |  | Ceiling Closure | 10d | 2016-11-08 | 2016-11-19 | A4970, A2640, A1110 | 0d |
| A4990 |  | Screed | 5d | 2016-11-20 | 2016-11-24 | A4980, A1110 | 0d |
| A5010 |  | Paint Works | 60d | 2016-11-20 | 2017-01-30 | A4980, A2510, A2650, A1110 | 7d |
| A5000 |  | Wall Cladding | 10d | 2016-11-26 | 2016-12-07 | A4990, A2520, A2540, A2580, A1110 | 0d |
| A5020 |  | Floor Metal Trim | 7d | 2016-12-08 | 2016-12-17 | A5000, A2340, A1110 | 0d |

| ID | WBS | Task | Duration | Start | Finish | Predecessors | Total float |
| --- | --- | --- | --- | --- | --- | --- | --- |
| A5030 |  | Wooden Wall Panelling | 10d | 2016-12-18 | 2016-12-28 | A5020, A2570, A1110 | 0d |
| A5040 |  | Wooden Flooring | 7d | 2016-12-29 | 2017-01-05 | A5030, A2350, A1110 | 0d |
| A5050 |  | Joinery and Carpentry Works | 14d | 2017-01-07 | 2017-01-22 | A5040, A2730, A2740, A2750, A1110 | 0d |
| A5080 |  | Wall Covering | 3d | 2017-01-23 | 2017-01-25 | A2550, A5050, A2940, A2950, A1110 | 0d |
| A5070 |  | Doors , Frames , Ironmongery and Hardware | 4d | 2017-01-26 | 2017-01-30 | A5080, A2720, A1110 | 0d |
| A5090 |  | Lighting Points and Fittings | 7d | 2017-01-31 | 2017-02-07 | A5070, A2840, A2850, A1110 | 0d |
| A5110 |  | Snagging and De-Snagging | 7d | 2017-02-08 | 2017-02-15 | A5010, A5090, A2380, A2340, A1110 | 0d |
|  | 2 | **BILL 17.2 - P1 - PUBLIC TOILETS** |  | 2016-10-03 | 2017-02-15 |  |  |
| A3220 |  | Prerequisite for Civil Works (MEP 1st , 2nd Fix and Block Works) | 0d | 2016-10-03 | 2016-10-03 | A1120 | 2d |
| A3230 |  | Area Clearance Process | 2d | 2016-10-03 | 2016-10-04 | A3220, A1120 | 2d |
| A3240 |  | Measurement , Framing and Enabling Works | 14d | 2016-10-05 | 2016-10-20 | A3230, A1120 | 2d |
| A3250 |  | Installation of Ceiling System | 10d | 2016-10-24 | 2016-11-03 | A3240, A2630, A1120 | 0d |
| A3260 |  | MEP Celing Closure Clearance | 3d | 2016-11-05 | 2016-11-07 | A3250, A1120 | 0d |
| A3270 |  | Ceiling Closure | 10d | 2016-11-08 | 2016-11-19 | A3260, A2640, A1120 | 0d |
| A3280 |  | Screed | 5d | 2016-11-20 | 2016-11-24 | A3270, A1120 | 0d |
| A3300 |  | Paint Works | 60d | 2016-11-20 | 2017-01-30 | A3270, A2510, A2650, A1120 | 7d |
| A3290 |  | Wall Cladding | 14d | 2016-11-26 | 2016-12-13 | A3280, A2520, A1120, A2530 | 0d |
| A3310 |  | Floor Tiling | 14d | 2016-12-14 | 2016-12-29 | A3290, A1120, A2360, A2370 | 0d |
| A3340 |  | Joinery and Carpentry Works | 14d | 2016-12-31 | 2017-01-15 | A2730, A1120, A3310, A1210, A1220 | 0d |
| A3350 |  | Aluminium and Glazing Works | 7d | 2017-01-16 | 2017-01-23 | A3340, A2940, A2950, A1120 | 0d |
| A3370 |  | Wall Covering | 3d | 2017-01-24 | 2017-01-26 | A3350, A2550, A1120, A1220 | 0d |
| A3390 |  | Sanitary Equipment & Fixture | 7d | 2017-01-26 | 2017-02-02 | A3370, A3000 | 5.64d |
| A3360 |  | Doors , Frames , Ironmongery and Hardware | 3d | 2017-01-28 | 2017-01-30 | A3370, A2720, A1120, A1210, A1220 | 0d |
| A3380 |  | Lighting Points and Fittings | 7d | 2017-01-31 | 2017-02-07 | A3360, A2860, A1120 | 0d |
| A3400 |  | Snagging and De-Snagging | 7d | 2017-02-08 | 2017-02-15 | A3300, A1120, A3380, A2380, A2340, A3390 | 0d |
|  | 3 | **BILL 21 - P1 - KID'S CLUB** |  | 2016-10-03 | 2017-02-14 |  |  |
| A3410 |  | Prerequisite for Civil Works (MEP 1st , 2nd Fix and Block Works) | 0d | 2016-10-03 | 2016-10-03 | A1130 | 3d |
| A3420 |  | Area Clearance Process | 2d | 2016-10-03 | 2016-10-04 | A3410, A1130 | 3d |
| A3430 |  | Measurement , Framing and Enabling Works | 14d | 2016-10-05 | 2016-10-20 | A3420, A1130 | 3d |
| A3440 |  | Installation of Ceiling System | 10d | 2016-10-24 | 2016-11-03 | A3430, A2630, A1130 | 1d |
| A3450 |  | MEP Celing Closure Clearance | 3d | 2016-11-05 | 2016-11-07 | A3440, A1130 | 1d |
| A3460 |  | Ceiling Closure | 10d | 2016-11-08 | 2016-11-19 | A3450, A2640, A1130 | 1d |
| A3470 |  | Screed | 3d | 2016-11-20 | 2016-11-22 | A3460, A1130 | 1d |
| A3490 |  | Paint Works | 60d | 2016-11-20 | 2017-01-30 | A3460, A2510, A2650, A1130 | 4d |
| A3480 |  | Wall Cladding | 10d | 2016-11-23 | 2016-12-05 | A3470, A2520, A2580, A1130, A2530, A2560 | 1d |
| A3500 |  | Floor Tiling | 7d | 2016-12-06 | 2016-12-14 | A3480, A1130, A2360, A2370 | 1d |
| A3510 |  | Wooden Wall Panelling | 10d | 2016-12-15 | 2016-12-26 | A3500, A2570, A1130, A1230 | 1d |
| A3520 |  | Wooden Flooring | 7d | 2016-12-27 | 2017-01-03 | A3510, A1130, A2350, A1230 | 1d |
| A3530 |  | Joinery and Carpentry Works | 14d | 2017-01-04 | 2017-01-19 | A3520, A2730, A2740, A2760, A1130, A1230 | 1d |
| A3540 |  | Aluminium and Glazing Works | 7d | 2017-01-21 | 2017-01-28 | A3530, A2940, A2950, A1130 | 1d |
| A3550 |  | Doors , Frames , Ironmongery and Hardware | 3d | 2017-01-29 | 2017-01-31 | A3560 SS, A2720, A1130, A1230 | 1d |
| A3560 |  | Wall Covering | 4d | 2017-01-29 | 2017-02-01 | A3540, A2550, A1130 | 1d |
| A3570 |  | Lighting Points and Fittings | 5d | 2017-01-29 | 2017-02-02 | A3550 SS, A2860, A1130, A2840, A2850, A2870, A2880, A2890 | 1d |
| A5120 |  | Sanitary Equipment & Fixture | 5d | 2017-02-01 | 2017-02-06 | A3000, A3560 | 1.64d |
| A3580 |  | Carpet / Vinyle / Rubber | 3d | 2017-02-04 | 2017-02-06 | A3570, A3490, A2380, A2340, A1130, A2390, A2410 | 1d |
| A3590 |  | Snagging and De-Snagging | 7d | 2017-02-07 | 2017-02-14 | A3580, A3490, A1130, A5120 | 1d |
|  | 4 | **BILL 24 - 8F - GYM - TOWER C** |  | 2016-10-03 | 2017-02-15 |  |  |
| A3600 |  | Prerequisite for Civil Works (MEP 1st , 2nd Fix and Block Works) | 0d | 2016-10-03 | 2016-10-03 | A1140 | 2d |
| A3610 |  | Area Clearance Process | 2d | 2016-10-03 | 2016-10-04 | A3600, A1140 | 2d |
| A3620 |  | Measurement , Framing and Enabling Works | 14d | 2016-10-05 | 2016-10-20 | A3610, A1140 | 2d |
| A3630 |  | Installation of Ceiling System | 10d | 2016-10-24 | 2016-11-03 | A3620, A2630, A1140 | 0d |
| A3640 |  | MEP Celing Closure Clearance | 3d | 2016-11-05 | 2016-11-07 | A3630, A1140 | 0d |
| A3650 |  | Ceiling Closure | 10d | 2016-11-08 | 2016-11-19 | A3640, A2640, A1140 | 0d |
| A3660 |  | Screed | 3d | 2016-11-20 | 2016-11-22 | A3650, A1140 | 0d |
| A3680 |  | Paint Works and Floor Painting | 60d | 2016-11-20 | 2017-01-30 | A3650, A2510, A2650, A1140, A2400 FF+14d | 4d |
| A3670 |  | Wall Cladding | 10d | 2016-11-23 | 2016-12-05 | A3660, A2520, A2540, A2580, A1140 | 0d |
| A3690 |  | Floor Tiling | 7d | 2016-12-06 | 2016-12-14 | A3670, A1140, A2360, A2370 | 0d |
| A3700 |  | Wooden Wall Panelling | 10d | 2016-12-15 | 2016-12-26 | A3690, A2570, A1140, A1240 | 0d |
| A3710 |  | Wooden Flooring | 7d | 2016-12-27 | 2017-01-03 | A3700, A1140, A2350, A1240 | 0d |
| A3720 |  | Joinery and Carpentry Works | 14d | 2017-01-04 | 2017-01-19 | A3710, A2730, A2740, A2760, A1140, A1240 | 0d |
| A3730 |  | Aluminium and Glazing Works | 10d | 2017-01-21 | 2017-01-31 | A3720, A2940, A2950, A1140 | 0d |
| A3740 |  | Doors , Frames , Ironmongery and Hardware | 3d | 2017-02-01 | 2017-02-04 | A3750 SS, A2720, A1140, A1240 | 0d |
| A3750 |  | Wall Covering | 3d | 2017-02-01 | 2017-02-04 | A3730, A2550, A1140, A1240 | 0d |
| A3760 |  | Lighting Points and Fittings | 3d | 2017-02-01 | 2017-02-04 | A3740 SS, A2840, A2850, A2860, A2870, A2880, A2890, A1140 | 0d |
| A3770 |  | Carpet / Vinyle / Rubber | 3d | 2017-02-05 | 2017-02-07 | A3760, A3680, A2380, A2340, A1140, A2390, A2410 | 0d |
| A3780 |  | Snagging and De-Snagging | 7d | 2017-02-08 | 2017-02-15 | A3770, A3680, A1140 | 0d |
|  | 5 | **BILL 25 - 8F - MALE AND FEMALE TOILETS FOR GYM - TOWER C** |  | 2016-10-03 | 2017-02-13 |  |  |
| A3790 |  | Prerequisite for Civil Works (MEP 1st , 2nd Fix and Block Works) | 0d | 2016-10-03 | 2016-10-03 | A1150 | 4d |
| A3800 |  | Area Clearance Process | 2d | 2016-10-03 | 2016-10-04 | A3790, A1150 | 4d |
| A3810 |  | Measurement , Framing and Enabling Works | 14d | 2016-10-05 | 2016-10-20 | A3800, A1150 | 4d |

| ID | WBS | Task | Duration | Start | Finish | Predecessors | Total float |
| --- | --- | --- | --- | --- | --- | --- | --- |
| A3820 |  | Installation of Ceiling System | 10d | 2016-10-24 | 2016-11-03 | A3810, A2630, A1150 | 2d |
| A3830 |  | MEP Celing Closure Clearance | 3d | 2016-11-05 | 2016-11-07 | A3820, A1150 | 2d |
| A3840 |  | Ceiling Closure | 10d | 2016-11-08 | 2016-11-19 | A3830, A2640, A1150 | 2d |
| A3850 |  | Screed | 3d | 2016-11-20 | 2016-11-22 | A3840, A1150 | 2d |
| A3870 |  | Paint Works | 60d | 2016-11-20 | 2017-01-30 | A3840, A2510, A2650, A1150 | 7d |
| A3860 |  | Wall Cladding | 10d | 2016-11-23 | 2016-12-05 | A3850, A2540, A1150, A2530 | 2d |
| A3880 |  | Floor Tiling | 7d | 2016-12-06 | 2016-12-14 | A3860, A1150, A2360, A2370 | 2d |
| A3890 |  | Wooden Wall Panelling | 10d | 2016-12-15 | 2016-12-26 | A3880, A2570, A1150, A1250, A5560 | 2d |
| A3900 |  | Wooden Flooring | 7d | 2016-12-27 | 2017-01-03 | A3890, A1150, A1250, A5560 | 2d |
| A3910 |  | Joinery and Carpentry Works | 14d | 2017-01-04 | 2017-01-19 | A3900, A2730, A2740, A2760, A1150, A1250 | 2d |
| A3920 |  | Aluminium and Glazing Works | 10d | 2017-01-21 | 2017-01-31 | A3910, A2940, A2950, A1150 | 2d |
| A3930 |  | Doors , Frames , Ironmongery and Hardware | 5d | 2017-02-01 | 2017-02-06 | A3940 SS, A2720, A1150, A1250, A5560 | 2d |
| A3940 |  | Wall Covering | 5d | 2017-02-01 | 2017-02-06 | A3920, A2550, A1150, A1250, A5560 | 2d |
| A3950 |  | Lighting Points and Fittings | 4d | 2017-02-01 | 2017-02-05 | A3930 SS, A2840, A2860, A1150 | 2d |
| A3970 |  | Snagging and De-Snagging | 7d | 2017-02-06 | 2017-02-13 | A3870, A1150, A3950, A2380, A2340 | 2d |
|  | 6 | **BILL 26 - 8F - SALON - TOWER C** |  | 2016-10-03 | 2017-02-15 |  |  |
| A3980 |  | Prerequisite for Civil Works (MEP 1st , 2nd Fix and Block Works) | 0d | 2016-10-03 | 2016-10-03 | A1160 | 2d |
| A3990 |  | Area Clearance Process | 2d | 2016-10-03 | 2016-10-04 | A3980, A1160 | 2d |
| A4000 |  | Measurement , Framing and Enabling Works | 14d | 2016-10-05 | 2016-10-20 | A3990, A1160 | 2d |
| A4010 |  | Installation of Ceiling System | 10d | 2016-10-24 | 2016-11-03 | A4000, A2630, A1160 | 0d |
| A4020 |  | MEP Celing Closure Clearance | 3d | 2016-11-05 | 2016-11-07 | A4010, A1160 | 0d |
| A4030 |  | Ceiling Closure | 10d | 2016-11-08 | 2016-11-19 | A4020, A2640, A1160 | 0d |
| A4040 |  | Screed | 3d | 2016-11-20 | 2016-11-22 | A4030, A1160 | 0d |
| A4060 |  | Paint Works | 60d | 2016-11-20 | 2017-01-30 | A4030, A2510, A2650, A1160 | 7d |
| A4050 |  | Wall Cladding | 10d | 2016-11-23 | 2016-12-05 | A4040, A2520, A2540, A2580, A1160, A2530 | 0d |
| A4070 |  | Floor Tiling | 10d | 2016-12-06 | 2016-12-18 | A4050, A1160, A2360, A2370 | 0d |
| A4080 |  | Wooden Wall Panelling | 10d | 2016-12-19 | 2016-12-29 | A4070, A2570, A1160, A2350, A1260 | 0d |
| A4090 |  | Wooden Flooring | 7d | 2016-12-31 | 2017-01-07 | A4080, A1160, A2350, A1260 | 0d |
| A4100 |  | Joinery and Carpentry Works | 14d | 2017-01-08 | 2017-01-23 | A4090, A2730, A2740, A2760, A1160, A2770, A1260 | 0d |
| A4110 |  | Aluminium and Glazing Works | 7d | 2017-01-24 | 2017-01-31 | A4100, A2940, A2950, A1160 | 0d |
| A4120 |  | Doors , Frames , Ironmongery and Hardware | 3d | 2017-02-01 | 2017-02-04 | A4130 SS, A2720, A1160, A1260 | 2d |
| A4130 |  | Wall Covering | 3d | 2017-02-01 | 2017-02-04 | A4110, A2550, A1160 | 0d |
| A4140 |  | Lighting Points and Fittings | 4d | 2017-02-01 | 2017-02-05 | A4120 SS, A2840, A2850, A2860, A2870, A2880, A2890, A1160 | 2d |
| A5130 |  | Sanitary Equipment & Fixture | 3d | 2017-02-05 | 2017-02-07 | A3000, A4130 | 0d |
| A4160 |  | Snagging and De-Snagging | 7d | 2017-02-08 | 2017-02-15 | A4060, A1160, A4140, A2380, A2340, A5130 | 0d |
|  | 7 | **BILL 27.1 - 8F - GYM - TOWER A** |  | 2016-10-03 | 2017-02-15 |  |  |
| A4170 |  | Prerequisite for Civil Works (MEP 1st , 2nd Fix and Block Works) | 0d | 2016-10-03 | 2016-10-03 | A1170 | 2d |
| A4180 |  | Area Clearance Process | 2d | 2016-10-03 | 2016-10-04 | A4170, A1170 | 2d |
| A4190 |  | Measurement , Framing and Enabling Works | 14d | 2016-10-05 | 2016-10-20 | A4180, A1170 | 2d |
| A4200 |  | Installation of Ceiling System | 10d | 2016-10-24 | 2016-11-03 | A4190, A2630, A1170 | 0d |
| A4210 |  | MEP Celing Closure Clearance | 3d | 2016-11-05 | 2016-11-07 | A4200, A1170 | 0d |
| A4220 |  | Ceiling Closure | 10d | 2016-11-08 | 2016-11-19 | A4210, A2640, A1170 | 0d |
| A4230 |  | Screed | 3d | 2016-11-20 | 2016-11-22 | A4220, A1170 | 0d |
| A4250 |  | Paint Works | 60d | 2016-11-20 | 2017-01-30 | A4220, A2510, A2650, A1170 | 4d |
| A4240 |  | Wall Cladding | 10d | 2016-11-23 | 2016-12-05 | A4230, A2520, A2540, A2580, A1170, A2530 | 0d |
| A4260 |  | Floor Tiling | 10d | 2016-12-06 | 2016-12-18 | A4240, A1170, A2360, A2370 | 0d |
| A4270 |  | Wooden Wall Panelling | 10d | 2016-12-19 | 2016-12-29 | A4260, A2570, A1170, A1270 | 0d |
| A4280 |  | Wooden Flooring | 7d | 2016-12-31 | 2017-01-07 | A4270, A1170, A2350, A1270 | 0d |
| A4290 |  | Joinery and Carpentry Works | 14d | 2017-01-08 | 2017-01-23 | A4280, A2730, A2740, A2760, A1170, A1270 | 0d |
| A4300 |  | Aluminium and Glazing Works | 7d | 2017-01-24 | 2017-01-31 | A4290, A2940, A1170, A2960 | 0d |
| A4310 |  | Doors , Frames , Ironmongery and Hardware | 3d | 2017-02-01 | 2017-02-04 | A4320 SS, A2720, A1170, A1270 | 0d |
| A4320 |  | Wall Covering | 3d | 2017-02-01 | 2017-02-04 | A4300, A2550, A1170 | 0d |
| A4330 |  | Lighting Points and Fittings | 3d | 2017-02-01 | 2017-02-04 | A4310 SS, A2840, A2850, A2860, A2870, A2880, A2890, A1170 | 0d |
| A4340 |  | Carpet / Vinyle / Rubber | 3d | 2017-02-05 | 2017-02-07 | A4330, A4250, A2340, A1170, A2410, A2390, A2380 | 0d |
| A5140 |  | Sanitary Equipment & Fixture | 3d | 2017-02-05 | 2017-02-07 | A3000, A4320 | 0d |
| A4350 |  | Snagging and De-Snagging | 7d | 2017-02-08 | 2017-02-15 | A4340, A4250, A1170, A5140 | 0d |
|  | 8 | **BILL 27.2 - 8F - GYM - TOWER B** |  | 2016-10-03 | 2017-02-15 |  |  |
| A4360 |  | Prerequisite for Civil Works (MEP 1st , 2nd Fix and Block Works) | 0d | 2016-10-03 | 2016-10-03 | A1180 | 2d |
| A4370 |  | Area Clearance Process | 2d | 2016-10-03 | 2016-10-04 | A4360, A1180 | 2d |
| A4380 |  | Measurement , Framing and Enabling Works | 14d | 2016-10-05 | 2016-10-20 | A4370, A1180 | 2d |
| A4390 |  | Installation of Ceiling System | 10d | 2016-10-24 | 2016-11-03 | A4380, A2630, A1180 | 0d |
| A4400 |  | MEP Celing Closure Clearance | 3d | 2016-11-05 | 2016-11-07 | A4390, A1180 | 0d |
| A4410 |  | Ceiling Closure | 10d | 2016-11-08 | 2016-11-19 | A4400, A2640, A1180 | 0d |
| A4420 |  | Screed | 3d | 2016-11-20 | 2016-11-22 | A4410, A1180 | 0d |
| A4440 |  | Paint Works | 60d | 2016-11-20 | 2017-01-30 | A4410, A2510, A2650, A1180 | 4d |
| A4430 |  | Wall Cladding | 10d | 2016-11-23 | 2016-12-05 | A4420, A2520, A2540, A2580, A1180, A2530 | 0d |
| A4450 |  | Floor Tiling | 10d | 2016-12-06 | 2016-12-18 | A4430, A1180, A2360, A2370 | 0d |
| A4460 |  | Wooden Wall Panelling | 10d | 2016-12-19 | 2016-12-29 | A4450, A2570, A1180, A1280 | 0d |
| A4470 |  | Wooden Flooring | 7d | 2016-12-31 | 2017-01-07 | A4460, A1180, A2350, A1280 | 0d |
| A4480 |  | Joinery and Carpentry Works | 14d | 2017-01-08 | 2017-01-23 | A4470, A2730, A2740, A2760, A1180, A1280 | 0d |

| ID | WBS | Task | Duration | Start | Finish | Predecessors | Total float |
| --- | --- | --- | --- | --- | --- | --- | --- |
| A4490 |  | Aluminium and Glazing Works | 7d | 2017-01-24 | 2017-01-31 | A4480, A2940, A1180, A2960 | 0d |
| A4500 |  | Doors , Frames , Ironmongery and Hardware | 3d | 2017-02-01 | 2017-02-04 | A4510 SS, A2720, A1180, A1280 | 0d |
| A4510 |  | Wall Covering | 3d | 2017-02-01 | 2017-02-04 | A4490, A2550, A1180 | 0d |
| A4520 |  | Lighting Points and Fittings | 3d | 2017-02-01 | 2017-02-04 | A4500 SS, A2840, A2850, A2860, A2870, A2880, A2890, A1180 | 0d |
| A4530 |  | Carpet / Vinyle / Rubber | 3d | 2017-02-05 | 2017-02-07 | A4520, A4440, A2380, A1180, A2390, A2410 | 0d |
| A5150 |  | Sanitary Equipment & Fixture | 3d | 2017-02-05 | 2017-02-07 | A3000, A4510 | 0d |
| A4540 |  | Snagging and De-Snagging | 7d | 2017-02-08 | 2017-02-15 | A4530, A4440, A1180, A5150 | 0d |
|  | 10 | **BILL 36 - UG - BARBER SHOP - TOWER C** |  | 2016-10-09 | 2017-02-14 |  |  |
| A4740 |  | Prerequisite for Civil Works (MEP 1st , 2nd Fix and Block Works) | 0d | 2016-10-09 | 2016-10-09 | A1200 | 1d |
| A4750 |  | Area Clearance Process | 2d | 2016-10-09 | 2016-10-10 | A4740, A1200 | 1d |
| A4760 |  | Measurement , Framing and Enabling Works | 14d | 2016-10-11 | 2016-10-26 | A4750, A1200 | 1d |
| A4770 |  | Installation of Ceiling System | 10d | 2016-10-27 | 2016-11-07 | A4760, A2630, A1200 | 1d |
| A4780 |  | MEP Celing Closure Clearance | 3d | 2016-11-08 | 2016-11-10 | A4770, A1200 | 1d |
| A4790 |  | Ceiling Closure | 10d | 2016-11-12 | 2016-11-22 | A4780, A2640, A1200 | 1d |
| A4800 |  | Screed | 5d | 2016-11-23 | 2016-11-28 | A4790, A1200 | 2d |
| A4820 |  | Paint Works | 60d | 2016-11-23 | 2017-02-02 | A4790, A2510, A2650, A1200 | 1d |
| A4810 |  | Wall Cladding | 7d | 2016-11-29 | 2016-12-07 | A4800, A2520, A2540, A2580, A1200, A2590 | 2d |
| A4830 |  | Floor Tiling | 7d | 2016-12-08 | 2016-12-17 | A4810, A1200, A2360, A2370 | 2d |
| A4840 |  | Wooden Wall Panelling | 7d | 2016-12-18 | 2016-12-25 | A4830, A2570, A1200, A1300 | 2d |
| A4850 |  | Wooden Flooring | 7d | 2016-12-26 | 2017-01-02 | A4840, A1200, A2350, A1300 | 2d |
| A4860 |  | Joinery and Carpentry Works | 14d | 2017-01-03 | 2017-01-18 | A4850, A2730, A2740, A2760, A1200, A1300 | 2d |
| A4870 |  | Aluminium and Glazing Works | 5d | 2017-01-19 | 2017-01-24 | A4860, A2940, A2950, A1200 | 2d |
| A4880 |  | Doors , Frames , Ironmongery and Hardware | 5d | 2017-01-25 | 2017-01-30 | A4890 SS, A2720, A1200, A1300 | 2d |
| A4890 |  | Wall Covering | 3d | 2017-01-25 | 2017-01-28 | A4870, A2550, A1200, A1300, A5570 | 2d |
| A4900 |  | Lighting Points and Fittings | 5d | 2017-01-25 | 2017-01-30 | A4880 SS, A2840, A2850, A2860, A2870, A2880, A2890, A1200 | 2d |
| A5180 |  | Sanitary Equipment & Fixture | 5d | 2017-01-31 | 2017-02-05 | A3000, A4900 | 2d |
| A4910 |  | Carpet / Vinyle / Rubber | 3d | 2017-02-04 | 2017-02-06 | A4900, A4820, A2380, A2340, A1200, A2340 FF | 1d |
| A4920 |  | Snagging and De-Snagging | 7d | 2017-02-07 | 2017-02-14 | A4910, A4820, A1200, A5180 | 1d |
|  | 9 | **BILL 27.3 - 8F - GYM - TOWER D** |  | 2016-10-03 | 2017-02-15 |  |  |
| A4550 |  | Prerequisite for Civil Works (MEP 1st , 2nd Fix and Block Works) | 0d | 2016-10-03 | 2016-10-03 | A1190 | 2d |
| A4560 |  | Area Clearance Process | 2d | 2016-10-03 | 2016-10-04 | A4550, A1190 | 2d |
| A4570 |  | Measurement , Framing and Enabling Works | 14d | 2016-10-05 | 2016-10-20 | A4560, A1190 | 2d |
| A4580 |  | Installation of Ceiling System | 10d | 2016-10-24 | 2016-11-03 | A4570, A2630, A1190 | 0d |
| A4590 |  | MEP Celing Closure Clearance | 3d | 2016-11-05 | 2016-11-07 | A4580, A1190 | 0d |
| A4600 |  | Ceiling Closure | 10d | 2016-11-08 | 2016-11-19 | A4590, A2640, A1190 | 0d |
| A4610 |  | Screed | 3d | 2016-11-20 | 2016-11-22 | A4600, A1190 | 0d |
| A4630 |  | Paint Works | 60d | 2016-11-20 | 2017-01-30 | A4600, A2510, A2650, A1190 | 4d |
| A4620 |  | Wall Cladding | 10d | 2016-11-23 | 2016-12-05 | A4610, A2520, A2540, A2580, A1190, A2530 | 0d |
| A4640 |  | Floor Tiling | 10d | 2016-12-06 | 2016-12-18 | A4620, A1190, A2360, A2370 | 0d |
| A4650 |  | Wooden Wall Panelling | 10d | 2016-12-19 | 2016-12-29 | A4640, A2570, A1190, A1290 | 0d |
| A4660 |  | Wooden Flooring | 7d | 2016-12-31 | 2017-01-07 | A4650, A1190, A2350, A1290 | 0d |
| A4670 |  | Joinery and Carpentry Works | 14d | 2017-01-08 | 2017-01-23 | A4660, A2730, A2740, A2760, A1190, A1290 | 0d |
| A4680 |  | Aluminium and Glazing Works | 7d | 2017-01-24 | 2017-01-31 | A4670, A2940, A1190, A2960 | 0d |
| A4690 |  | Doors , Frames , Ironmongery and Hardware | 3d | 2017-02-01 | 2017-02-04 | A2720, A1190, A4680, A2550, A1290 | 0d |
| A4710 |  | Lighting Points and Fittings | 3d | 2017-02-01 | 2017-02-04 | A4690 SS, A2840, A2850, A2860, A2870, A2880, A2890, A1190 | 0d |
| A5160 |  | Carpet / Vinyle / Rubber | 3d | 2017-02-05 | 2017-02-07 | A2380, A2390, A2410, A4630, A4710 | 0d |
| A5170 |  | Sanitary Equipment & Fixture | 3d | 2017-02-05 | 2017-02-07 | A3000, A4710 | 0d |
| A4730 |  | Snagging and De-Snagging | 7d | 2017-02-08 | 2017-02-15 | A4630, A1190, A4710, A2380, A2390, A2410, A5160, A5170 | 0d |
|  | 13 | **Bill 14-P1-PRE-FUNCTION** |  | 2016-09-18 | 2017-02-12 |  |  |
| B14-P1PF-1stP001 |  | Prerequisite for Civil Works (MEP 1st , 2nd Fix and Block Works) | 0d | 2016-09-18 | 2016-09-18 | A5250 | 3d |
| B5-UPSD-C181 |  | Handing Over Process | 3d | 2016-09-18 | 2016-09-20 | B14-P1PF-1stP001, A5250 | 3d |
| B5-UPSD-C191 |  | Area Preparation and Enabling Works | 21d | 2016-09-21 | 2016-10-16 | B5-UPSD-C181, A5250 | 3d |
| B14-P1PF-C001 |  | Installation of Celling System | 14d | 2016-10-17 | 2016-11-01 | B14-P1PF-1stP001, B5-UPSD-C191, A5250 | 3d |
| B14-P1PF-2ndP002 |  | MEP Ceiling Closure Clearance | 7d | 2016-11-02 | 2016-11-09 | B14-P1PF-C001, A5250 | 3d |
| B14-P1PF-C002 |  | Ceiling Closure | 14d | 2016-11-10 | 2016-11-26 | B14-P1PF-2ndP002, A5250 | 3d |
| B14-P1PF-3rdP003 |  | Flooring | 7d | 2016-11-27 | 2016-12-05 | B14-P1PF-C002, A5250 | 3d |
| B14-P1PF-C003 |  | Paint Works | 30d | 2016-12-06 | 2017-01-10 | B14-P1PF-3rdP003, A5250 | 3d |
| B14-P1PF-C007 |  | Installation of Metal panelling | 7d | 2016-12-06 | 2016-12-14 | B14-P1PF-C003 SS, A5250 | 5d |
| B14-P1PF-C005 |  | Installation of Wooden wall panelling | 14d | 2016-12-10 | 2016-12-26 | B14-P1PF-C003 SS+3d, A5250, A5280 | 9d |
| B14-P1PF-C004 |  | Installation of Metal Skirting | 7d | 2016-12-15 | 2016-12-22 | B14-P1PF-C007, A5250 | 12d |
| B14-P1PF-C011 |  | Aluminium Works | 14d | 2016-12-15 | 2016-12-31 | B14-P1PF-C007, A5250 | 5d |
| B14-P1PF-C008 |  | Installation of Wall Covering | 7d | 2017-01-01 | 2017-01-08 | B14-P1PF-C005, B14-P1PF-C007, B14-P1PF-C004, B14-P1PF-C011, A5250, A5280 | 5d |
| B14-P1PF-C009 |  | Installation of Glazing Works | 7d | 2017-01-11 | 2017-01-18 | B14-P1PF-C008, B14-P1PF-C003, A5250, A5290 | 3d |
| B14-P1PF-C006 |  | Installation of Light Fittings | 14d | 2017-01-19 | 2017-02-04 | A5250, B14-P1PF-C009 | 3d |
| B14-P1PF-C010 |  | Installation of Carpet | 7d | 2017-01-19 | 2017-01-26 | B14-P1PF-C009, A5250 | 10d |
| B14-P1PF-S012 |  | Snagging and De-Snagging | 7d | 2017-02-05 | 2017-02-12 | B14-P1PF-C009, B14-P1PF-C003, B14-P1PF-C006, B14-P1PF-C010, A5250 | 3d |
|  | 14 | **Bill 15-P1-REST ROOMS (PRE-FUNTION)** |  | 2016-09-18 | 2017-02-12 |  |  |
| B15-P1RPF-1stP001 |  | Prerequisite for Civil Works (MEP 1st , 2nd Fix and Block Works) | 0d | 2016-09-18 | 2016-09-18 | A5260 | 3d |
| B5-UPSD-C201 |  | Handing Over Process | 3d | 2016-09-18 | 2016-09-20 | B15-P1RPF-1stP001, A5260 | 3d |
| B5-UPSD-C211 |  | Area Preparation and Enabling Works | 14d | 2016-09-21 | 2016-10-08 | B5-UPSD-C201, A5260 | 3d |

| ID | WBS | Task | Duration | Start | Finish | Predecessors | Total float |
| --- | --- | --- | --- | --- | --- | --- | --- |
| B15-P1RPF-C001 |  | Installation of Celling System | 21d | 2016-10-09 | 2016-11-01 | B15-P1RPF-1stP001, B5-UPSD-C211, A5260 | 3d |
| B15-P1RPF-2ndP002 |  | MEP Ceiling Closure Clearance | 7d | 2016-11-02 | 2016-11-09 | B15-P1RPF-C001, A5260 | 3d |
| B15-P1RPF-C002 |  | Ceiling Closure | 14d | 2016-11-10 | 2016-11-26 | B15-P1RPF-2ndP002, A5260 | 3d |
| B15-P1RPF-3rdP003 |  | Flooring | 14d | 2016-11-27 | 2016-12-14 | B15-P1RPF-C002, A5260 | 3d |
| B15-P1RPF-C008 |  | Apply of Sibu Finish | 7d | 2016-11-27 | 2016-12-05 | A5260, B15-P1RPF-C002, A5290 | 33d |
| B15-P1RPF-C006 |  | Installation of Light Fittings | 14d | 2016-12-06 | 2016-12-22 | B15-P1RPF-C008, A5260 | 33d |
| B15-P1RPF-C003 |  | Paint Works | 30d | 2016-12-15 | 2017-01-18 | B15-P1RPF-3rdP003, A5260 | 3d |
| B15-P1RPF-C005 |  | Installation of Doors & Ironmongery | 7d | 2017-01-11 | 2017-01-18 | B15-P1RPF-C008, B15-P1RPF-C003 FF, A5260, A5290 | 10d |
| B15-P1RPF-C009 |  | Installation of Sanitary Ware | 7d | 2017-01-19 | 2017-01-26 | B15-P1RPF-C003, A5260 | 3d |
| B15-P1RPF-C004 |  | Installation of Mirror | 7d | 2017-01-28 | 2017-02-04 | B15-P1RPF-C009, A5260 | 4d |
| B15-P1RPF-C007 |  | Installation of Wall Covering | 7d | 2017-01-28 | 2017-02-04 | B15-P1RPF-C005, B15-P1RPF-C006, B15-P1RPF-C009, A5260, A5290, A5300 | 3d |
| B15-P1RPF-C010 |  | Snagging and De-Snagging | 7d | 2017-02-05 | 2017-02-12 | B15-P1RPF-C004 FS-1d, B15-P1RPF-C007, B15-P1RPF-C003, A5260 | 3d |
|  | 15 | **Bill 32 Work Play Suite** |  | 2016-10-16 | 2017-02-15 |  |  |
| A5850 |  | Prerequisite for Civil Works (MEP 1st , 2nd Fix and Block Works) | 0d | 2016-10-16 | 2016-10-16 | A5810 | 0d |
| A5860 |  | Area Clearance Process | 2d | 2016-10-16 | 2016-10-17 | A5850, A5810 | 0d |
| A5870 |  | Measurement , Framing and Enabling Works | 14d | 2016-10-18 | 2016-11-02 | A5860, A5810 | 0d |
| A5880 |  | Installation of Ceiling System | 7d | 2016-11-03 | 2016-11-10 | A5870, A5810, A5840 | 0d |
| A5890 |  | MEP Celing Closure Clearance | 3d | 2016-11-12 | 2016-11-14 | A5880, A5810, A5840 | 0d |
| A5900 |  | Ceiling Closure | 7d | 2016-11-15 | 2016-11-22 | A5890, A5810, A5840 | 0d |
| A5910 |  | Screed | 3d | 2016-11-23 | 2016-11-26 | A5900, A5810, A5840 | 0d |
| A6010 |  | Paint Works | 60d | 2016-11-23 | 2017-02-02 | A5900, A5810, A5840 | 0d |
| A5920 |  | Wall Cladding | 7d | 2016-11-27 | 2016-12-05 | A5910, A5810, A5840 | 0d |
| A5930 |  | Floor Tiling | 7d | 2016-12-06 | 2016-12-14 | A5920, A5810, A5840 | 0d |
| A5940 |  | Wooden Wall Panelling | 7d | 2016-12-15 | 2016-12-22 | A5930, A5810, A5820, A5840 | 0d |
| A5950 |  | Wooden Flooring | 7d | 2016-12-24 | 2016-12-31 | A5940, A5810, A5820, A5840 | 0d |
| A5960 |  | Joinery and Carpentry Works | 14d | 2017-01-01 | 2017-01-16 | A5950, A5810, A5820, A5840 | 0d |
| A5970 |  | Aluminium and Glazing Works | 10d | 2017-01-17 | 2017-01-28 | A5960, A5810, A5840 | 0d |
| A5980 |  | Doors , Frames , Ironmongery and Hardware | 3d | 2017-01-29 | 2017-01-31 | A5990 SS, A5810, A5820, A5840 | 0d |
| A5990 |  | Wall Covering | 3d | 2017-01-29 | 2017-01-31 | A5970, A5810, A5820, A5840 | 0d |
| A6000 |  | Lighting Points and Fittings | 5d | 2017-01-29 | 2017-02-02 | A5980 SS, A5810, A5840 | 0d |
| A6020 |  | Sanitary Equipment & Fixture | 5d | 2017-02-01 | 2017-02-06 | A5990, A5810, A5840 | 1d |
| A6030 |  | Carpet / Vinyle / Rubber | 4d | 2017-02-04 | 2017-02-07 | A6000, A6010, A5810, A5840 | 0d |
| A6040 |  | Snagging and De-Snagging | 7d | 2017-02-08 | 2017-02-15 | A6030, A6010, A6020, A5810, A5840 | 0d |
|  | 19 | **Bill 33-P1-SCREENING ROOM** |  | 2016-09-18 | 2017-02-13 |  |  |
| B33-P1SR-1stP001 |  | Prerequisite for Civil Works (MEP 1st , 2nd Fix and Block Works) | 0d | 2016-09-18 | 2016-09-18 | A5270 | 2d |
| B5-UPSD-C281 |  | Handing Over Process | 3d | 2016-09-18 | 2016-09-20 | B33-P1SR-1stP001, A5270 | 2d |
| B5-UPSD-C291 |  | Area Preparation and Enabling Works | 14d | 2016-09-21 | 2016-10-08 | B5-UPSD-C281, A5270 | 2d |
| B33-P1SR-C001 |  | Installation of Celling System | 21d | 2016-10-09 | 2016-11-01 | B33-P1SR-1stP001, B5-UPSD-C291, A5270 | 2d |
| B33-P1SR-2ndP002 |  | MEP Ceiling Closure Clearance | 3d | 2016-11-02 | 2016-11-05 | B33-P1SR-C001, A5270 | 2d |
| B33-P1SR-C002 |  | Ceiling Closure | 14d | 2016-11-06 | 2016-11-21 | B33-P1SR-2ndP002, A5270 | 2d |
| B33-P1SR-3rdP003 |  | Flooring | 5d | 2016-11-22 | 2016-11-27 | B33-P1SR-C002, A5270 | 2d |
| B33-P1SR-C003 |  | Paint Works | 30d | 2016-11-28 | 2017-01-03 | B33-P1SR-3rdP003, A5270 | 2d |
| B33-P1SR-C004 |  | Installation of Wall Tiling | 7d | 2016-12-03 | 2016-12-10 | B33-P1SR-C003 SS+3d, A5270 | 13d |
| B33-P1SR-C011 |  | Installation of Wooden wall panelling | 14d | 2016-12-03 | 2016-12-19 | B33-P1SR-C003 SS+3d, A5270, A5300 | 20d |
| B33-P1SR-C017 |  | Installation of Steel wall panelling | 14d | 2016-12-03 | 2016-12-19 | B33-P1SR-C003 SS+3d, A5270 | 20d |
| B33-P1SR-C015 |  | Installation of Joinery Works | 14d | 2016-12-12 | 2016-12-27 | B33-P1SR-C003 SS+3d, B33-P1SR-C004, A5270, A5300 | 13d |
| B33-P1SR-C007 |  | Installation of Doors & Ironmongery | 5d | 2017-01-04 | 2017-01-09 | B33-P1SR-C003, A5270, A5300 | 2d |
| B33-P1SR-C005 |  | Installation of Metal Skirting | 5d | 2017-01-10 | 2017-01-15 | B33-P1SR-C004, B33-P1SR-C007, B33-P1SR-C011, B33-P1SR-C015, B33-P1SR-C017, A5270 | 11d |
| B33-P1SR-C006 |  | Installation of Mirror | 5d | 2017-01-10 | 2017-01-15 | B33-P1SR-C004, B33-P1SR-C007, B33-P1SR-C011, B33-P1SR-C015, B33-P1SR-C017, A5270 | 11d |
| B33-P1SR-C008 |  | Installation of Light Fittings | 7d | 2017-01-10 | 2017-01-17 | B33-P1SR-C004, B33-P1SR-C007, B33-P1SR-C011, B33-P1SR-C015, B33-P1SR-C017, A5270 | 2d |
| B33-P1SR-C009 |  | Installation of Timber Flooring | 7d | 2017-01-18 | 2017-01-25 | B33-P1SR-C004, B33-P1SR-C007, B33-P1SR-C011, B33-P1SR-C015, B33-P1SR-C017, B33-P1SR-C008, A5270, A5300 | 2d |
| B33-P1SR-C012 |  | Installation of Floor Tiling | 7d | 2017-01-18 | 2017-01-25 | B33-P1SR-C004, B33-P1SR-C007, B33-P1SR-C011, B33-P1SR-C015, B33-P1SR-C017, B33-P1SR-C008, A5270 | 2d |
| B33-P1SR-C010 |  | Installation of Wall Covering | 5d | 2017-01-26 | 2017-01-31 | B33-P1SR-C005, B33-P1SR-C006, B33-P1SR-C008, B33-P1SR-C009, B33-P1SR-C012, B33-P1SR-C003, A5270, A5300 | 2d |
| B33-P1SR-C013 |  | Installation of Glazing Works | 5d | 2017-01-26 | 2017-01-31 | B33-P1SR-C005, B33-P1SR-C006, B33-P1SR-C008, B33-P1SR-C009, B33-P1SR-C012, A5270 | 2d |
| B33-P1SR-C014 |  | Installation of Sanitary Ware | 5d | 2017-01-26 | 2017-01-31 | B33-P1SR-C005, B33-P1SR-C006, B33-P1SR-C008, B33-P1SR-C009, B33-P1SR-C012, A5270 | 2d |
| B33-P1SR-C018 |  | Installation of Carpet | 4d | 2017-02-01 | 2017-02-05 | B33-P1SR-C003, B33-P1SR-C004, B33-P1SR-C005, B33-P1SR-C006, B33-P1SR-C007, B33-P1SR-C008, B33-P1SR-C009, B33-P1SR-C010, B33-P1SR-C011, B33-P1SR-C012, B33-P1SR-C013, B33-P1SR-C014, B33-P1SR-C015, B33-P1SR-C017, A5270 | 2d |
| B33-P1SR-C019 |  | Installation of Vinyl | 4d | 2017-02-01 | 2017-02-05 | B33-P1SR-C003, B33-P1SR-C004, B33-P1SR-C005, B33-P1SR-C006, B33-P1SR-C007, B33-P1SR-C008, B33-P1SR-C009, B33-P1SR-C010, B33-P1SR-C011, B33-P1SR-C012, B33-P1SR-C013, B33-P1SR-C014, B33-P1SR-C015, B33-P1SR-C017, A5270 | 2d |
| B33-P1SR-S020 |  | Snagging and De-Snagging | 7d | 2017-02-06 | 2017-02-13 | B33-P1SR-C003, B33-P1SR-C010, B33-P1SR-C013, B33-P1SR-C014, B33-P1SR-C018, B33-P1SR-C019, A5270 | 2d |
|  | 11 | **BILL 37 - 7F - PUBLIC TOILETS** |  | 2016-10-03 | 2017-02-15 |  |  |
| A5360 |  | Prerequisite for Civil Works (MEP 1st , 2nd Fix and Block Works) | 0d | 2016-10-03 | 2016-10-03 | A5320 | 2d |
| A5370 |  | Area Clearance Process | 2d | 2016-10-03 | 2016-10-04 | A5360, A5320 | 2d |
| A5380 |  | Measurement , Framing and Enabling Works | 14d | 2016-10-05 | 2016-10-20 | A5370, A5320 | 2d |
| A5390 |  | Installation of Ceiling System | 10d | 2016-10-24 | 2016-11-03 | A5380, A2630, A5320 | 0d |
| A5400 |  | MEP Celing Closure Clearance | 3d | 2016-11-05 | 2016-11-07 | A5390, A5320 | 0d |
| A5410 |  | Ceiling Closure | 10d | 2016-11-08 | 2016-11-19 | A5400, A2640, A5320 | 0d |
| A5420 |  | Screed | 5d | 2016-11-20 | 2016-11-24 | A5410, A5320 | 0d |
| A5480 |  | Paint Works | 60d | 2016-11-20 | 2017-01-30 | A5410, A2510, A2650, A5320 | 7d |
| A5430 |  | Wall Cladding | 10d | 2016-11-26 | 2016-12-07 | A5420, A2540, A5320, A2530 | 0d |
| A5440 |  | Floor Tiling | 10d | 2016-12-08 | 2016-12-20 | A5430, A5320, A2360, A2370 | 0d |
| A5450 |  | Wooden Wall Panelling | 10d | 2016-12-21 | 2017-01-01 | A5440, A2570, A5320, A5330 | 0d |

| ID | WBS | Task | Duration | Start | Finish | Predecessors | Total float |
| --- | --- | --- | --- | --- | --- | --- | --- |
| A5460 |  | Wooden Flooring | 7d | 2017-01-02 | 2017-01-09 | A5450, A5320, A5330 | 0d |
| A5470 |  | Joinery and Carpentry Works | 14d | 2017-01-10 | 2017-01-25 | A5460, A2730, A2740, A2760, A5320, A5330 | 0d |
| A5490 |  | Aluminium and Glazing Works | 7d | 2017-01-26 | 2017-02-02 | A5470, A2940, A2950, A5320, A2970 | 0d |
| A5500 |  | Doors , Frames , Ironmongery and Hardware | 3d | 2017-02-04 | 2017-02-06 | A5510 SS, A2720, A5320, A5330, A5550 | 0d |
| A5510 |  | Wall Covering | 3d | 2017-02-04 | 2017-02-06 | A5490, A2550, A5320, A5330 | 0d |
| A5520 |  | Lighting Points and Fittings | 4d | 2017-02-04 | 2017-02-07 | A5500 SS, A2840, A2860, A5320 | 0d |
| A5530 |  | Snagging and De-Snagging | 7d | 2017-02-08 | 2017-02-15 | A5480, A5320, A5520, A2380, A2340 | 0d |
|  | 12 | **BILL 38 - UG - GROCERY - TOWER A** |  | 2016-10-16 | 2017-02-15 |  |  |
| A5600 |  | Prerequisite for Civil Works (MEP 1st , 2nd Fix and Block Works) | 0d | 2016-10-16 | 2016-10-16 | A5550 | 0d |
| A5610 |  | Area Clearance Process | 2d | 2016-10-16 | 2016-10-17 | A5600, A5550 | 0d |
| A5620 |  | Measurement , Framing and Enabling Works | 14d | 2016-10-18 | 2016-11-02 | A5610, A5550 | 0d |
| A5630 |  | Installation of Ceiling System | 7d | 2016-11-03 | 2016-11-10 | A5620, A2630, A5550 | 0d |
| A5640 |  | MEP Celing Closure Clearance | 3d | 2016-11-12 | 2016-11-14 | A5630, A5550 | 0d |
| A5650 |  | Ceiling Closure | 7d | 2016-11-15 | 2016-11-22 | A5640, A2640, A5550 | 0d |
| A5660 |  | Screed | 3d | 2016-11-23 | 2016-11-26 | A5650, A5550 | 0d |
| A5780 |  | Paint Works | 60d | 2016-11-23 | 2017-02-02 | A5650, A2510, A2650, A5550 | 0d |
| A5670 |  | Wall Cladding | 7d | 2016-11-27 | 2016-12-05 | A5660, A2520, A2540, A2580, A2530, A5550 | 0d |
| A5680 |  | Floor Tiling | 7d | 2016-12-06 | 2016-12-14 | A5670, A2360, A2370, A5550 | 0d |
| A5690 |  | Wooden Wall Panelling | 7d | 2016-12-15 | 2016-12-22 | A5680, A2570, A5550, A5570 | 0d |
| A5700 |  | Wooden Flooring | 7d | 2016-12-24 | 2016-12-31 | A5690, A2350, A5550, A5570 | 0d |
| A5710 |  | Joinery and Carpentry Works | 14d | 2017-01-01 | 2017-01-16 | A5700, A2730, A2740, A2760, A5550, A5570 | 0d |
| A5720 |  | Aluminium and Glazing Works | 10d | 2017-01-17 | 2017-01-28 | A5710, A2940, A2960, A5550 | 0d |
| A5730 |  | Doors , Frames , Ironmongery and Hardware | 3d | 2017-01-29 | 2017-01-31 | A5760 SS, A2720, A5550, A5570 | 0d |
| A5740 |  | Lighting Points and Fittings | 5d | 2017-01-29 | 2017-02-02 | A5730 SS, A2840, A2850, A2860, A2870, A2880, A2890, A5550 | 0d |
| A5760 |  | Wall Covering | 3d | 2017-01-29 | 2017-01-31 | A5720, A2550, A5550, A5570 | 0d |
| A5790 |  | Sanitary Equipment & Fixture | 5d | 2017-02-01 | 2017-02-06 | A3000, A5760, A5550 | 1d |
| A5750 |  | Carpet / Vinyle / Rubber | 4d | 2017-02-04 | 2017-02-07 | A5740, A5780, A2340, A2410, A2390, A2380, A5550 | 0d |
| A5770 |  | Snagging and De-Snagging | 7d | 2017-02-08 | 2017-02-15 | A5750, A5780, A5790, A5550 | 0d |

## Version 2 (data date 2018-04-26, saved 2026-07-24, file Sample Update.xer)

Note of the change: OOS its own module (Module 18) with as-built .xer repair; ship demo samples

Last finish 2017-02-15 → 2018-08-01 (+532d). Complete tasks 50 → 1115.

Added:

| ID | Task | Duration | Start | Finish | Predecessors | Resources |
| --- | --- | --- | --- | --- | --- | --- |
| 6 | **Additional/Variation Works** |  | 2017-02-02 | 2017-02-12 |  |  |
| A6050 | Information to dismantle Ceiling grids in Speak easy due to Pleenum Box | 0d | 2017-02-02 A | 2017-02-02 A | KD01 |  |
| A6060 | Additional scope for Male & Female Prayer Rooms (P-1) | 0d | 2017-02-12 A | 2017-02-12 A | KD01 |  |
| B34-UPSEB-C021 | Removal of Ceiling grid due to addtional MEP from TAV | 7d | 2017-06-13 A | 2017-06-23 A | A6050 | Concrete Barrier |
| B34-UPSEB-C031 | Additional MEP Works (Pleenum Boxes) by TAV | 1.82d | 2017-06-24 A | 2017-07-04 A | B34-UPSEB-C021 | Concrete Barrier |
| B34-UPSEB-C041 | Reinstallation of Ceiling grids due to additional MEP | 7d | 2017-07-01 A | 2017-07-11 A | B34-UPSEB-C031 | Concrete Barrier |
| 7 | **Variation No: 0048-MALE & FEMALE PRAYER ROOMS (P-1)** |  | 2017-03-01 | 2018-05-10 |  |  |
| 1 | **Engineering** |  | 2017-03-01 | 2017-09-02 |  |  |
| 1 | **SD Preparation and Submission of MALE & FEMALE PRAYER ROOMS (P-1)** |  | 2017-03-01 | 2017-08-19 |  |  |
| B12-UPPR-SDS280 | Preparation and Submission of RCP Layout | 15d | 2017-03-01 A | 2017-03-09 A | A6060 FS+3d |  |
| B12-UPPR-SDS290 | Preparation and Submission of Floor Layout | 15d | 2017-03-01 A | 2017-03-09 A | B12-UPPR-SDS300 SS+7d |  |
| B12-UPPR-SDS300 | Preparation and Submission of Elevation Layout | 15d | 2017-03-01 A | 2017-03-09 A | B12-UPPR-SDS280 SS+7d |  |
| B12-UPPR-SDS320 | Preparation and Submission of Doors Shop Drawing | 15d | 2017-06-20 A | 2017-08-17 A | B12-UPPR-SDS330 SS+7d |  |
| B12-UPPR-SDS310 | Preparation and Submission of Joinery Layout | 15d | 2017-06-21 A | 2017-08-19 A | B12-UPPR-SDS320 SS+7d |  |
| B12-UPPR-SDS330 | Preparation and Submission of Details Layout | 15d | 2017-06-25 A | 2017-08-10 A | B12-UPPR-SDS290 SS+7d |  |
| 2 | **SD Approval of MALE & FEMALE PRAYER ROOMS (P-1)** |  | 2017-03-11 | 2017-09-02 |  |  |
| B12-UPPR-SDA300 | Review & Approval of RCP Layout | 15d | 2017-03-11 A | 2017-04-27 A | B12-UPPR-SDS280 SS+7d |  |
| B12-UPPR-SDA310 | Review & Approval of Floor Layout | 15d | 2017-03-11 A | 2017-07-31 A | B12-UPPR-SDS290 SS+7d |  |
| B12-UPPR-SDA320 | Review & Approval of Elevation Layout | 15d | 2017-03-11 A | 2017-07-19 A | B12-UPPR-SDS300 SS+7d |  |
| B12-UPPR-SDA290 | Review & Approval of Details Layout | 15d | 2017-07-10 A | 2017-08-14 A | B12-UPPR-SDS330 SS+7d |  |
| B12-UPPR-SDA280 | Review & Approval of Doors Shop Drawing | 15d | 2017-07-11 A | 2017-09-02 A | B12-UPPR-SDS320 SS+7d |  |
| B12-UPPR-SDA330 | Review & Approval of Joinery Layout | 15d | 2017-07-17 A | 2017-09-02 A | B12-UPPR-SDS310 SS+7d |  |
| 2 | **Procurement Process for MALE & FEMALE PRAYER ROOMS (P-1)** |  | 2017-05-08 | 2017-11-17 |  |  |
| B12-UPPR-PR280 | Fabrication and Delivery of Ceiling System | 20d | 2017-05-08 A | 2017-10-09 A | B12-UPPR-SDA300 |  |
| B12-UPPR-PR310 | Fabrication and Delivery of Doors , Ironmongery and Hardware | 35d | 2017-06-12 A | 2017-11-05 A | B12-UPPR-SDA280 |  |
| B12-UPPR-PR270 | Fabrication and Delivery of Carpet | 35d | 2017-08-07 A | 2017-10-05 A | B12-UPPR-SDA310 |  |
| B12-UPPR-PR290 | Fabrication and Delivery of Veneer Works - Joinery | 35d | 2017-08-22 A | 2017-10-31 A | B12-UPPR-SDA290, B12-UPPR-SDA320, B12-UPPR-SDA330 |  |
| B12-UPPR-PR300 | Fabrication and Delivery of Wall Covering | 35d | 2017-10-05 A | 2017-11-17 A | B12-UPPR-SDA320 |  |
| 3 | **Construction** |  | 2017-03-14 | 2018-05-10 |  |  |
| B12-UPPR-1stP1 | Site Access | 0d | 2017-03-14 A | 2017-03-14 A | A6060 |  |
| B5-UPSD-C361 | Clearance process for Measurements, Framing & Enabling Works | 10d | 2017-03-15 A | 2017-10-04 A | B12-UPPR-1stP1 |  |
| B5-UPSD-C371 | Measurements , Framing & Enabling Works | 18d | 2017-05-15 A | 2017-09-20 A | B5-UPSD-C361 |  |
| B12-UPPR-2ndP2 | MEP Ceiling Closure Clearance | 7d | 2017-07-25 A | 2017-07-25 A | B12-UPPR-C9 |  |
| B12-UPPR-3rdP3 | Flooring (by others) | 0d | 2017-10-17 A | 2017-10-17 A | B12-UPPR-C49 |  |
| B12-UPPR-C29 | Installation of Doors & Ironmongery | 7d | 2017-10-18 A | 2018-01-04 A | B12-UPPR-PR310, B12-UPPR-C19 |  |
| B12-UPPR-C39 | Installation of Wall Covering | 10d | 2017-11-22 A | 2018-03-18 A | B12-UPPR-C19, B12-UPPR-PR300, B12-UPPR-PR290 |  |
| B12-UPPR-C79 | Installation of Joinery Works | 12d | 2017-12-12 A | 2018-02-08 A | B12-UPPR-C29, B12-UPPR-C19 SS, B12-UPPR-PR290, B12-UPPR-C69 |  |
| B12-UPPR-C59 | Installation of Light Fittings | 8d | 2018-02-15 A | 2018-03-20 A | B12-UPPR-C29, B12-UPPR-C19 |  |
| B12-UPPR-C69 | Installation of Timber Flooring | 14d | 2018-03-22 A | 2018-04-28 | B12-UPPR-PR290, B12-UPPR-C39, B12-UPPR-C19, B12-UPPR-C59 |  |
| B12-UPPR-C89 | Installation of Carpet | 7d | 2018-04-12 A | 2018-04-29 | B12-UPPR-C79, B12-UPPR-C59, B12-UPPR-C39, B12-UPPR-C69, B12-UPPR-PR270 |  |

Removed: A1010 Design Freeze & Receipt of IFC Drawing BILL 17 - P1 - FAMILY FRIENDLY RESTAURANT; A1060 Design Freeze & Receipt of IFC Drawing BILL 26 - 8F - SALON - TOWER C; A1100 Design Freeze & Receipt of IFC Drawing BILL 36 - UG - BARBER SHOP - TOWER C; A1110 Site Access BILL 17 - P1 - FAMILY FRIENDLY RESTAURANT; A1160 Site Access BILL 26 - 8F - SALON - TOWER C; A1200 Site Access BILL 36 - UG - BARBER SHOP - TOWER C; A1210 A/C BILL 17 - P1 - FAMILY FRIENDLY RESTAURANT; A1260 A/C BILL 26 - 8F - SALON - TOWER C; A1300 A/C BILL 36 - UG - BARBER SHOP - TOWER C; BILL 17 - P1 - FAMILY FRIENDLY RESTAURANT; A1330 Preparation and Submission of Shop Drawing; A1340 Review and Approval of Shop Drawing; BILL 26 - 8F - SALON - TOWER C; A1430 Preparation and Submission of Shop Drawing; A1440 Review and Approval of Shop Drawing; BILL 36 - UG - BARBER SHOP - TOWER C; A1510 Preparation and Submission of Shop Drawing; A1520 Review and Approval of Shop Drawing; BILL 17 - P1 - FAMILY FRIENDLY RESTAURANT; A4930 Prerequisite for Civil Works (MEP 1st , 2nd Fix and Block Works); A4940 Area Clearance Process; A4950 Measurement , Framing and Enabling Works; A4970 MEP Celing Closure Clearance; A4990 Screed; A5000 Wall Cladding; A5020 Floor Metal Trim; A5030 Wooden Wall Panelling; A5040 Wooden Flooring; A5050 Joinery and Carpentry Works; A5080 Wall Covering; A5070 Doors , Frames , Ironmongery and Hardware; A5090 Lighting Points and Fittings; BILL 26 - 8F - SALON - TOWER C; A3980 Prerequisite for Civil Works (MEP 1st , 2nd Fix and Block Works); A3990 Area Clearance Process; A4000 Measurement , Framing and Enabling Works; A4010 Installation of Ceiling System; A4020 MEP Celing Closure Clearance; A4030 Ceiling Closure; A4040 Screed; A4060 Paint Works; A4050 Wall Cladding; A4070 Floor Tiling; A4080 Wooden Wall Panelling; A4090 Wooden Flooring; A4100 Joinery and Carpentry Works; A4110 Aluminium and Glazing Works; A4120 Doors , Frames , Ironmongery and Hardware; A4130 Wall Covering; A4140 Lighting Points and Fittings; A5130 Sanitary Equipment & Fixture; A4160 Snagging and De-Snagging; BILL 36 - UG - BARBER SHOP - TOWER C; A4740 Prerequisite for Civil Works (MEP 1st , 2nd Fix and Block Works); A4750 Area Clearance Process; A4760 Measurement , Framing and Enabling Works; A4770 Installation of Ceiling System; A4780 MEP Celing Closure Clearance; A4790 Ceiling Closure; A4800 Screed; A4820 Paint Works; A4810 Wall Cladding; A4830 Floor Tiling; A4840 Wooden Wall Panelling; A4850 Wooden Flooring; A4860 Joinery and Carpentry Works; A4870 Aluminium and Glazing Works; A4880 Doors , Frames , Ironmongery and Hardware; A4890 Wall Covering; A4900 Lighting Points and Fittings; A5180 Sanitary Equipment & Fixture; A4910 Carpet / Vinyle / Rubber; A4920 Snagging and De-Snagging

Changed:

| ID | Task | Start | Finish | Complete | Total float | Predecessors | Other |
| --- | --- | --- | --- | --- | --- | --- | --- |
| 1 | **Project Key Dates** |  | 2017-02-15 → 2018-08-01 (+532d) |  |  |  |  |
| KD15 | Project Completion (TOC) | 2017-02-15 → 2018-08-01 (+532d) | 2017-02-15 → 2018-08-01 (+532d) |  | 0d → -531.36d | TOC01, TOC02, TOC03, TOC04, TOC05, TOC06, TOC07, TOC08, TOC09, TOC10, TOC11, TOC12, TOC15, TOC16, TOC17, TOC19, TOC20, TOC21, KD05, KD25, KD35, A3400, A3590, A3780, A3970, Snagging and De-Snagging, A4350, A4540, A4730, Snagging and De-Snagging, B12-UPPR-S10, B14-P1PF-S012, B15-P1RPF-C010, B33-P1SR-S020, A5530, A5770, B2-UPHL-S13, B3-UPHR-S012, B4-UPVP-S013, B5-UPSD-S009, B6-UPHLL-S006, B7-UPRLL-S009, B8-UPFO-S007, B9-UPCB-S13, B10-UPRT-S007, B11-UPRR-S011, B12-UPPR-S010, B13-UPRL-S010, B20-UPCB-C004, B28-TsLC-S010, B29-SPALC-S018, B34-UPSEB-S018, B35-TCSR-S007, B39-LGLL-S009, A6040 → TOC17, TOC20, TOC06, TOC08, TOC10, B14-P1PF-S012, B6-UPHLL-S006, B13-UPRL-S010, B20-UPCB-C004, KD05, TOC16, TOC05, A4540, A4730, A5530, A5770, B8-UPFO-S007, B9-UPCB-S13, B34-UPSEB-S018, KD35, TOC19, TOC02, TOC01, A6040, B33-P1SR-S020, B5-UPSD-S009, B7-UPRLL-S009, TOC03, A3400, A3590, B29-SPALC-S018, TOC11, B15-P1RPF-C010, B4-UPVP-S013, B10-UPRT-S007, B35-TCSR-S007, TOC15, TOC09, TOC12, A3970, A4350, B12-UPPR-S10, B2-UPHL-S13, B28-TsLC-S010, B3-UPHR-S012, B12-UPPR-S010, KD25, TOC21, TOC04, TOC07, A3780, B11-UPRR-S011, B39-LGLL-S009 |  |
| 2 | **Project Milestones** |  | 2017-02-15 → 2018-08-01 (+532d) |  |  |  |  |
| 1 | **Required Milestones** |  | 2016-10-02 → 2018-04-26 (+571d) |  |  |  |  |
| 4 | **Advance Payment** |  | 2016-07-04 → 2016-08-28 (+55d) |  |  |  |  |
| KD03 | Receipt of Advance Payment | 2016-07-04 A → 2016-08-28 A (+55d) | 2016-07-04 A → 2016-08-28 A (+55d) |  |  |  |  |
| 3 | **Site Access** |  | 2016-08-21 → 2018-01-15 (+512d) |  |  |  |  |
| RM-SA-004 | Site Acess Bill 5 UP-SAFE DEPOSIT | 2016-08-07 A | 2016-08-07 A | 0% → 100% | 1d → none |  | constraint start on or after 2016-08-07 → start on 2016-11-13 |
| RM-SA-002 | Site Acess Bill 3 UP-HOTEL RECEPTION | 2016-08-14 → 2016-08-28 A (+14d) | 2016-08-14 → 2016-08-28 A (+14d) | 0% → 100% | 5d → none |  |  |
| RM-SA-005 | Site Acess Bill 6 UP-HOTEL LIFT LOBBY | 2016-08-21 → 2016-09-19 A (+29d) | 2016-08-21 → 2016-09-19 A (+29d) | 0% → 100% | 9d → none |  | constraint start on or after 2016-08-21 → start on or after 2016-11-13 |
| RM-SA-006 | Site Acess Bill 7 UP-RESIDENCE'S LIFT LOBBY | 2016-07-24 → 2016-09-27 A (+65d) | 2016-07-24 → 2016-09-27 A (+65d) | 0% → 100% | 13d → none |  | constraint start on or after 2016-07-24 → start on or after 2016-11-13 |
| RM-SA-012 | Site Acess Bill 13 UP-RESIDENCES LOBBY | 2016-08-07 → 2016-10-13 A (+67d) | 2016-08-07 → 2016-10-13 A (+67d) | 0% → 100% | 1d → none |  | constraint start on or after 2016-08-07 → start on or after 2016-11-13 |
| RM-SA-007 | Site Acess Bill 8 UP-FRONT OFFICE | 2016-07-31 → 2016-10-26 A (+87d) | 2016-07-31 → 2016-10-26 A (+87d) | 0% → 100% | 12d → none |  | constraint start on or after 2016-07-31 → start on or after 2016-10-03 |
| RM-SA-001 | Site Acess Bill 2 UP-HOTEL LOBBY | 2016-08-07 → 2016-10-30 A (+84d) | 2016-08-07 → 2016-10-30 A (+84d) | 0% → 100% | 3d → none |  | constraint start on or after 2016-08-07 → start on or after 2016-10-30 |
| RM-SA-010 | Site Acess Bill 11 UP-REST ROOMS | 2016-07-24 → 2016-11-10 A (+109d) | 2016-07-24 → 2016-11-10 A (+109d) | 0% → 100% | 9d → none |  | constraint start on or after 2016-07-24 → start on or after 2016-11-13 |
| RM-SA-009 | Site Acess Bill 10 UP-RETAIL | 2016-07-31 → 2017-01-11 A (+164d) | 2016-07-31 → 2017-01-11 A (+164d) | 0% → 100% | 12d → none |  | constraint start on or after 2016-07-31 → start on or after 2016-11-13 |
| RM-SA-016 | Site Acess Bill 28 LIFT CAR - TOWER A, B & D | 2016-08-14 → 2017-01-25 A (+164d) | 2016-08-14 → 2017-01-25 A (+164d) | 0% → 100% | 5d → none |  | constraint start on or after 2016-08-14 → start on or after 2016-11-13 |
| RM-SA-017 | Site Acess Bill 29 SPA | 2016-08-07 → 2017-01-25 A (+171d) | 2016-08-07 → 2017-01-25 A (+171d) | 0% → 100% | 12d → none |  | constraint start on or after 2016-08-07 → start on or after 2016-11-13 |
| RM-SA-021 | Site Acess Bill 35 LIFT CAR - TOWER C | 2016-08-07 → 2017-01-25 A (+171d) | 2016-08-07 → 2017-01-25 A (+171d) | 0% → 100% | 20d → none |  | constraint start on or after 2016-08-07 → start on or after 2016-11-13 |
| RM-SA-022 | Site Acess Bill 39 LG- LIFT LOBBY | 2016-08-14 → 2017-03-20 A (+218d) | 2016-08-14 → 2017-03-20 A (+218d) | 0% → 100% | 9d → none |  | constraint start on or after 2016-08-14 → start on or after 2016-11-13 |
| RM-SA-008 | Site Acess Bill 9 UP-CHOCOLATE BOUTIQUE | 2016-07-17 → 2017-08-17 A (+396d) | 2016-07-17 → 2017-08-17 A (+396d) | 0% → 100% | 34d → none |  | constraint start on or after 2016-07-17 → start on or after 2016-11-13 |
| RM-SA-015 | Site Acess Bill 20 UP-COFFEE BAR | 2016-07-10 → 2018-01-15 A (+554d) | 2016-07-10 → 2018-01-15 A (+554d) | 0% → 100% | 59d → none |  | constraint start on or after 2016-07-10 → start on or after 2016-11-13 |
| 2 | **Wild Air Milestones** | 2016-09-11 → 2017-06-20 (+282d) | 2016-10-02 → 2018-04-26 (+571d) |  |  |  |  |
| RM-AC-006 | A/C on Bill 7 UP-RESIDENCE'S LIFT LOBBY | 2016-10-02 → 2017-06-20 A (+261d) | 2016-10-02 → 2017-06-20 A (+261d) | 0% → 100% | 72.3d → none |  | constraint start on or after 2016-10-02 → start on or after 2016-11-13 |
| RM-AC-012 | A/C on Bill 13 UP-RESIDENCES LOBBY | 2016-10-02 → 2017-06-20 A (+261d) | 2016-10-02 → 2017-06-20 A (+261d) | 0% → 100% | 83.3d → none |  | constraint start on or after 2016-10-02 → start on 2016-10-02 |
| RM-AC-011 | A/C on Bill 12 UP-PRAYER ROOMS | 2016-10-02 → 2017-06-25 A (+266d) | 2016-10-02 → 2017-06-25 A (+266d) | 0% → 100% | 63.3d → none |  | constraint start on or after 2016-10-02 → start on or after 2016-11-13 |
| RM-AC-022 | A/C on Bill 39 LG- LIFT LOBBY | 2016-10-02 → 2017-06-25 A (+266d) | 2016-10-02 → 2017-06-25 A (+266d) | 0% → 100% | 98.3d → none |  | constraint start on or after 2016-10-02 → start on 2016-10-02 |
| RM-AC-010 | A/C on Bill 11 UP-REST ROOMS | 2016-10-02 → 2017-07-02 A (+273d) | 2016-10-02 → 2017-07-02 A (+273d) | 0% → 100% | 64.3d → none |  | constraint start on or after 2016-10-02 → start on 2016-10-02 |
| RM-AC-016 | A/C on Bill 28 LIFT CAR - TOWER A, B & D | 2016-10-02 → 2017-08-01 A (+303d) | 2016-10-02 → 2017-08-01 A (+303d) | 0% → 100% | 99.3d → none |  | constraint start on or after 2016-10-02 → start on 2016-10-02 |
| RM-AC-021 | A/C on Bill 35 LIFT CAR - TOWER C | 2016-10-02 → 2017-08-01 A (+303d) | 2016-10-02 → 2017-08-01 A (+303d) | 0% → 100% | 113.3d → none |  | constraint start on or after 2016-10-02 → start on 2016-10-02 |
| RM-AC-003 | A/C on Bill 4 UP-VIP PROTOCOL | 2016-10-02 → 2018-02-28 A (+514d) | 2016-10-02 → 2018-02-28 A (+514d) | 0% → 100% | 29.3d → none |  | constraint start on or after 2016-10-02 → start on or after 2016-11-13 |
| RM-AC-001 | A/C on Bill 2 UP-HOTEL LOBBY | 2016-10-02 → 2018-04-26 (+571d) | 2016-10-02 → 2018-04-26 (+571d) |  | 85.3d → -434d |  | constraint start on or after 2016-10-02 → start on or after 2016-11-13 |
| RM-AC-002 | A/C on Bill 3 UP-HOTEL RECEPTION | 2016-10-02 → 2018-04-26 (+571d) | 2016-10-02 → 2018-04-26 (+571d) |  | 80.3d → -434d |  | constraint start on or after 2016-10-02 → start on or after 2016-11-13 |
| RM-AC-004 | A/C on Bill 5 UP-SAFE DEPOSIT | 2016-10-02 → 2018-04-26 (+571d) | 2016-10-02 → 2018-04-26 (+571d) |  | 85.3d → -542.7d |  | constraint start on or after 2016-10-02 → start on 2016-10-30 |
| RM-AC-005 | A/C on Bill 6 UP-HOTEL LIFT LOBBY | 2016-10-02 → 2018-04-26 (+571d) | 2016-10-02 → 2018-04-26 (+571d) |  | 105.3d → -571d |  | constraint start on or after 2016-10-02 → start on 2016-10-02 |
| RM-AC-007 | A/C on Bill 8 UP-FRONT OFFICE | 2016-10-02 → 2018-04-26 (+571d) | 2016-10-02 → 2018-04-26 (+571d) |  | 74.3d → -571d |  | constraint start on or after 2016-10-02 → start on 2016-10-02 |
| RM-AC-008 | A/C on Bill 9 UP-CHOCOLATE BOUTIQUE | 2016-10-02 → 2018-04-26 (+571d) | 2016-10-02 → 2018-04-26 (+571d) |  | 108.3d → -571d |  | constraint start on or after 2016-10-02 → start on 2016-10-02 |
| RM-AC-009 | A/C on Bill 10 UP-RETAIL | 2016-10-02 → 2018-04-26 (+571d) | 2016-10-02 → 2018-04-26 (+571d) |  | 97.3d → -434d |  | constraint start on or after 2016-10-02 → start on or after 2016-11-13 |
| RM-AC-015 | A/C on Bill 20 UP-COFFEE BAR | 2016-09-11 → 2018-04-26 (+592d) | 2016-09-11 → 2018-04-26 (+592d) |  | 71.3d → -519.64d |  | constraint start on or after 2016-09-11 → start on or after 2016-11-13 |
| RM-AC-017 | A/C on Bill 29 SPA | 2016-10-02 → 2018-04-26 (+571d) | 2016-10-02 → 2018-04-26 (+571d) |  | 78.3d → -571d |  | constraint start on or after 2016-10-02 → start on 2016-10-02 |
| RM-AC-020 | A/C on Bill 34 UP-SPEAK EASY BAR | 2016-10-02 → 2018-04-26 (+571d) | 2016-10-02 → 2018-04-26 (+571d) |  | 63.3d → -434d |  | constraint start on or after 2016-10-02 → start on or after 2016-11-13 |
| 3 | **Control Milestones** | 2016-12-10 → 2018-01-01 (+387d) | 2017-02-15 → 2018-08-01 (+532d) |  |  |  |  |
| 2 | **Phases** | 2016-12-29 → 2018-01-01 (+368d) | 2017-02-15 → 2018-08-01 (+532d) |  |  |  |  |
| KD25 | Completion of Engineering Phase | 2016-12-29 → 2018-01-01 A (+368d) | 2016-12-29 → 2018-01-01 A (+368d) | 0% → 100% | 48d → none |  |  |
| KD05 | Completion of Procurement Phase | 2017-01-17 → 2018-05-03 (+471d) | 2017-01-17 → 2018-05-03 (+471d) |  | 29.14d → -442.01d |  |  |
| KD35 | Completion of Construction Phase | 2017-02-15 → 2018-08-01 (+532d) | 2017-02-15 → 2018-08-01 (+532d) |  | 0d → -531.78d |  |  |
| 1 | **Areas Substantial Completion** | 2016-12-10 → 2018-05-03 (+509d) | 2017-02-15 → 2018-08-01 (+532d) |  |  |  |  |
| TOC10 | Substantial Completion of Bill 11-UP-REST ROOMS | 2017-02-04 → 2018-05-03 (+453d) | 2017-02-04 → 2018-05-03 (+453d) |  | 11d → -441.95d |  |  |
| TOC07 | Substantial Completion of Bill 8-UP-FRONT OFFICE | 2017-01-30 → 2018-05-03 (+458d) | 2017-01-30 → 2018-05-03 (+458d) |  | 16d → -441.98d |  |  |
| TOC01 | Substantial Completion of Bill 2 UP-HOTEL LOBBY | 2017-02-14 → 2018-05-03 (+443d) | 2017-02-14 → 2018-05-03 (+443d) |  | 1d → -442d | B2-UPHL-1stP001, B12-UPPR-C9, B2-UPHL-2ndP002, B2-UPHL-C002, B2-UPHL-C003, B2-UPHL-3rdP003, B2-UPHL-C004, B2-UPHL-C005, B2-UPHL-C006, B2-UPHL-C007, B2-UPHL-C008, B2-UPHL-C009, B2-UPHL-C010, B2-UPHL-C011, B2-UPHL-C012, B2-UPHL-S13, B2-UPHL-C021, B2-UPHL-C031, B2-UPHL-C014 → B2-UPHL-C009, B2-UPHL-C014, B2-UPHL-C002, B2-UPHL-C006, B2-UPHL-2ndP002, B2-UPHL-C005, B2-UPHL-C010, B2-UPHL-C031, B2-UPHL-C001, B2-UPHL-C004, B2-UPHL-C011, B2-UPHL-C012, B2-UPHL-3rdP003, B2-UPHL-C007, B2-UPHL-C008, B2-UPHL-S13, B2-UPHL-C021, B2-UPHL-1stP001, B2-UPHL-C003 |  |
| TOC02 | Substantial Completion of Bill 3-UP-HOTEL RECEPTION | 2017-02-08 → 2018-05-03 (+449d) | 2017-02-08 → 2018-05-03 (+449d) |  | 7d → -442d |  |  |
| TOC04 | Substantial Completion of Bill 5-UP-SAFE DEPOSIT | 2017-02-14 → 2018-05-03 (+443d) | 2017-02-14 → 2018-05-03 (+443d) |  | 1d → -442d |  |  |
| TOC11 | Substantial Completion of Bill 12-UP-PRAYER ROOMS | 2017-02-02 → 2018-05-03 (+455d) | 2017-02-02 → 2018-05-03 (+455d) |  | 13d → -442d |  |  |
| TOC12 | Substantial Completion of Bill 13-UP-RESIDENCES LOBBY | 2017-02-14 → 2018-05-03 (+443d) | 2017-02-14 → 2018-05-03 (+443d) |  | 1d → -442d |  |  |
| TOC16 | Substantial Completion of Bill 28-LIFT CAR - TOWER A, B & D | 2017-02-15 → 2018-05-03 (+442d) | 2017-02-15 → 2018-05-03 (+442d) |  | 0d → -442d |  |  |
| TOC17 | Substantial Completion of Bill 29-SPA | 2017-02-06 → 2018-05-03 (+451d) | 2017-02-06 → 2018-05-03 (+451d) |  | 9d → -442d |  |  |
| TOC19 | Substantial Completion of Bill 34-UP-SPEAK EASY BAR | 2017-02-07 → 2018-05-03 (+450d) | 2017-02-07 → 2018-05-03 (+450d) |  | 8.2d → -442d |  |  |
| TOC20 | Substantial Completion of Bill 35-LIFT CAR - TOWER C | 2017-02-14 → 2018-05-03 (+443d) | 2017-02-14 → 2018-05-03 (+443d) |  | 1d → -442d |  |  |
| TOC21 | Substantial Completion of Bill 39-LG- LIFT LOBBY | 2017-02-11 → 2018-05-03 (+446d) | 2017-02-11 → 2018-05-03 (+446d) |  | 4d → -442d |  |  |
| TOC09 | Substantial Completion of Bill 10-UP-RETAIL | 2017-02-02 → 2018-05-05 (+457d) | 2017-02-02 → 2018-05-05 (+457d) |  | 13d → -443.66d |  |  |
| TOC03 | Substantial Completion of Bill 4-UP-VIP PROTOCOL | 2017-01-22 → 2018-05-13 (+476d) | 2017-01-22 → 2018-05-13 (+476d) |  | 24.08d → -451.66d |  |  |
| TOC05 | Substantial Completion of Bill 6-UP-HOTEL LIFT LOBBY | 2017-02-04 → 2018-05-13 (+463d) | 2017-02-04 → 2018-05-13 (+463d) |  | 11d → -451.68d |  |  |
| TOC06 | Substantial Completion of Bill 7-UP-RESIDENCE'S LIFT LOBBY | 2017-01-30 → 2018-05-13 (+468d) | 2017-01-30 → 2018-05-13 (+468d) |  | 16d → -451.68d |  |  |
| TOC08 | Substantial Completion of Bill 9-UP-CHOCOLATE BOUTIQUE | 2017-02-12 → 2018-07-23 (+526d) | 2017-02-12 → 2018-07-23 (+526d) |  | 3.24d → -522.95d |  |  |
| TOC15 | Substantial Completion of Bill 20-UP-COFFEE BAR | 2016-12-10 → 2018-08-01 (+599d) | 2016-12-10 → 2018-08-01 (+599d) |  | 67d → -531.78d |  |  |
| 3 | **Engineering Phase** |  | 2016-12-29 → 2018-03-01 (+427d) |  |  |  |  |
| 1 | **Shop Drawing Process** |  | 2016-12-29 → 2017-05-27 (+149d) |  |  |  |  |
| 1 | **Shop Drawing Process Bill 2 UP-HOTEL LOBBY** |  | 2016-10-12 → 2017-01-24 (+104d) |  |  |  |  |
| 1 | **SD Preparation and Submission of Bill 2 UP-HOTEL LOBBY** |  | 2016-09-20 → 2016-09-06 (-14d) |  |  |  |  |
| B2-UPHL-SDS210 | Preparation and Submission of Details Layout |  | 2016-07-10 → 2016-09-04 A (+56d) | 90% → 100% | 67.6d → none |  | resources Preparation and Submission Shop Drawing [14 h] → none |

| ID | Task | Start | Finish | Complete | Total float | Other |
| --- | --- | --- | --- | --- | --- | --- |
| B2-UPHL-SDS160 | Preparation and Submission of RCP Layout |  | 2016-08-02 → 2016-09-05 A (+34d) | 10% → 100% | 5.1d → none | resources Preparation and Submission Shop Drawing [14 h] → none |
| B2-UPHL-SDS170 | Preparation and Submission of Floor Layout |  | 2016-07-25 → 2016-09-04 A (+41d) | 10% → 100% | 3.4d → none | resources Preparation and Submission Shop Drawing [14 h] → none |
| B2-UPHL-SDS180 | Preparation and Submission of Elevation Layout |  | 2016-07-25 → 2016-09-04 A (+41d) | 10% → 100% | 3.4d → none | resources Preparation and Submission Shop Drawing [14 h] → none |
| B2-UPHL-SDS135 | Preparation and Submission of Furniture Layout |  | 2016-08-11 → 2016-09-05 A (+25d) | 10% → 100% | 34.2d → none | resources Preparation and Submission Shop Drawing [14 h] → none |
| B2-UPHL-SDS190 | Preparation and Submission of Joinery Layout |  | 2016-08-29 → 2016-09-06 A (+8d) | 10% → 100% | 34.2d → none | resources Preparation and Submission Shop Drawing [14 h] → none |
| B2-UPHL-SDS200 | Preparation and Submission of Doors Shop Drawing |  | 2016-09-20 → 2016-09-06 A (-14d) | 10% → 100% | 37.6d → none | resources Preparation and Submission Shop Drawing [14 h] → none |
| 2 | **SD Approval of Bill 2 UP-HOTEL LOBBY** | 2016-07-10 → 2016-07-05 (-5d) | 2016-10-12 → 2017-01-24 (+104d) |  |  |  |
| B2-UPHL-SDA220 | Review & Approval of Details Layout | 2016-07-10 → 2016-07-05 A (-5d) | 2016-08-03 → 2017-01-19 A (+169d) | 0% → 100% | 81.6d → none | resources Eng Clinet Approval [14 h] → none |
| B2-UPHL-SDA170 | Review & Approval of RCP Layout | 2016-08-02 → 2016-07-17 A (-16d) | 2016-08-23 → 2017-01-09 A (+139d) | 0% → 100% | 7.1d → none | resources Eng Clinet Approval [14 h] → none |
| B2-UPHL-SDA180 | Review & Approval of Floor Layout | 2016-07-25 → 2016-07-17 A (-8d) | 2016-08-15 → 2017-01-20 A (+158d) | 0% → 100% | 4.4d → none | resources Eng Clinet Approval [14 h] → none |
| B2-UPHL-SDA190 | Review & Approval of Elevation Layout | 2016-07-25 → 2016-07-17 A (-8d) | 2016-08-15 → 2016-11-10 A (+87d) | 0% → 100% | 4.4d → none | resources Eng Clinet Approval [14 h] → none |
| B2-UPHL-SDA200 | Review & Approval of Joinery Layout | 2016-08-29 → 2016-07-17 A (-43d) | 2016-09-22 → 2016-08-31 A (-22d) | 0% → 100% | 49.2d → none | resources Eng Clinet Approval [14 h] → none |
| B2-UPHL-SDA210 | Review & Approval of Doors Shop Drawing | 2016-09-20 → 2016-07-17 A (-65d) | 2016-10-12 → 2017-01-24 A (+104d) | 0% → 100% | 53.6d → none | resources Eng Clinet Approval [14 h] → none |
| B2-UPHL-SDA230 | Review & Approval of Furniture Layout | 2016-08-11 → 2016-07-17 A (-25d) | 2016-09-01 → 2017-01-12 A (+133d) | 0% → 100% | 67.8d → none | resources Eng Clinet Approval [14 h] → none |
| B3-UPHR-SDS110 | Preparation and Submission of RCP Layout |  |  |  |  | resources Preparation and Submission Shop Drawing [14 h] → none |
| B3-UPHR-SDS130 | Preparation and Submission of Elevation Layout |  |  |  |  | resources Preparation and Submission Shop Drawing [14 h] → none |
| B3-UPHR-SDS150 | Preparation and Submission of Details Layout |  |  |  |  | resources Preparation and Submission Shop Drawing [14 h] → none |
| B3-UPHR-SDA110 | Review & Approval of RCP Layout |  | 2016-07-25 A | 10% → 100% | 19.1d → none | resources Eng Clinet Approval [14 h] → none |
| B3-UPHR-SDA130 | Review & Approval of Elevation Layout |  | 2016-07-25 A | 10% → 100% | 59.1d → none | resources Eng Clinet Approval [14 h] → none |
| B3-UPHR-SDA150 | Review & Approval of Details Layout |  | 2016-07-25 A | 10% → 100% | 59.1d → none | resources Eng Clinet Approval [14 h] → none |
| 3 | **Shop Drawing Process Bill 4-UP-VIP PROTOCOL** |  | 2016-09-14 → 2017-04-08 (+206d) |  |  |  |
| 1 | **SD Preparation and Submission of Bill 4-UP-VIP PROTOCOL** |  | 2016-08-25 → 2016-11-07 (+74d) |  |  |  |
| B4-UPVP-SDS150 | Preparation and Submission of Floor Layout |  |  |  |  | resources Preparation and Submission Shop Drawing [14 h] → none |
| B4-UPVP-SDS170 | Preparation and Submission of Elevation Layout |  |  |  |  | resources Preparation and Submission Shop Drawing [14 h] → none |
| B4-UPVP-SDS180 | Preparation and Submission of Joinery Layout |  | 2016-07-05 → 2016-11-07 A (+125d) |  | 31.3d → none | resources Preparation and Submission Shop Drawing [14 h] → none |
| B4-UPVP-SDS140 | Preparation and Submission of RCP Layout |  | 2016-07-11 → 2016-11-07 A (+119d) | 90% → 100% | 27.1d → none | resources Preparation and Submission Shop Drawing [14 h] → none |
| B4-UPVP-SDS175 | Preparation and Submission of Details Layout |  | 2016-08-25 A | 10% → 100% | 31.3d → none | resources Preparation and Submission Shop Drawing [14 h] → none |
| B4-UPVP-SDS190 | Preparation and Submission of Furniture Layout |  | 2016-07-21 A | 50% → 100% | 31.3d → none | resources Preparation and Submission Shop Drawing [14 h] → none |
| 2 | **SD Approval of Bill 4-UP-VIP PROTOCOL** |  | 2016-09-14 → 2017-04-08 (+206d) |  |  |  |
| B4-UPVP-SDA140 | Review & Approval of RCP Layout |  | 2016-07-27 → 2016-12-25 A (+151d) | 20% → 100% | 37.1d → none | resources Eng Clinet Approval [14 h] → none |
| B4-UPVP-SDA170 | Review & Approval of Floor Layout |  | 2016-07-23 A | 20% → 100% | 56.2d → none | resources Eng Clinet Approval [14 h] → none |
| B4-UPVP-SDA180 | Review & Approval of Elevation Layout |  | 2016-07-23 A | 20% → 100% | 96.2d → none | resources Eng Clinet Approval [14 h] → none |
| B4-UPVP-SDA190 | Review & Approval of Joinery Layout |  | 2016-07-23 → 2017-04-08 A (+259d) | 20% → 100% | 89.2d → none | resources Eng Clinet Approval [14 h] → none |
| B4-UPVP-SDA200 | Review & Approval of Details Layout |  | 2016-09-14 → 2016-10-10 A (+26d) | 20% → 100% | 46.5d → none | resources Eng Clinet Approval [14 h] → none |
| B4-UPVP-SDA210 | Review & Approval of Furniture Layout | 2016-07-21 → 2016-07-17 A (-4d) | 2016-08-11 A | 0% → 100% | 70.5d → none | resources Eng Clinet Approval [14 h] → none |
| 4 | **Shop Drawing Process Bill 5-UP-SAFE DEPOSIT** |  | 2016-08-30 → 2017-03-11 (+193d) |  |  |  |
| B5-UPSD-SDS155 | Preparation and Submission of Furniture Layout |  |  |  |  | resources Preparation and Submission Shop Drawing [14 h] → none |
| B5-UPSD-SDS160 | Preparation and Submission of RCP Layout |  | 2016-07-11 A | 90% → 100% | 21.97d → none | resources Preparation and Submission Shop Drawing [14 h] → none |
| B5-UPSD-SDS170 | Preparation and Submission of Floor Layout |  |  |  |  | resources Preparation and Submission Shop Drawing [14 h] → none |
| B5-UPSD-SDS180 | Preparation and Submission of Elevation Layout |  |  |  |  | resources Preparation and Submission Shop Drawing [14 h] → none |
| B5-UPSD-SDS190 | Preparation and Submission of Joinery Layout |  | 2016-08-11 A | 20% → 100% | 46.3d → none | resources Preparation and Submission Shop Drawing [14 h] → none |
| B5-UPSD-SDS200 | Preparation and Submission of Doors Shop Drawing |  |  |  |  | resources Preparation and Submission Shop Drawing [14 h] → none |
| B5-UPSD-SDS210 | Preparation and Submission of Details Layout |  |  |  |  | resources Preparation and Submission Shop Drawing [14 h] → none |
| 2 | **SD Approval of Bill 5-UP-SAFE DEPOSIT** |  | 2016-08-30 → 2017-03-11 (+193d) |  |  |  |
| B5-UPSD-SDA180 | Review & Approval of Floor Layout |  | 2016-07-30 A | 10% → 100% | 194.3d → none | resources Eng Clinet Approval [14 h] → none |
| B5-UPSD-SDA190 | Review & Approval of Elevation Layout |  | 2016-07-30 A | 10% → 100% | 88.3d → none | resources Eng Clinet Approval [14 h] → none |
| B5-UPSD-SDA210 | Review & Approval of Doors Shop Drawing |  | 2016-08-30 A | 10% → 100% | 78.9d → none | resources Eng Clinet Approval [14 h] → none |
| B5-UPSD-SDA220 | Review & Approval of Details Layout |  | 2016-07-30 A | 10% → 100% | 132.63d → none | resources Eng Clinet Approval [14 h] → none |
| B5-UPSD-SDA230 | Review & Approval of Furniture Layout |  | 2016-07-30 → 2017-03-11 A (+224d) | 10% → 100% | 107.2d → none | resources Eng Clinet Approval [14 h] → none |
| B5-UPSD-SDA170 | Review & Approval of RCP Layout |  | 2016-07-30 → 2016-12-29 A (+152d) | 10% → 100% | 29.97d → none | resources Eng Clinet Approval [14 h] → none |
| B5-UPSD-SDA200 | Review & Approval of Joinery Layout |  | 2016-08-21 A | 50% → 100% | 66.3d → none | resources Eng Clinet Approval [14 h] → none |
| 5 | **Shop Drawing Process Bill 6-UP-HOTEL LIFT LOBBY** |  | 2016-08-15 → 2017-01-20 (+158d) |  |  |  |
| 1 | **SD Preparation and Submission of Bill 6-UP-HOTEL LIFT LOBBY** |  | 2016-07-27 → 2016-09-15 (+50d) |  |  |  |
| B6-UPHLL-SDS110 | Preparation and Submission of RCP Layout |  | 2016-07-21 → 2016-09-06 A (+47d) | 50% → 100% | 17.6d → none | resources Preparation and Submission Shop Drawing [14 h] → none |
| B6-UPHLL-SDS130 | Preparation and Submission of Elevation Layout |  | 2016-07-25 → 2016-09-08 A (+45d) | 90% → 100% | 36.5d → none | resources Preparation and Submission Shop Drawing [14 h] → none |
| B6-UPHLL-SDS135 | Preparation and Submission of Furniture Layout |  | 2016-07-27 → 2016-09-15 A (+50d) | 90% → 100% | 59.4d → none | resources Preparation and Submission Shop Drawing [14 h] → none |
| B6-UPHLL-SDS150 | Preparation and Submission of Details Layout |  | 2016-07-27 → 2016-09-15 A (+50d) | 90% → 100% | 62.4d → none | resources Preparation and Submission Shop Drawing [14 h] → none |
| 2 | **SD Approval of Bill 6-UP-HOTEL LIFT LOBBY** |  | 2016-08-15 → 2017-01-20 (+158d) |  |  |  |
| B6-UPHLL-SDA110 | Review & Approval of RCP Layout |  | 2016-08-09 → 2017-01-18 A (+162d) | 10% → 100% | 25.6d → none | resources Eng Clinet Approval [14 h] → none |
| B6-UPHLL-SDA130 | Review & Approval of Elevation Layout |  | 2016-08-13 → 2016-12-29 A (+138d) | 10% → 100% | 52.5d → none | resources Eng Clinet Approval [14 h] → none |
| B6-UPHLL-SDA160 | Review & Approval of Details Layout |  | 2016-08-15 → 2017-01-20 A (+158d) | 10% → 100% | 90.4d → none | resources Eng Clinet Approval [14 h] → none |
| B6-UPHLL-SDA170 | Review & Approval of Furniture Layout |  | 2016-08-15 → 2016-10-06 A (+52d) | 10% → 100% | 85.4d → none | resources Eng Clinet Approval [14 h] → none |
| 6 | **Shop Drawing Process Bill 7-UP-RESIDENCE'S LIFT LOBBY** |  | 2016-09-03 → 2017-04-27 (+236d) |  |  |  |
| 1 | **SD Preparation and Submission of Bill 7-UP-RESIDENCE'S LIFT LOBBY** |  | 2016-08-15 → 2016-09-14 (+30d) |  |  |  |
| B7-UPRLL-SDS110 | Preparation and Submission of RCP Layout |  | 2016-07-17 → 2016-09-05 A (+50d) | 50% → 100% | 17.1d → none | resources Preparation and Submission Shop Drawing [14 h] → none |
| B7-UPRLL-SDS130 | Preparation and Submission of Elevation Layout |  | 2016-07-26 → 2016-09-06 A (+42d) | 50% → 100% | 49.1d → none | resources Preparation and Submission Shop Drawing [14 h] → none |
| B7-UPRLL-SDS135 | Preparation and Submission of Furniture Layout |  | 2016-08-04 → 2016-09-08 A (+35d) | 50% → 100% | 49.1d → none | resources Preparation and Submission Shop Drawing [14 h] → none |
| B7-UPRLL-SDS150 | Preparation and Submission of Details Layout |  | 2016-08-15 → 2016-09-14 A (+30d) | 50% → 100% | 49.1d → none | resources Preparation and Submission Shop Drawing [14 h] → none |
| 2 | **SD Approval of Bill 7-UP-RESIDENCE'S LIFT LOBBY** |  | 2016-09-03 → 2017-04-27 (+236d) |  |  |  |
| B7-UPRLL-SDA110 | Review & Approval of RCP Layout |  | 2016-08-05 → 2017-04-27 A (+265d) | 10% → 100% | 23.1d → none | resources Eng Clinet Approval [14 h] → none |

| ID | Task | Start | Finish | Complete | Total float | Other |
| --- | --- | --- | --- | --- | --- | --- |
| B7-UPRLL-SDA130 | Review & Approval of Elevation Layout |  | 2016-08-14 → 2016-12-29 A (+137d) | 10% → 100% | 114.1d → none | resources Eng Clinet Approval [14 h] → none |
| B7-UPRLL-SDA170 | Review & Approval of Furniture Layout |  | 2016-08-23 → 2016-12-28 A (+127d) | 10% → 100% | 75.1d → none | resources Eng Clinet Approval [14 h] → none |
| B7-UPRLL-SDA160 | Review & Approval of Details Layout |  | 2016-09-03 → 2017-01-23 A (+142d) | 10% → 100% | 71.1d → none | resources Eng Clinet Approval [14 h] → none |
| 7 | **Shop Drawing Process Bill 8-UP-FRONT OFFICE** |  | 2016-08-23 → 2017-02-21 (+182d) |  |  |  |
| B8-UPFO-SDS135 | Preparation and Submission of Furniture Layout |  |  |  |  | resources Preparation and Submission Shop Drawing [14 h] → none |
| B8-UPFO-SDS170 | Preparation and Submission of Floor Layout |  |  |  |  | resources Preparation and Submission Shop Drawing [14 h] → none |
| B8-UPFO-SDS180 | Preparation and Submission of Elevation Layout |  |  |  |  | resources Preparation and Submission Shop Drawing [14 h] → none |
| B8-UPFO-SDS160 | Preparation and Submission of RCP Layout |  | 2016-07-10 A | 90% → 100% | 19.6d → none | resources Preparation and Submission Shop Drawing [14 h] → none |
| B8-UPFO-SDS190 | Preparation and Submission of Joinery Layout |  | 2016-07-11 A | 90% → 100% | 45.7d → none | resources Preparation and Submission Shop Drawing [14 h] → none |
| B8-UPFO-SDS200 | Preparation and Submission of Doors Shop Drawing |  | 2016-07-28 A | 10% → 100% | 45.7d → none | resources Preparation and Submission Shop Drawing [14 h] → none |
| B8-UPFO-SDS210 | Preparation and Submission of Details Layout |  | 2016-08-04 A | 10% → 100% | 40.8d → none | resources Preparation and Submission Shop Drawing [14 h] → none |
| 2 | **SD Approval of Bill 8-UP-FRONT OFFICE** |  | 2016-08-23 → 2017-02-21 (+182d) |  |  |  |
| B8-UPFO-SDA180 | Review & Approval of Floor Layout |  | 2016-07-27 → 2017-02-21 A (+209d) | 20% → 100% | 115.8d → none | resources Eng Clinet Approval [14 h] → none |
| B8-UPFO-SDA190 | Review & Approval of Elevation Layout |  | 2016-07-20 → 2017-01-12 A (+176d) | 50% → 100% | 100.1d → none | resources Eng Clinet Approval [14 h] → none |
| B8-UPFO-SDA230 | Review & Approval of Furniture Layout |  | 2016-07-29 → 2016-10-31 A (+94d) | 10% → 100% | 91.7d → none | resources Eng Clinet Approval [14 h] → none |
| B8-UPFO-SDA170 | Review & Approval of RCP Layout |  | 2016-07-27 → 2016-12-25 A (+151d) | 20% → 100% | 26.8d → none | resources Eng Clinet Approval [14 h] → none |
| B8-UPFO-SDA200 | Review & Approval of Joinery Layout |  | 2016-07-30 A | 10% → 100% | 90.3d → none | resources Eng Clinet Approval [14 h] → none |
| B8-UPFO-SDA210 | Review & Approval of Doors Shop Drawing |  | 2016-08-16 → 2016-09-04 A (+19d) | 10% → 100% | 65.7d → none | resources Eng Clinet Approval [14 h] → none |
| B8-UPFO-SDA220 | Review & Approval of Details Layout |  | 2016-08-23 A | 10% → 100% | 58.8d → none | resources Eng Clinet Approval [14 h] → none |
| 8 | **Shop Drawing Process Bill 9-UP-CHOCOLATE BOUTIQUE** |  | 2016-10-30 → 2016-09-18 (-42d) |  |  |  |
| 1 | **SD Preparation and Submission of Bill 9-UP-CHOCOLATE BOUTIQUE** |  | 2016-10-09 → 2016-09-14 (-25d) |  |  |  |
| B9-UPCB-SDS135 | Preparation and Submission of Furniture Layout |  | 2016-08-23 → 2016-09-05 A (+13d) | 10% → 100% | 44.7d → none | resources Preparation and Submission Shop Drawing [14 h] → none |
| B9-UPCB-SDS150 | Preparation and Submission of RCP Layout |  | 2016-07-19 A | 10% → 100% | 1.7d → none | resources Preparation and Submission Shop Drawing [14 h] → none |
| B9-UPCB-SDS160 | Preparation and Submission of Floor Layout |  | 2016-07-31 → 2016-09-04 A (+35d) | 10% → 100% | 1.7d → none | resources Preparation and Submission Shop Drawing [14 h] → none |
| B9-UPCB-SDS170 | Preparation and Submission of Elevation Layout |  | 2016-08-10 A | 10% → 100% | 1.7d → none | resources Preparation and Submission Shop Drawing [14 h] → none |
| B9-UPCB-SDS180 | Preparation and Submission of Joinery Layout |  | 2016-09-06 A | 10% → 100% | 34.8d → none | resources Preparation and Submission Shop Drawing [14 h] → none |
| B9-UPCB-SDS190 | Preparation and Submission of Details Layout |  | 2016-10-09 → 2016-09-14 A (-25d) | 10% → 100% | 43.9d → none | resources Preparation and Submission Shop Drawing [14 h] → none |
| 2 | **SD Approval of Bill 9-UP-CHOCOLATE BOUTIQUE** | 2016-07-19 → 2016-07-04 (-15d) | 2016-10-30 → 2016-09-18 (-42d) |  |  |  |
| B9-UPCB-SDA200 | Review & Approval of Details Layout | 2016-10-09 → 2016-07-04 A (-97d) | 2016-10-30 → 2016-09-18 A (-42d) | 0% → 100% | 59.9d → none | resources Eng Clinet Approval [14 h] → none |
| B9-UPCB-SDA160 | Review & Approval of RCP Layout | 2016-07-19 → 2016-07-13 A (-6d) | 2016-08-09 A | 0% → 100% | 50.9d → none | resources Eng Clinet Approval [14 h] → none |
| B9-UPCB-SDA170 | Review & Approval of Floor Layout | 2016-07-31 → 2016-07-13 A (-18d) | 2016-08-21 → 2016-09-09 A (+19d) | 0% → 100% | 51.8d → none | resources Eng Clinet Approval [14 h] → none |
| B9-UPCB-SDA180 | Review & Approval of Elevation Layout | 2016-08-10 → 2016-07-13 A (-28d) | 2016-08-31 A | 0% → 100% | 3.7d → none | resources Eng Clinet Approval [14 h] → none |
| B9-UPCB-SDA190 | Review & Approval of Joinery Layout | 2016-09-06 → 2016-07-13 A (-55d) | 2016-09-30 → 2016-09-14 A (-16d) | 0% → 100% | 50.8d → none | resources Eng Clinet Approval [14 h] → none |
| B9-UPCB-SDA210 | Review & Approval of Furniture Layout | 2016-08-23 → 2016-07-13 A (-41d) | 2016-09-16 → 2016-09-10 A (-6d) | 0% → 100% | 64.7d → none | resources Eng Clinet Approval [14 h] → none |
| B10-UPRT-SDS110 | Preparation and Submission of RCP Layout |  | 2016-07-17 A | 70% → 100% | 56.3d → none | resources Preparation and Submission Shop Drawing [14 h] → none |
| B10-UPRT-SDS130 | Preparation and Submission of Elevation Layout |  | 2016-07-27 A | 60% → 100% | 56.3d → none | resources Preparation and Submission Shop Drawing [14 h] → none |
| B10-UPRT-SDS135 | Preparation and Submission of Furniture Layout |  | 2016-07-31 A | 90% → 100% | 113.2d → none | resources Preparation and Submission Shop Drawing [14 h] → none |
| B10-UPRT-SDS150 | Preparation and Submission of Details Layout |  |  |  |  | resources Preparation and Submission Shop Drawing [14 h] → none |
| B10-UPRT-SDA130 | Review & Approval of Elevation Layout |  | 2016-08-15 A | 10% → 100% | 80.3d → none | resources Eng Clinet Approval [14 h] → none |
| B10-UPRT-SDA170 | Review & Approval of Furniture Layout |  | 2016-08-17 A | 20% → 100% | 160.4d → none | resources Eng Clinet Approval [14 h] → none |
| B10-UPRT-SDA160 | Review & Approval of Details Layout |  |  |  |  | resources Eng Clinet Approval [14 h] → none |
| B10-UPRT-SDA110 | Review & Approval of RCP Layout | 2016-07-17 → 2016-07-18 A (+1d) | 2016-08-07 A | 0% → 100% | 90.7d → none | resources Eng Clinet Approval [14 h] → none |
| 10 | **Shop Drawing Process Bill 11-UP-REST ROOMS** |  | 2016-07-31 → 2016-12-19 (+141d) |  |  |  |
| 1 | **SD Preparation and Submission of Bill 11-UP-REST ROOMS** |  | 2016-07-14 → 2016-10-03 (+81d) |  |  |  |
| B11-UPRER-SDS110 | Preparation and Submission of RCP Layout |  | 2016-07-11 → 2016-10-03 A (+84d) | 90% → 100% | 18.1d → none | resources Preparation and Submission Shop Drawing [14 h] → none |
| B11-UPRER-SDS160 | Preparation and Submission of Elevation Layout |  | 2016-07-12 → 2016-09-05 A (+55d) | 90% → 100% | 42.4d → none | resources Preparation and Submission Shop Drawing [14 h] → none |
| B11-UPRER-SDS170 | Preparation and Submission of Joinery Layout |  | 2016-07-14 A | 90% → 100% | 42.4d → none | resources Preparation and Submission Shop Drawing [14 h] → none |
| B11-UPRER-SDS180 | Preparation and Submission of Doors Shop Drawing |  | 2016-05-25 A → 2016-08-03 A (+70d) |  |  | resources Preparation and Submission Shop Drawing [14 h] → none |
| B11-UPRER-SDS190 | Preparation and Submission of Details Layout |  |  |  |  | resources Preparation and Submission Shop Drawing [14 h] → none |
| 2 | **SD Approval of Bill 11-UP-REST ROOMS** |  | 2016-07-31 → 2016-12-19 (+141d) |  |  |  |
| B11-UPRER-SDA110 | Review & Approval of RCP Layout |  | 2016-07-27 → 2016-10-10 A (+75d) | 20% → 100% | 24.1d → none | resources Eng Clinet Approval [14 h] → none |
| B11-UPRER-SDA160 | Review & Approval of Elevation Layout |  | 2016-07-29 A | 20% → 100% | 71.7d → none | resources Eng Clinet Approval [14 h] → none |
| B11-UPRER-SDA170 | Review & Approval of Joinery Layout |  | 2016-07-31 A | 20% → 100% | 60.6d → none | resources Eng Clinet Approval [14 h] → none |
| B11-UPRER-SDA180 | Review & Approval of Doors Shop Drawing |  | 2016-07-31 A | 20% → 100% | 128.6d → none | resources Eng Clinet Approval [14 h] → none |
| B11-UPRER-SDA190 | Review & Approval of Details Layout |  | 2016-07-29 → 2016-12-19 A (+143d) | 20% → 100% | 62.7d → none | resources Eng Clinet Approval [14 h] → none |
| B12-UPPR-SDS160 | Preparation and Submission of RCP Layout |  | 2016-07-21 A | 50% → 100% | 12.6d → none | resources Preparation and Submission Shop Drawing [14 h] → none |
| B12-UPPR-SDS170 | Preparation and Submission of Floor Layout |  | 2016-07-25 A | 90% → 100% | 42.7d → none | resources Preparation and Submission Shop Drawing [14 h] → none |
| B12-UPPR-SDS180 | Preparation and Submission of Elevation Layout |  | 2016-07-27 A | 90% → 100% | 42.7d → none | resources Preparation and Submission Shop Drawing [14 h] → none |
| B12-UPPR-SDS190 | Preparation and Submission of Joinery Layout |  | 2016-07-31 A | 90% → 100% | 42.7d → none | resources Preparation and Submission Shop Drawing [14 h] → none |
| B12-UPPR-SDS200 | Preparation and Submission of Doors Shop Drawing |  | 2016-07-31 A | 90% → 100% | 42.7d → none | resources Preparation and Submission Shop Drawing [14 h] → none |
| B12-UPPR-SDS210 | Preparation and Submission of Details Layout |  | 2016-07-27 A | 90% → 100% | 47.3d → none | resources Preparation and Submission Shop Drawing [14 h] → none |
| B12-UPPR-SDA160 | Review & Approval of RCP Layout |  | 2016-08-09 A | 10% → 100% | 18.6d → none | resources Eng Clinet Approval [14 h] → none |
| B12-UPPR-SDA170 | Review & Approval of Floor Layout |  | 2016-08-05 A | 50% → 100% | 109.9d → none | resources Eng Clinet Approval [14 h] → none |
| B12-UPPR-SDA180 | Review & Approval of Elevation Layout |  | 2016-07-29 A | 90% → 100% | 68.2d → none | resources Eng Clinet Approval [14 h] → none |
| B12-UPPR-SDA190 | Review & Approval of Joinery Layout |  | 2016-08-19 A | 10% → 100% | 62.3d → none | resources Eng Clinet Approval [14 h] → none |
| B12-UPPR-SDA200 | Review & Approval of Doors Shop Drawing |  | 2016-08-11 A | 50% → 100% | 60.7d → none | resources Eng Clinet Approval [14 h] → none |
| B12-UPPR-SDA210 | Review & Approval of Details Layout |  | 2016-08-13 A | 20% → 100% | 68.5d → none | resources Eng Clinet Approval [14 h] → none |
| 12 | **Shop Drawing Process Bill 13-UP-RESIDENCES LOBBY** |  | 2016-11-02 → 2017-03-16 (+134d) |  |  |  |
| 1 | **SD Preparation and Submission of Bill 13-UP-RESIDENCES LOBBY** |  | 2016-10-12 → 2016-09-18 (-24d) |  |  |  |
| B13-UPRL-SDS110 | Preparation and Submission of RCP Layout |  | 2016-08-01 → 2016-09-08 A (+38d) | 15% → 100% | 2.45d → none | resources Preparation and Submission Shop Drawing [14 h] → none |

| ID | Task | Start | Finish | Complete | Total float | Other |
| --- | --- | --- | --- | --- | --- | --- |
| B13-UPRL-SDS135 | Preparation and Submission of Furniture Layout |  | 2016-09-04 → 2016-09-18 A (+14d) | 15% → 100% | 2.45d → none | resources Preparation and Submission Shop Drawing [14 h] → none |
| B13-UPRL-SDS150 | Preparation and Submission of Elevation Layout |  | 2016-08-17 → 2016-09-15 A (+29d) | 15% → 100% | 2.45d → none | resources Preparation and Submission Shop Drawing [14 h] → none |
| B13-UPRL-SDS160 | Preparation and Submission of Joinery Layout |  | 2016-09-25 → 2016-09-18 A (-7d) | 15% → 100% | 2.45d → none | resources Preparation and Submission Shop Drawing [14 h] → none |
| B13-UPRL-SDS170 | Preparation and Submission of Details Layout |  | 2016-10-12 → 2016-09-18 A (-24d) | 15% → 100% | 73.55d → none | resources Preparation and Submission Shop Drawing [14 h] → none |
| 2 | **SD Approval of Bill 13-UP-RESIDENCES LOBBY** | 2016-08-01 → 2016-08-14 (+13d) | 2016-11-02 → 2017-03-16 (+134d) |  |  |  |
| B13-UPRL-SDA110 | Review & Approval of RCP Layout | 2016-08-01 → 2016-08-14 A (+13d) | 2016-08-22 → 2017-01-24 A (+155d) | 0% → 100% | 5.15d → none | resources Eng Clinet Approval [14 h] → none |
| B13-UPRL-SDA160 | Review & Approval of Elevation Layout | 2016-08-17 → 2016-09-04 A (+18d) | 2016-09-07 → 2016-09-15 A (+8d) | 0% → 100% | 40.25d → none | resources Eng Clinet Approval [14 h] → none |
| B13-UPRL-SDA170 | Review & Approval of Joinery Layout | 2016-09-25 → 2016-09-04 A (-21d) | 2016-10-17 → 2017-03-16 A (+150d) | 0% → 100% | 2.45d → none | resources Eng Clinet Approval [14 h] → none |
| B13-UPRL-SDA180 | Review & Approval of Details Layout | 2016-10-12 → 2016-09-04 A (-38d) | 2016-11-02 → 2016-09-15 A (-48d) | 0% → 100% | 103.55d → none | resources Eng Clinet Approval [14 h] → none |
| B13-UPRL-SDA190 | Review & Approval of Furniture Layout | 2016-09-04 A | 2016-09-28 → 2016-09-15 A (-13d) | 0% → 100% | 20.35d → none | resources Eng Clinet Approval [14 h] → none |
| 15 | **Shop Drawing Process Bill 20-UP-COFFEE BAR** | 2016-07-05 → 2016-07-10 (+5d) | 2016-09-28 → 2017-05-27 (+241d) |  |  |  |
| 1 | **SD Preparation and Submission of Bill 20-UP-COFFEE BAR** | 2016-07-05 → 2016-07-10 (+5d) | 2016-09-04 → 2017-04-25 (+233d) |  |  |  |
| B20-UPCB-SDS150 | Preparation and Submission of Floor Layout | 2016-07-05 → 2016-07-10 A (+5d) | 2016-08-04 → 2016-09-18 A (+45d) | 0% → 100% | 51d → none | resources Preparation and Submission Shop Drawing [14 h] → none |
| B20-UPCB-SDS170 | Preparation and Submission of Joinery Layout | 2016-08-07 → 2016-07-18 A (-20d) | 2016-09-04 → 2016-09-18 A (+14d) | 0% → 100% | 51d → none | resources Preparation and Submission Shop Drawing [14 h] → none |
| B20-UPCB-SDS160 | Preparation and Submission of Elevation Layout | 2016-08-07 → 2017-01-26 A (+172d) | 2016-09-04 → 2017-01-29 A (+147d) | 0% → 100% | 51d → none | resources Preparation and Submission Shop Drawing [14 h] → none |
| B20-UPCB-SDS180 | Preparation and Submission of Details Layout | 2016-08-07 → 2017-04-24 A (+260d) | 2016-09-04 → 2017-04-25 A (+233d) | 0% → 100% | 51d → none | resources Preparation and Submission Shop Drawing [14 h] → none |
| 2 | **SD Approval of Bill 20-UP-COFFEE BAR** | 2016-08-05 → 2016-07-11 (-25d) | 2016-09-28 → 2017-05-27 (+241d) |  |  |  |
| B20-UPCB-SDA150 | Review & Approval of Floor Layout | 2016-08-05 → 2016-07-11 A (-25d) | 2016-08-25 → 2016-10-11 A (+47d) | 0% → 100% | 83d → none | resources Eng Clinet Approval [14 h] → none |
| B20-UPCB-SDA170 | Review & Approval of Joinery Layout | 2016-09-05 → 2016-08-01 A (-35d) | 2016-09-28 → 2016-11-01 A (+34d) | 0% → 100% | 73d → none | resources Eng Clinet Approval [14 h] → none |
| B20-UPCB-SDA160 | Review & Approval of Elevation Layout | 2016-09-05 → 2017-03-05 A (+181d) | 2016-09-28 → 2017-03-05 A (+158d) | 0% → 100% | 73d → none | resources Eng Clinet Approval [14 h] → none |
| B20-UPCB-SDA180 | Review & Approval of Details Layout | 2016-09-05 → 2017-05-27 A (+264d) | 2016-09-28 → 2017-05-27 A (+241d) | 0% → 100% | 73d → none | resources Eng Clinet Approval [14 h] → none |
| 16 | **Shop Drawing Process Bill 28-LIFT CAR - TOWER A, B & D** | 2016-07-05 → 2016-07-10 (+5d) | 2016-11-17 → 2017-01-15 (+59d) |  |  |  |
| 1 | **SD Preparation and Submission of Bill 28-LIFT CAR - TOWER A, B & D** | 2016-07-05 → 2016-07-10 (+5d) | 2016-10-27 → 2016-10-03 (-24d) |  |  |  |
| B28-TsLC-SDS110 | Preparation and Submission of RCP Layout | 2016-07-05 → 2016-07-10 A (+5d) | 2016-08-04 → 2016-09-27 A (+54d) | 0% → 100% | 0d → none | resources Preparation and Submission Shop Drawing [14 h] → none |
| B28-TsLC-SDS135 | Preparation and Submission of Furniture Layout | 2016-08-25 → 2016-07-10 A (-46d) | 2016-09-27 → 2016-09-28 A (+1d) | 0% → 100% | 5d → none | resources Preparation and Submission Shop Drawing [14 h] → none |
| B28-TsLC-SDS150 | Preparation and Submission of Elevation Layout | 2016-08-07 → 2016-07-10 A (-28d) | 2016-08-24 → 2016-09-28 A (+35d) | 0% → 100% | 0d → none | resources Preparation and Submission Shop Drawing [14 h] → none |
| B28-TsLC-SDS160 | Preparation and Submission of Joinery Layout | 2016-09-28 → 2016-07-10 A (-80d) | 2016-10-27 → 2016-09-28 A (-29d) | 0% → 100% | 5d → none | resources Preparation and Submission Shop Drawing [14 h] → none |
| B28-TsLC-SDS170 | Preparation and Submission of Details Layout | 2016-08-25 → 2016-07-10 A (-46d) | 2016-09-27 → 2016-10-03 A (+6d) | 0% → 100% | 26d → none | resources Preparation and Submission Shop Drawing [14 h] → none |
| 2 | **SD Approval of Bill 28-LIFT CAR - TOWER A, B & D** | 2016-08-05 → 2016-09-11 (+37d) | 2016-11-17 → 2017-01-15 (+59d) |  |  |  |
| B28-TsLC-SDA110 | Review & Approval of RCP Layout | 2016-08-05 → 2016-09-11 A (+37d) | 2016-08-25 → 2016-12-03 A (+100d) | 0% → 100% | 8d → none | resources Eng Clinet Approval [14 h] → none |
| B28-TsLC-SDA160 | Review & Approval of Elevation Layout | 2016-08-25 → 2016-09-11 A (+17d) | 2016-09-17 → 2016-12-04 A (+78d) | 0% → 100% | 0d → none | resources Eng Clinet Approval [14 h] → none |
| B28-TsLC-SDA170 | Review & Approval of Joinery Layout | 2016-10-28 → 2016-09-11 A (-47d) | 2016-11-17 → 2017-01-15 A (+59d) | 0% → 100% | 8d → none | resources Eng Clinet Approval [14 h] → none |
| B28-TsLC-SDA180 | Review & Approval of Details Layout | 2016-09-28 → 2016-09-11 A (-17d) | 2016-10-19 → 2016-12-04 A (+46d) | 0% → 100% | 37d → none | resources Eng Clinet Approval [14 h] → none |
| B28-TsLC-SDA190 | Review & Approval of Furniture Layout | 2016-09-28 → 2016-09-11 A (-17d) | 2016-10-19 → 2016-10-06 A (-13d) | 0% → 100% | 37d → none | resources Eng Clinet Approval [14 h] → none |
| 17 | **Shop Drawing Process Bill 29-SPA** | 2016-07-05 → 2016-07-10 (+5d) | 2016-11-09 → 2017-05-04 (+176d) |  |  |  |
| 1 | **SD Preparation and Submission of Bill 29-SPA** | 2016-07-05 → 2016-07-10 (+5d) | 2016-10-19 → 2016-09-15 (-34d) |  |  |  |
| B29-SPA-SDS135 | Preparation and Submission of Furniture Layout | 2016-08-18 → 2016-07-10 A (-39d) | 2016-08-31 → 2016-09-15 A (+15d) | 0% → 100% | 8d → none | resources Preparation and Submission Shop Drawing [14 h] → none |
| B29-SPA-SDS160 | Preparation and Submission of RCP Layout | 2016-07-05 → 2016-07-10 A (+5d) | 2016-07-20 → 2016-09-05 A (+47d) | 0% → 100% | 8d → none | resources Preparation and Submission Shop Drawing [14 h] → none |
| B29-SPA-SDS170 | Preparation and Submission of Floor Layout | 2016-07-21 → 2016-07-10 A (-11d) | 2016-08-03 → 2016-09-07 A (+35d) | 0% → 100% | 8d → none | resources Preparation and Submission Shop Drawing [14 h] → none |
| B29-SPA-SDS180 | Preparation and Submission of Elevation Layout | 2016-08-04 → 2016-07-10 A (-25d) | 2016-08-17 → 2016-09-14 A (+28d) | 0% → 100% | 8d → none | resources Preparation and Submission Shop Drawing [14 h] → none |
| B29-SPA-SDS190 | Preparation and Submission of Joinery Layout | 2016-09-01 → 2016-07-10 A (-53d) | 2016-09-19 → 2016-09-15 A (-4d) | 0% → 100% | 8d → none | resources Preparation and Submission Shop Drawing [14 h] → none |
| B29-SPA-SDS200 | Preparation and Submission of Doors Shop Drawing | 2016-09-20 → 2016-07-10 A (-72d) | 2016-10-19 → 2016-09-15 A (-34d) | 0% → 100% | 15d → none | resources Preparation and Submission Shop Drawing [14 h] → none |
| B29-SPA-SDS210 | Preparation and Submission of Details Layout | 2016-08-04 → 2016-07-10 A (-25d) | 2016-09-01 → 2016-09-15 A (+14d) | 0% → 100% | 31d → none | resources Preparation and Submission Shop Drawing [14 h] → none |
| 2 | **SD Approval of Bill 29-SPA** | 2016-07-21 → 2016-08-28 (+38d) | 2016-11-09 → 2017-05-04 (+176d) |  |  |  |
| B29-SPA-SDA200 | Review & Approval of Joinery Layout | 2016-09-20 → 2016-08-28 A (-23d) | 2016-10-11 → 2016-12-04 A (+54d) | 0% → 100% | 10d → none | resources Eng Clinet Approval [14 h] → none |
| B29-SPA-SDA220 | Review & Approval of Details Layout | 2016-09-02 → 2016-08-28 A (-5d) | 2016-09-25 → 2016-11-22 A (+58d) | 0% → 100% | 47d → none | resources Eng Clinet Approval [14 h] → none |
| B29-SPA-SDA170 | Review & Approval of RCP Layout | 2016-07-21 → 2016-08-31 A (+41d) | 2016-08-10 → 2017-05-04 A (+267d) | 0% → 100% | 27d → none | resources Eng Clinet Approval [14 h] → none |
| B29-SPA-SDA180 | Review & Approval of Floor Layout | 2016-08-04 → 2016-08-31 A (+27d) | 2016-08-24 → 2017-02-22 A (+182d) | 0% → 100% | 46d → none | resources Eng Clinet Approval [14 h] → none |
| B29-SPA-SDA190 | Review & Approval of Elevation Layout | 2016-08-18 → 2016-08-31 A (+13d) | 2016-09-07 → 2017-02-13 A (+159d) | 0% → 100% | 19d → none | resources Eng Clinet Approval [14 h] → none |
| B29-SPA-SDA210 | Review & Approval of Doors Shop Drawing | 2016-10-20 → 2016-08-31 A (-50d) | 2016-11-09 → 2016-11-22 A (+13d) | 0% → 100% | 21d → none | resources Eng Clinet Approval [14 h] → none |
| B29-SPA-SDA230 | Review & Approval of Furniture Layout | 2016-09-01 → 2016-08-31 A (-1d) | 2016-09-24 → 2017-03-05 A (+162d) | 0% → 100% | 48d → none | resources Eng Clinet Approval [14 h] → none |
| 22 | **Shop Drawing Process Bill 34-UP-SPEAK EASY BAR** |  | 2016-09-25 → 2016-12-12 (+78d) |  |  |  |
| B34-UPSEB-SDS160 | Preparation and Submission of RCP Layout |  | 2016-07-21 → 2016-09-06 A (+47d) | 50% → 100% | 5.6d → none | resources Preparation and Submission Shop Drawing [14 h] → none |
| B34-UPSEB-SDS180 | Preparation and Submission of Elevation Layout |  |  |  |  | resources Preparation and Submission Shop Drawing [14 h] → none |
| B34-UPSEB-SDS190 | Preparation and Submission of Joinery Layout |  | 2016-08-28 → 2016-09-08 A (+11d) | 50% → 100% | 14.6d → none | resources Preparation and Submission Shop Drawing [14 h] → none |
| B34-UPSEB-SDS170 | Preparation and Submission of Floor Layout |  | 2016-07-28 → 2016-09-07 A (+41d) | 50% → 100% | 14.6d → none | resources Preparation and Submission Shop Drawing [14 h] → none |
| B34-UPSEB-SDS200 | Preparation and Submission of Doors Shop Drawing |  | 2016-09-14 → 2016-09-08 A (-6d) | 50% → 100% | 53.5d → none | resources Preparation and Submission Shop Drawing [14 h] → none |
| B34-UPSEB-SDS210 | Preparation and Submission of Details Layout |  | 2016-07-17 A | 50% → 100% | 55d → none | resources Preparation and Submission Shop Drawing [14 h] → none |
| B34-UPSEB-SDS135 | Preparation and Submission of Furniture Layout |  | 2016-08-11 → 2016-09-14 A (+34d) | 50% → 100% | 14.6d → none | resources Preparation and Submission Shop Drawing [14 h] → none |
| 2 | **SD Approval of Bill 34-UP-SPEAK EASY BAR** |  | 2016-09-25 → 2016-12-12 (+78d) |  |  |  |
| B34-UPSEB-SDA190 | Review & Approval of Elevation Layout |  |  |  |  | resources Eng Clinet Approval [14 h] → none |
| B34-UPSEB-SDA170 | Review & Approval of RCP Layout |  | 2016-08-09 → 2016-12-12 A (+125d) | 10% → 100% | 9.6d → none | resources Eng Clinet Approval [14 h] → none |
| B34-UPSEB-SDA210 | Review & Approval of Doors Shop Drawing |  | 2016-09-25 → 2016-09-22 A (-3d) | 50% → 100% | 75.5d → none | resources Eng Clinet Approval [14 h] → none |
| B34-UPSEB-SDA220 | Review & Approval of Details Layout |  | 2016-07-26 → 2016-11-22 A (+119d) | 60% → 100% | 77.6d → none | resources Eng Clinet Approval [14 h] → none |
| B34-UPSEB-SDA180 | Review & Approval of Floor Layout |  | 2016-08-16 → 2016-10-11 A (+56d) | 10% → 100% | 58.6d → none | resources Eng Clinet Approval [14 h] → none |
| B34-UPSEB-SDA200 | Review & Approval of Joinery Layout |  | 2016-09-19 → 2016-09-24 A (+5d) | 10% → 100% | 20.6d → none | resources Eng Clinet Approval [14 h] → none |
| B34-UPSEB-SDA230 | Review & Approval of Furniture Layout |  | 2016-08-30 → 2016-10-11 A (+42d) | 10% → 100% | 37.1d → none | resources Eng Clinet Approval [14 h] → none |
| 20 | **Shop Drawing Process Bill 35-LIFT CAR - TOWER C** | 2016-07-05 → 2016-07-10 (+5d) | 2016-11-08 → 2017-01-04 (+57d) |  |  |  |
| 1 | **SD Preparation and Submission of Bill 35-LIFT CAR - TOWER C** | 2016-07-05 → 2016-07-10 (+5d) | 2016-10-18 → 2016-10-02 (-16d) |  |  |  |
| B35-TCLC-SDS110 | Preparation and Submission of RCP Layout | 2016-07-05 → 2016-07-10 A (+5d) | 2016-08-04 → 2016-09-27 A (+54d) | 0% → 100% | 2d → none | resources Preparation and Submission Shop Drawing [14 h] → none |

| ID | Task | Start | Finish | Complete | Total float | Other |
| --- | --- | --- | --- | --- | --- | --- |
| B35-TCLC-SDS150 | Preparation and Submission of Elevation Layout | 2016-08-07 → 2016-07-10 A (-28d) | 2016-08-24 → 2016-09-28 A (+35d) | 0% → 100% | 2d → none | resources Preparation and Submission Shop Drawing [14 h] → none |
| B35-TCLC-SDS160 | Preparation and Submission of Joinery Layout | 2016-08-25 → 2016-07-10 A (-46d) | 2016-09-18 → 2016-09-29 A (+11d) | 0% → 100% | 2d → none | resources Preparation and Submission Shop Drawing [14 h] → none |
| B35-TCLC-SDS170 | Preparation and Submission of Details Layout | 2016-09-19 → 2016-07-24 A (-57d) | 2016-10-18 → 2016-10-02 A (-16d) | 0% → 100% | 69d → none | resources Preparation and Submission Shop Drawing [14 h] → none |
| 2 | **SD Approval of Bill 35-LIFT CAR - TOWER C** | 2016-08-05 → 2016-09-11 (+37d) | 2016-11-08 → 2017-01-04 (+57d) |  |  |  |
| B35-TCLC-SDA110 | Review & Approval of RCP Layout | 2016-08-05 → 2016-09-11 A (+37d) | 2016-08-25 → 2016-10-26 A (+62d) | 0% → 100% | 29d → none | resources Eng Clinet Approval [14 h] → none |
| B35-TCLC-SDA150 | Review & Approval of Elevation Layout | 2016-08-25 → 2016-09-11 A (+17d) | 2016-09-17 → 2016-10-26 A (+39d) | 0% → 100% | 24d → none | resources Eng Clinet Approval [14 h] → none |
| B35-TCLC-SDA160 | Review & Approval of Joinery Layout | 2016-09-19 → 2016-09-11 A (-8d) | 2016-10-10 → 2017-01-04 A (+86d) | 0% → 100% | 2d → none | resources Eng Clinet Approval [14 h] → none |
| B35-TCLC-SDA170 | Review & Approval of Details Layout | 2016-10-19 → 2016-09-11 A (-38d) | 2016-11-08 → 2016-11-06 A (-2d) | 0% → 100% | 97d → none | resources Eng Clinet Approval [14 h] → none |
| 21 | **Shop Drawing Process Bill 39-LG- LIFT LOBBY** | 2016-07-05 → 2016-07-04 (-1d) | 2016-12-29 → 2016-09-20 (-100d) |  |  |  |
| 1 | **SD Preparation and Submission of Bill 39-LG- LIFT LOBBY** | 2016-07-05 → 2016-07-04 (-1d) | 2016-12-07 → 2016-09-15 (-83d) |  |  |  |
| B39-LGLL-SDS150 | Preparation and Submission of Elevation Layout | 2016-08-07 → 2016-07-04 A (-34d) | 2016-09-04 → 2016-09-01 A (-3d) | 0% → 100% | 4d → none | resources Preparation and Submission Shop Drawing [14 h] → none |
| B39-LGLL-SDS160 | Preparation and Submission of Joinery Layout | 2016-10-10 → 2016-07-04 A (-98d) | 2016-11-07 → 2016-09-15 A (-53d) | 0% → 100% | 6.33d → none | resources Preparation and Submission Shop Drawing [14 h] → none |
| B39-LGLL-SDS110 | Preparation and Submission of RCP Layout | 2016-07-05 → 2016-07-10 A (+5d) | 2016-08-04 → 2016-08-15 A (+11d) | 0% → 100% | 4d → none | resources Preparation and Submission Shop Drawing [14 h] → none |
| B39-LGLL-SDS135 | Preparation and Submission of Furniture Layout | 2016-09-05 → 2016-07-10 A (-57d) | 2016-10-09 → 2016-09-01 A (-38d) | 0% → 100% | 6.33d → none | resources Preparation and Submission Shop Drawing [14 h] → none |
| B39-LGLL-SDS170 | Preparation and Submission of Details Layout | 2016-11-08 → 2016-07-10 A (-121d) | 2016-12-07 → 2016-09-15 A (-83d) | 0% → 100% | 6.33d → none | resources Preparation and Submission Shop Drawing [14 h] → none |
| 2 | **SD Approval of Bill 39-LG- LIFT LOBBY** | 2016-08-05 → 2016-07-05 (-31d) | 2016-12-29 → 2016-09-20 (-100d) |  |  |  |
| B39-LGLL-SDA160 | Review & Approval of Elevation Layout | 2016-09-05 → 2016-07-05 A (-62d) | 2016-09-28 → 2016-09-20 A (-8d) | 0% → 100% | 4d → none | resources Eng Clinet Approval [14 h] → none |
| B39-LGLL-SDA170 | Review & Approval of Joinery Layout | 2016-11-08 → 2016-07-05 A (-126d) | 2016-11-28 → 2016-09-20 A (-69d) | 0% → 100% | 10d → none | resources Eng Clinet Approval [14 h] → none |
| B39-LGLL-SDA110 | Review & Approval of RCP Layout | 2016-08-05 → 2016-08-31 A (+26d) | 2016-08-25 → 2016-09-20 A (+26d) | 0% → 100% | 13d → none | resources Eng Clinet Approval [14 h] → none |
| B39-LGLL-SDA180 | Review & Approval of Details Layout | 2016-12-08 → 2016-08-31 A (-99d) | 2016-12-29 → 2016-09-20 A (-100d) | 0% → 100% | 10.33d → none | resources Eng Clinet Approval [14 h] → none |
| B39-LGLL-SDA190 | Review & Approvalof Furniture Layout | 2016-10-10 → 2016-08-31 A (-40d) | 2016-10-30 → 2016-09-20 A (-40d) | 0% → 100% | 39d → none | resources Eng Clinet Approval [14 h] → none |
| 2 | **Material Process** |  | 2016-09-04 → 2018-03-01 (+543d) |  |  |  |
| 1 | **Material Process Bill 2 UP-HOTEL LOBBY** |  | 2016-08-25 → 2017-11-14 (+446d) |  |  |  |
| B2-UPHL-MS110 | Preparation and Submission of Veneer |  | 2016-07-27 → 2017-02-08 A (+196d) | 50% → 100% | 64.5d → none | resources Preparation and Submission Material [14 h] → none |
| B2-UPHL-MS150 | Preparation and Submission of Paint |  | 2016-07-18 → 2017-10-24 A (+463d) | 75% → 100% | 40d → none | resources Preparation and Submission Material [14 h] → none |
| B2-UPHL-MS160 | Preparation and Submission of Glass |  | 2016-07-18 → 2017-10-09 A (+448d) | 75% → 100% | 74d → none | resources Preparation and Submission Material [14 h] → none |
| B2-UPHL-MS200 | Preparation and Submission of Metal |  | 2016-07-27 → 2017-10-11 A (+441d) | 50% → 100% | 31.3d → none | resources Preparation and Submission Material [14 h] → none |
| B2-UPHL-MS220 | Preparation and Submission of Ceiling System |  | 2016-07-14 → 2016-11-10 A (+119d) | 80% → 100% | 18d → none | resources Preparation and Submission Material [14 h] → none |
| B2-UPHL-MS270 | Preparation and Submission of Doors , Ironmongery and Hardware |  | 2016-07-27 → 2017-11-02 A (+463d) | 50% → 100% | 75.1d → none | resources Preparation and Submission Material [14 h] → none |
| B2-UPHL-MA110 | Review & Approval of Veneer |  | 2016-08-07 → 2017-02-18 A (+195d) | 50% → 100% | 92.5d → none | resources Eng Clinet Approval [14 h] → none |
| B2-UPHL-MA150 | Review & Approval of Paint |  | 2016-07-28 → 2017-10-30 A (+459d) | 50% → 100% | 56d → none | resources Eng Clinet Approval [14 h] → none |
| B2-UPHL-MA160 | Review & Approval of Glass |  | 2016-07-28 → 2017-10-30 A (+459d) | 50% → 100% | 104d → none | resources Eng Clinet Approval [14 h] → none |
| B2-UPHL-MA200 | Review & Approval of Metal |  | 2016-08-11 → 2017-10-30 A (+445d) | 30% → 100% | 45.3d → none | resources Eng Clinet Approval [14 h] → none |
| B2-UPHL-MA270 | Review & Approval of Doors , Ironmongery and Hardware |  | 2016-08-15 → 2017-11-14 A (+456d) | 10% → 100% | 107.1d → none | resources Eng Clinet Approval [14 h] → none |
| B2-UPHL-MS210 | Preparation and Submission of Tiles |  | 2016-07-27 → 2016-12-04 A (+130d) | 50% → 100% | 1d → none | resources Preparation and Submission Material [14 h] → none |
| B2-UPHL-MS230 | Preparation and Submission of Stone |  | 2016-08-04 → 2016-12-05 A (+123d) | 30% → 100% | 0d → none | resources Preparation and Submission Material [14 h] → none |
| B2-UPHL-MA210 | Review & Approval of Tiles | 2016-07-28 → 2016-07-13 A (-15d) | 2016-08-17 → 2016-12-18 A (+123d) | 0% → 100% | 2d → none | resources Eng Clinet Approval [14 h] → none |
| B2-UPHL-MA220 | Review & Approval of Ceiling System | 2016-07-15 → 2016-07-24 A (+9d) | 2016-08-04 → 2016-12-06 A (+124d) | 0% → 100% | 26d → none | resources Eng Clinet Approval [14 h] → none |
| B2-UPHL-MA230 | Review & Approval of Stone | 2016-08-05 → 2016-09-11 A (+37d) | 2016-08-25 → 2016-12-21 A (+118d) | 0% → 100% | 1d → none | resources Eng Clinet Approval [14 h] → none |
| 2 | **Material Process Bill 3-UP-HOTEL RECEPTION** |  | 2016-08-11 → 2017-10-30 (+445d) |  |  |  |
| B3-UPHR-MS150 | Preparation and Submission of Glass |  | 2016-07-18 → 2017-10-17 A (+456d) | 75% → 100% | 40d → none | resources Preparation and Submission Material [14 h] → none |
| B3-UPHR-MS160 | Preparation and Submission of Metal |  | 2016-07-27 → 2017-10-18 A (+448d) | 50% → 100% | 38.3d → none | resources Preparation and Submission Material [14 h] → none |
| B3-UPHR-MS190 | Preparation and Submission of Ceiling System |  | 2016-07-14 → 2016-09-14 A (+62d) | 80% → 100% | 5d → none | resources Preparation and Submission Material [14 h] → none |
| B3-UPHR-MA150 | Review & Approval of Glass |  | 2016-07-28 → 2017-10-30 A (+459d) | 50% → 100% | 56d → none | resources Eng Clinet Approval [14 h] → none |
| B3-UPHR-MA160 | Review & Approval of Metal |  | 2016-08-11 → 2017-10-23 A (+438d) | 30% → 100% | 56.3d → none | resources Eng Clinet Approval [14 h] → none |
| B3-UPHR-MA190 | Review & Approval of Ceiling System | 2016-07-15 → 2016-07-24 A (+9d) | 2016-08-04 → 2016-09-15 A (+42d) | 0% → 100% | 9d → none | resources Eng Clinet Approval [14 h] → none |
| 3 | **Material Process Bill 4-UP-VIP PROTOCOL** |  | 2016-08-15 → 2017-11-14 (+456d) |  |  |  |
| B4-UPVP-MS110 | Preparation and Submission of Veneer |  | 2016-07-27 → 2017-01-12 A (+169d) | 50% → 100% | 52d → none | resources Preparation and Submission Material [14 h] → none |
| B4-UPVP-MS140 | Preparation and Submission of Glass |  | 2016-07-18 → 2017-09-19 A (+428d) | 75% → 100% | 64.5d → none | resources Preparation and Submission Material [14 h] → none |
| B4-UPVP-MS170 | Preparation and Submission of Wall Covering |  | 2016-07-27 → 2017-08-09 A (+378d) | 50% → 100% | 62d → none | resources Preparation and Submission Material [14 h] → none |
| B4-UPVP-MS190 | Preparation and Submission of Ceiling System |  | 2016-07-14 → 2016-09-14 A (+62d) | 80% → 100% | 20d → none | resources Preparation and Submission Material [14 h] → none |
| B4-UPVP-MS270 | Preparation and Submission of Doors , Ironmongery and Hardware |  | 2016-07-27 → 2017-11-02 A (+463d) | 50% → 100% | 62d → none | resources Preparation and Submission Material [14 h] → none |
| B4-UPVP-MA110 | Review & Approval of Veneer |  | 2016-08-07 → 2017-01-12 A (+158d) | 50% → 100% | 74.5d → none | resources Eng Clinet Approval [14 h] → none |
| B4-UPVP-MA140 | Review & Approval of Glass |  | 2016-07-28 → 2017-09-27 A (+426d) | 50% → 100% | 91d → none | resources Eng Clinet Approval [14 h] → none |
| B4-UPVP-MA170 | Review & Approval of Wall Covering |  | 2016-08-15 → 2017-08-23 A (+373d) | 10% → 100% | 89.1d → none | resources Eng Clinet Approval [14 h] → none |
| B4-UPVP-MA270 | Review & Approval of Doors , Ironmongery and Hardware |  | 2016-08-15 → 2017-11-14 A (+456d) | 10% → 100% | 89.1d → none | resources Eng Clinet Approval [14 h] → none |
| B4-UPVP-MA190 | Review & Approval of Ceiling System | 2016-07-15 → 2016-07-24 A (+9d) | 2016-08-04 → 2016-09-15 A (+42d) | 0% → 100% | 29d → none | resources Eng Clinet Approval [14 h] → none |
| 4 | **Material Process Bill 5-UP-SAFE DEPOSIT** |  | 2016-08-07 → 2017-10-30 (+449d) |  |  |  |
| B5-UPSD-MS110 | Preparation and Submission of Veneer |  | 2016-07-27 → 2017-01-08 A (+165d) | 50% → 100% | 56.5d → none | resources Preparation and Submission Material [14 h] → none |
| B5-UPSD-MS190 | Preparation and Submission of Ceiling System |  | 2016-07-14 → 2016-09-14 A (+62d) | 80% → 100% | 4d → none | resources Preparation and Submission Material [14 h] → none |
| B5-UPSD-MS270 | Preparation and Submission of Doors , Ironmongery and Hardware |  |  |  |  | resources Preparation and Submission Material [14 h] → none |
| B5-UPSD-MA110 | Review & Approval of Veneer |  | 2016-08-07 → 2017-01-12 A (+158d) | 50% → 100% | 80.5d → none | resources Eng Clinet Approval [14 h] → none |
| B5-UPSD-MA270 | Review & Approval of Doors , Ironmongery and Hardware |  | 2016-07-25 → 2017-10-30 A (+462d) | 10% → 100% | 114.1d → none | resources Eng Clinet Approval [14 h] → none |
| B5-UPSD-MA190 | Review & Approval of Ceiling System | 2016-07-15 → 2016-07-24 A (+9d) | 2016-08-04 → 2016-09-15 A (+42d) | 0% → 100% | 6d → none | resources Eng Clinet Approval [14 h] → none |
| 5 | **Material Process Bill 6-UP-HOTEL LIFT LOBBY** | 2016-06-01 → 2016-06-05 (+4d) | 2016-08-11 → 2017-08-23 (+377d) |  |  |  |
| B6-UPHLL-MS150 | Preparation and Submission of Glass |  | 2016-07-18 → 2017-07-05 A (+352d) | 75% → 100% | 76d → none | resources Preparation and Submission Material [14 h] → none |
| B6-UPHLL-MS160 | Preparation and Submission of Metal |  | 2016-07-27 → 2017-08-02 A (+371d) | 50% → 100% | 38d → none | resources Preparation and Submission Material [14 h] → none |
| B6-UPHLL-MS190 | Preparation and Submission of Ceiling System |  | 2016-07-14 → 2016-09-14 A (+62d) | 80% → 100% | 20d → none | resources Preparation and Submission Material [14 h] → none |
| B6-UPHLL-MA150 | Review & Approval of Glass | 2016-06-01 A → 2016-06-15 A (+14d) | 2016-07-28 → 2017-07-24 A (+361d) | 50% → 100% | 108d → none | resources Eng Clinet Approval [14 h] → none |
| B6-UPHLL-MA160 | Review & Approval of Metal | 2016-06-01 A → 2016-06-15 A (+14d) | 2016-08-11 → 2017-08-23 A (+377d) | 30% → 100% | 54.3d → none | resources Eng Clinet Approval [14 h] → none |

| ID | Task | Start | Finish | Complete | Total float | Other |
| --- | --- | --- | --- | --- | --- | --- |
| B6-UPHLL-MA190 | Review & Approval of Ceiling System | 2016-07-15 → 2016-07-24 A (+9d) | 2016-08-04 → 2016-09-15 A (+42d) | 0% → 100% | 30d → none | resources Eng Clinet Approval [14 h] → none |
| 6 | **Material Process Bill 7-UP-RESIDENCE'S LIFT LOBBY** |  | 2016-08-04 → 2016-09-15 (+42d) |  |  |  |
| B7-UPRLL-MS190 | Preparation and Submission of Ceiling System |  | 2016-07-14 → 2016-09-14 A (+62d) | 80% → 100% | 16d → none | resources Preparation and Submission Material [14 h] → none |
| B7-UPRLL-MA190 | Review & Approval of Ceiling System | 2016-07-15 → 2016-07-24 A (+9d) | 2016-08-04 → 2016-09-15 A (+42d) | 0% → 100% | 24d → none | resources Eng Clinet Approval [14 h] → none |
| 7 | **Material Process Bill 8-UP-FRONT OFFICE** |  | 2016-08-15 → 2017-11-14 (+456d) |  |  |  |
| B8-UPFO-MS110 | Preparation and Submission of Veneer |  | 2016-07-27 → 2017-01-01 A (+158d) | 50% → 100% | 57d → none | resources Preparation and Submission Material [14 h] → none |
| B8-UPFO-MS190 | Preparation and Submission of Ceiling System |  | 2016-07-14 → 2016-09-14 A (+62d) | 80% → 100% | 12d → none | resources Preparation and Submission Material [14 h] → none |
| B8-UPFO-MS210 | Preparation and Submission of Carpet |  | 2016-07-11 → 2017-08-20 A (+405d) | 90% → 100% | 78d → none | resources Preparation and Submission Material [14 h] → none |
| B8-UPFO-MS270 | Preparation and Submission of Doors , Ironmongery and Hardware |  | 2016-07-27 → 2017-11-02 A (+463d) | 50% → 100% | 46.1d → none | resources Preparation and Submission Material [14 h] → none |
| B8-UPFO-MA110 | Review & Approval of Veneer |  | 2016-08-07 → 2017-01-03 A (+149d) | 50% → 100% | 82.5d → none | resources Eng Clinet Approval [14 h] → none |
| B8-UPFO-MA270 | Review & Approval of Doors , Ironmongery and Hardware |  | 2016-08-15 → 2017-11-14 A (+456d) | 10% → 100% | 66.1d → none | resources Eng Clinet Approval [14 h] → none |
| B8-UPFO-MA190 | Review & Approval of Ceiling System | 2016-07-15 → 2016-07-24 A (+9d) | 2016-08-04 → 2016-09-15 A (+42d) | 0% → 100% | 18d → none | resources Eng Clinet Approval [14 h] → none |
| B8-UPFO-MA210 | Review & Approval of Carpet | 2016-07-12 → 2016-08-17 A (+36d) | 2016-08-01 → 2017-08-15 A (+379d) | 0% → 100% | 110d → none | resources Eng Clinet Approval [14 h] → none |
| 8 | **Material Process Bill 9-UP-CHOCOLATE BOUTIQUE** |  | 2016-08-17 → 2017-11-05 (+445d) |  |  |  |
| B9-UPCB-MS150 | Preparation and Submission of Paint |  | 2016-07-18 → 2017-11-02 A (+472d) | 75% → 100% | 64.5d → none | resources Preparation and Submission Material [14 h] → none |
| B9-UPCB-MS190 | Preparation and Submission of Metal |  | 2016-07-27 → 2017-01-09 A (+166d) | 50% → 100% | 16d → none | resources Preparation and Submission Material [14 h] → none |
| B9-UPCB-MA150 | Review & Approval of Paint |  | 2016-07-28 → 2017-11-03 A (+463d) | 50% → 100% | 91d → none | resources Eng Clinet Approval [14 h] → none |
| B9-UPCB-MA110 | Review & Approval of Veneer |  | 2016-08-07 → 2017-09-14 A (+403d) | 50% → 100% | 101.5d → none | resources Eng Clinet Approval [14 h] → none |
| B9-UPCB-MA160 | Review & Approval of Glass |  | 2016-07-28 → 2017-11-05 A (+465d) | 50% → 100% | 149d → none | resources Eng Clinet Approval [14 h] → none |
| B9-UPCB-MA190 | Review & Approval of Metal |  | 2016-08-11 → 2017-08-07 A (+361d) | 30% → 100% | 23.3d → none | resources Eng Clinet Approval [14 h] → none |
| B9-UPCB-MS110 | Preparation and Submission of Veneer |  | 2016-07-27 → 2017-09-11 A (+411d) | 50% → 100% | 71.5d → none | resources Preparation and Submission Material [14 h] → none |
| B9-UPCB-MS160 | Preparation and Submission of Glass |  | 2016-07-18 → 2017-11-05 A (+475d) | 75% → 100% | 105d → none | resources Preparation and Submission Material [14 h] → none |
| B9-UPCB-MS200 | Preparation and Submission of Tiles |  | 2016-07-27 → 2017-09-02 A (+402d) | 50% → 100% | 38d → none | resources Preparation and Submission Material [14 h] → none |
| B9-UPCB-MS210 | Preparation and Submission of Ceiling System |  | 2016-07-14 → 2016-09-14 A (+62d) | 80% → 100% | 39d → none | resources Preparation and Submission Material [14 h] → none |
| B9-UPCB-MA210 | Review & Approval of Ceiling System | 2016-07-15 → 2016-07-24 A (+9d) | 2016-08-04 → 2016-09-15 A (+42d) | 0% → 100% | 55d → none | resources Eng Clinet Approval [14 h] → none |
| B9-UPCB-MA200 | Review & Approval of Tiles | 2016-07-28 → 2016-09-11 A (+45d) | 2016-08-17 → 2017-09-04 A (+383d) | 0% → 100% | 55d → none | resources Eng Clinet Approval [14 h] → none |
| 9 | **Material Process Bill 10-UP-RETAIL** |  | 2016-08-17 → 2017-08-20 (+368d) |  |  |  |
| B10-UPRT-MS140 | Preparation and Submission of Paint |  | 2016-07-18 → 2017-08-20 A (+398d) | 75% → 100% | 55d → none | resources Preparation and Submission Material [14 h] → none |
| B10-UPRT-MS150 | Preparation and Submission of Glass |  | 2016-07-18 → 2017-08-20 A (+398d) | 75% → 100% | 70d → none | resources Preparation and Submission Material [14 h] → none |
| B10-UPRT-MA140 | Review & Approval of Paint |  | 2016-07-28 → 2017-08-08 A (+376d) | 50% → 100% | 79d → none | resources Eng Clinet Approval [14 h] → none |
| B10-UPRT-MA150 | Review & Approval of Glass |  | 2016-07-28 → 2017-08-16 A (+384d) | 50% → 100% | 100d → none | resources Eng Clinet Approval [14 h] → none |
| B10-UPRT-MS180 | Preparation and Submission of Tiles |  | 2016-07-27 → 2017-07-18 A (+356d) | 50% → 100% | 33d → none | resources Preparation and Submission Material [14 h] → none |
| B10-UPRT-MA180 | Review & Approval of Tiles | 2016-07-28 → 2016-09-11 A (+45d) | 2016-08-17 → 2017-06-07 A (+294d) | 0% → 100% | 49d → none | resources Eng Clinet Approval [14 h] → none |
| 10 | **Material Process Bill 11-UP-REST ROOMS** |  | 2016-09-04 → 2018-03-01 (+543d) |  |  |  |
| B11-UPRR-MS110 | Preparation and Submission of Veneer |  | 2016-07-27 → 2017-08-02 A (+371d) | 50% → 100% | 37.5d → none | resources Preparation and Submission Material [14 h] → none |
| B11-UPRR-MS150 | Preparation and Submission of Glass |  | 2016-07-18 → 2017-08-01 A (+379d) | 75% → 100% | 71d → none | resources Preparation and Submission Material [14 h] → none |
| B11-UPRR-MS170 | Preparation and Submission of Metal |  | 2016-07-27 → 2017-08-02 A (+371d) | 50% → 100% | 40.3d → none | resources Preparation and Submission Material [14 h] → none |
| B11-UPRR-MS190 | Preparation and Submission of Wall Covering |  | 2016-07-27 → 2017-10-10 A (+440d) | 50% → 100% | 36.1d → none | resources Preparation and Submission Material [14 h] → none |
| B11-UPRR-MS200 | Preparation and Submission of Ceiling System |  | 2016-07-14 → 2016-09-14 A (+62d) | 80% → 100% | 10d → none | resources Preparation and Submission Material [14 h] → none |
| B11-UPRR-MS280 | Preparation and Submission of Doors , Ironmongery and Hardware |  | 2016-07-27 → 2017-11-02 A (+463d) | 50% → 100% | 79.1d → none | resources Preparation and Submission Material [14 h] → none |
| B11-UPRR-MA110 | Review & Approval of Veneer |  | 2016-08-07 → 2017-08-10 A (+368d) | 50% → 100% | 53.5d → none | resources Eng Clinet Approval [14 h] → none |
| B11-UPRR-MA150 | Review & Approval of Glass |  | 2016-07-28 → 2017-08-05 A (+373d) | 50% → 100% | 101d → none | resources Eng Clinet Approval [14 h] → none |
| B11-UPRR-MA170 | Review & Approval of Metal |  | 2016-08-11 → 2017-08-10 A (+364d) | 30% → 100% | 58.3d → none | resources Eng Clinet Approval [14 h] → none |
| B11-UPRR-MA190 | Review & Approval of Wall Covering |  | 2016-08-15 → 2017-10-25 A (+436d) | 10% → 100% | 52.1d → none | resources Eng Clinet Approval [14 h] → none |
| B11-UPRR-MA280 | Review & Approval of Doors , Ironmongery and Hardware |  | 2016-08-15 → 2017-11-14 A (+456d) | 10% → 100% | 113.1d → none | resources Eng Clinet Approval [14 h] → none |
| B11-UPRR-MA200 | Review & Approval of Ceiling System | 2016-07-15 → 2016-07-24 A (+9d) | 2016-08-04 → 2016-09-15 A (+42d) | 0% → 100% | 16d → none | resources Eng Clinet Approval [14 h] → none |
| B11-UPRR-MS290 | Preparation and Submission of Sanitary Ware , Fitttings and Accessories | 2016-04-04 A → 2016-10-12 A (+191d) | 2016-08-14 → 2018-02-25 A (+560d) | 10% → 100% | 40d → none | resources Preparation and Submission Material [14 h] → none |
| B11-UPRR-MA290 | Review & Approval of Sanitary Ware , Fitttings and Accessories | 2016-08-15 → 2017-01-24 A (+162d) | 2016-09-04 → 2018-03-01 A (+543d) | 0% → 100% | 58d → none | resources Eng Clinet Approval [14 h] → none |
| 11 | **Material Process Bill 12-UP-PRAYER ROOMS** |  | 2016-08-15 → 2017-11-14 (+456d) |  |  |  |
| B12-UPPR-MS110 | Preparation and Submission of Veneer |  | 2016-07-27 → 2017-01-11 A (+168d) | 50% → 100% | 52d → none | resources Preparation and Submission Material [14 h] → none |
| B12-UPPR-MS140 | Preparation and Submission of Glass |  | 2016-07-18 → 2017-10-18 A (+457d) | 75% → 100% | 138d → none | resources Preparation and Submission Material [14 h] → none |
| B12-UPPR-MS170 | Preparation and Submission of Wall Covering |  | 2016-07-27 → 2017-08-09 A (+378d) | 50% → 100% | 35.1d → none | resources Preparation and Submission Material [14 h] → none |
| B12-UPPR-MS190 | Preparation and Submission of Ceiling System |  | 2016-07-14 → 2016-09-14 A (+62d) | 80% → 100% | 15d → none | resources Preparation and Submission Material [14 h] → none |
| B12-UPPR-MS210 | Preparation and Submission of Carpet |  | 2016-07-11 → 2016-09-06 A (+57d) | 90% → 100% | 81.1d → none | resources Preparation and Submission Material [14 h] → none |
| B12-UPPR-MS270 | Preparation and Submission of Doors , Ironmongery and Hardware |  | 2016-07-27 → 2017-11-02 A (+463d) | 50% → 100% | 38.1d → none | resources Preparation and Submission Material [14 h] → none |
| B12-UPPR-MA110 | Review & Approval of Veneer |  | 2016-08-07 → 2017-06-06 A (+303d) | 50% → 100% | 74.5d → none | resources Eng Clinet Approval [14 h] → none |
| B12-UPPR-MA140 | Review & Approval of Glass |  | 2016-07-28 → 2017-10-25 A (+454d) | 50% → 100% | 196d → none | resources Eng Clinet Approval [14 h] → none |
| B12-UPPR-MA170 | Review & Approval of Wall Covering |  | 2016-08-15 → 2017-09-30 A (+411d) | 10% → 100% | 51.1d → none | resources Eng Clinet Approval [14 h] → none |
| B12-UPPR-MA210 | Review & Approval of Carpet |  | 2016-07-30 → 2017-08-16 A (+382d) | 10% → 100% | 115.1d → none | resources Eng Clinet Approval [14 h] → none |
| B12-UPPR-MA270 | Review & Approval of Doors , Ironmongery and Hardware |  | 2016-08-15 → 2017-11-14 A (+456d) | 10% → 100% | 56.1d → none | resources Eng Clinet Approval [14 h] → none |
| B12-UPPR-MA190 | Review & Approval of Ceiling System | 2016-07-15 → 2016-07-24 A (+9d) | 2016-08-04 → 2016-09-15 A (+42d) | 0% → 100% | 23d → none | resources Eng Clinet Approval [14 h] → none |
| 12 | **Material Process Bill 13-UP-RESIDENCES LOBBY** |  | 2016-08-11 → 2017-10-25 (+440d) |  |  |  |
| B13-UPRL-MS110 | Preparation and Submission of Veneer |  | 2016-07-27 → 2017-07-04 A (+342d) | 50% → 100% | 47.5d → none | resources Preparation and Submission Material [14 h] → none |
| B13-UPRL-MS150 | Preparation and Submission of Metal |  | 2016-07-27 → 2017-10-17 A (+447d) | 50% → 100% | 47d → none | resources Preparation and Submission Material [14 h] → none |
| B13-UPRL-MS190 | Preparation and Submission of Ceiling System |  | 2016-07-14 → 2016-09-14 A (+62d) | 80% → 100% | 15d → none | resources Preparation and Submission Material [14 h] → none |
| B13-UPRL-MA110 | Review & Approval of Veneer |  | 2016-08-07 → 2017-07-13 A (+340d) | 50% → 100% | 69.5d → none | resources Eng Clinet Approval [14 h] → none |
| B13-UPRL-MA150 | Review & Approval of Metal |  | 2016-08-11 → 2017-10-25 A (+440d) | 30% → 100% | 67.3d → none | resources Eng Clinet Approval [14 h] → none |
| B13-UPRL-MA190 | Review & Approval of Ceiling System | 2016-07-15 → 2016-07-24 A (+9d) | 2016-08-04 → 2016-09-15 A (+42d) | 0% → 100% | 23d → none | resources Eng Clinet Approval [14 h] → none |
| 15 | **Material Process Bill 20-UP-COFFEE BAR** |  | 2016-08-07 → 2017-07-10 (+337d) |  |  |  |
| B20-UPCB-MS110 | Preparation and Submission of Veneer |  | 2016-07-27 → 2017-07-01 A (+339d) | 50% → 100% | 86d → none | resources Preparation and Submission Material [14 h] → none |

| ID | Task | Start | Finish | Complete | Total float | Other |
| --- | --- | --- | --- | --- | --- | --- |
| B20-UPCB-MA110 | Review & Approval of Veneer |  | 2016-08-07 → 2017-07-10 A (+337d) | 50% → 100% | 122.5d → none | resources Eng Clinet Approval [14 h] → none |
| 16 | **Material Process Bill 28-LIFT CAR - TOWER A, B & D** |  | 2016-08-30 → 2017-08-05 (+340d) |  |  |  |
| B28-TsLC-MS110 | Preparation and Submission of Veneer |  | 2016-07-27 → 2017-08-01 A (+370d) | 50% → 100% | 74.5d → none | resources Preparation and Submission Material [14 h] → none |
| B28-TsLC-MS150 | Preparation and Submission of Glass |  | 2016-07-18 → 2017-07-16 A (+363d) | 75% → 100% | 88d → none | resources Preparation and Submission Material [14 h] → none |
| B28-TsLC-MS160 | Preparation and Submission of Metal |  | 2016-07-27 → 2017-07-19 A (+357d) | 50% → 100% | 24.3d → none | resources Preparation and Submission Material [14 h] → none |
| B28-TsLC-MS190 | Preparation and Submission of Ceiling System |  | 2016-07-14 → 2016-09-14 A (+62d) | 80% → 100% | 20d → none | resources Preparation and Submission Material [14 h] → none |
| B28-TsLC-MA110 | Review & Approval of Veneer |  | 2016-08-07 → 2017-08-05 A (+363d) | 50% → 100% | 106.5d → none | resources Eng Clinet Approval [14 h] → none |
| B28-TsLC-MA150 | Review & Approval of Glass |  | 2016-07-28 → 2017-07-25 A (+362d) | 50% → 100% | 124d → none | resources Eng Clinet Approval [14 h] → none |
| B28-TsLC-MA160 | Review & Approval of Metal |  | 2016-08-11 → 2017-07-25 A (+348d) | 30% → 100% | 34.3d → none | resources Eng Clinet Approval [14 h] → none |
| B28-TsLC-MA190 | Review & Approval of Ceiling System | 2016-07-15 → 2016-07-24 A (+9d) | 2016-08-04 → 2016-09-15 A (+42d) | 0% → 100% | 29d → none | resources Eng Clinet Approval [14 h] → none |
| B28-TsLC-MS230 | Preparation and Submission of Streached Printed Panel | 2016-04-04 A → 2017-01-09 A (+280d) | 2016-08-09 → 2017-06-06 A (+301d) | 20% → 100% | 45d → none | resources Preparation and Submission Material [14 h] → none |
| B28-TsLC-MA230 | Review & Approval of Streached Printed Panel | 2016-08-10 → 2017-01-11 A (+154d) | 2016-08-30 → 2017-06-20 A (+294d) | 0% → 100% | 65d → none | resources Eng Clinet Approval [14 h] → none |
| 17 | **Material Process Bill 29-SPA** |  | 2016-08-25 → 2017-11-14 (+446d) |  |  |  |
| B29-SPALC-MS110 | Preparation and Submission of Veneer |  | 2016-07-27 → 2017-10-30 A (+460d) | 50% → 100% | 65.5d → none | resources Preparation and Submission Material [14 h] → none |
| B29-SPALC-MS150 | Preparation and Submission of Paint |  | 2016-07-18 → 2017-11-02 A (+472d) | 75% → 100% | 54.5d → none | resources Preparation and Submission Material [14 h] → none |
| B29-SPALC-MS200 | Preparation and Submission of Glass |  | 2016-07-18 → 2017-10-30 A (+469d) | 75% → 100% | 80d → none | resources Preparation and Submission Material [14 h] → none |
| B29-SPALC-MS220 | Preparation and Submission of Metal |  | 2016-07-27 → 2017-10-30 A (+460d) | 50% → 100% | 32.3d → none | resources Preparation and Submission Material [14 h] → none |
| B29-SPALC-MS230 | Preparation and Submission of Wall Covering |  | 2016-07-27 → 2017-11-04 A (+465d) | 50% → 100% | 64.1d → none | resources Preparation and Submission Material [14 h] → none |
| B29-SPALC-MS250 | Preparation and Submission of Ceiling System |  | 2016-07-14 → 2016-09-14 A (+62d) | 80% → 100% | 23d → none | resources Preparation and Submission Material [14 h] → none |
| B29-SPALC-MS280 | Preparation and Submission of Leather and Fabric |  | 2016-07-27 → 2017-10-24 A (+454d) | 50% → 100% | 43d → none | resources Preparation and Submission Material [14 h] → none |
| B29-SPALC-MS290 | Preparation and Submission of Doors , Ironmongery and Hardware |  | 2016-07-27 → 2017-10-25 A (+455d) | 50% → 100% | 72d → none | resources Preparation and Submission Material [14 h] → none |
| B29-SPALC-MA110 | Review & Approval of Veneer |  | 2016-08-07 → 2017-11-01 A (+451d) | 50% → 100% | 93.5d → none | resources Eng Clinet Approval [14 h] → none |
| B29-SPALC-MA150 | Review & Approval of Paint |  | 2016-07-28 → 2017-11-06 A (+466d) | 50% → 100% | 77d → none | resources Eng Clinet Approval [14 h] → none |
| B29-SPALC-MA200 | Review & Approval of Glass |  | 2016-07-28 → 2017-11-01 A (+461d) | 50% → 100% | 114d → none | resources Eng Clinet Approval [14 h] → none |
| B29-SPALC-MA220 | Review & Approval of Metal |  | 2016-08-11 → 2017-11-02 A (+448d) | 30% → 100% | 46.3d → none | resources Eng Clinet Approval [14 h] → none |
| B29-SPALC-MA230 | Review & Approval of Wall Covering |  | 2016-08-15 → 2017-10-29 A (+440d) | 10% → 100% | 92.1d → none | resources Eng Clinet Approval [14 h] → none |
| B29-SPALC-MA290 | Review & Approval of Doors , Ironmongery and Hardware |  | 2016-08-15 → 2017-11-14 A (+456d) | 10% → 100% | 103.1d → none | resources Eng Clinet Approval [14 h] → none |
| B29-SPALC-MS240 | Preparation and Submission of Tiles |  | 2016-07-27 → 2017-08-03 A (+372d) | 50% → 100% | 37d → none | resources Preparation and Submission Material [14 h] → none |
| B29-SPALC-MS270 | Preparation and Submission of Stone |  | 2016-08-04 → 2017-10-25 A (+447d) | 30% → 100% | 31d → none | resources Preparation and Submission Material [14 h] → none |
| B29-SPALC-MA250 | Review & Approval of Ceiling System | 2016-07-15 → 2016-07-24 A (+9d) | 2016-08-04 → 2016-09-15 A (+42d) | 0% → 100% | 33d → none | resources Eng Clinet Approval [14 h] → none |
| B29-SPALC-MA240 | Review & Approval of Tiles | 2016-07-28 → 2016-09-11 A (+45d) | 2016-08-17 → 2017-08-09 A (+357d) | 0% → 100% | 53d → none | resources Eng Clinet Approval [14 h] → none |
| B29-SPALC-MA270 | Review & Approval of Stone | 2016-08-05 → 2016-09-11 A (+37d) | 2016-08-25 → 2017-11-02 A (+434d) | 0% → 100% | 45d → none | resources Eng Clinet Approval [14 h] → none |
| B29-SPALC-MA280 | Review & Approval of Leather and Fabric | 2016-07-28 → 2016-10-23 A (+87d) | 2016-08-17 → 2017-10-29 A (+438d) | 0% → 100% | 61d → none | resources Eng Clinet Approval [14 h] → none |
| 22 | **Material Process Bill 34-UP-SPEAK EASY BAR** |  | 2016-08-25 → 2017-11-14 (+446d) |  |  |  |
| B34-UPSEB-MS150 | Preparation and Submission of Veneer |  | 2016-07-27 → 2017-06-20 A (+328d) | 50% → 100% | 42.5d → none | resources Preparation and Submission Material [14 h] → none |
| B34-UPSEB-MS200 | Preparation and Submission of Solid Wood |  | 2016-07-27 → 2017-06-13 A (+321d) | 50% → 100% | 41.1d → none | resources Preparation and Submission Material [14 h] → none |
| B34-UPSEB-MS220 | Preparation and Submission of Paint |  | 2016-07-18 → 2017-10-18 A (+457d) | 75% → 100% | 36d → none | resources Preparation and Submission Material [14 h] → none |
| B34-UPSEB-MS230 | Preparation and Submission of Glass |  | 2016-07-18 → 2017-10-24 A (+463d) | 75% → 100% | 53d → none | resources Preparation and Submission Material [14 h] → none |
| B34-UPSEB-MS240 | Preparation and Submission of Metal |  | 2016-07-27 → 2017-10-24 A (+454d) | 50% → 100% | 22.3d → none | resources Preparation and Submission Material [14 h] → none |
| B34-UPSEB-MS250 | Preparation and Submission of Wall Covering |  | 2016-07-27 → 2017-10-31 A (+461d) | 50% → 100% | 64.1d → none | resources Preparation and Submission Material [14 h] → none |
| B34-UPSEB-MS280 | Preparation and Submission of Ceiling System |  | 2016-07-14 → 2016-09-14 A (+62d) | 80% → 100% | 10d → none | resources Preparation and Submission Material [14 h] → none |
| B34-UPSEB-MS300 | Preparation and Submission of Leather and Fabric |  | 2016-07-27 → 2017-10-24 A (+454d) | 50% → 100% | 71.1d → none | resources Preparation and Submission Material [14 h] → none |
| B34-UPSEB-MS310 | Preparation and Submission of Doors , Ironmongery and Hardware |  | 2016-07-27 → 2017-11-02 A (+463d) | 50% → 100% | 79.1d → none | resources Preparation and Submission Material [14 h] → none |
| B34-UPSEB-MA150 | Review & Approval of Veneer |  | 2016-08-07 → 2017-06-26 A (+323d) | 50% → 100% | 60.5d → none | resources Eng Clinet Approval [14 h] → none |
| B34-UPSEB-MA200 | Review & Approval of Solid Wood |  | 2016-08-15 → 2017-06-28 A (+317d) | 10% → 100% | 59.1d → none | resources Eng Clinet Approval [14 h] → none |
| B34-UPSEB-MA220 | Review & Approval of Paint |  | 2016-07-28 → 2017-10-30 A (+459d) | 50% → 100% | 50d → none | resources Eng Clinet Approval [14 h] → none |
| B34-UPSEB-MA230 | Review & Approval of Glass |  | 2016-07-28 → 2017-10-31 A (+460d) | 50% → 100% | 75d → none | resources Eng Clinet Approval [14 h] → none |
| B34-UPSEB-MA240 | Review & Approval of Metal |  | 2016-08-11 → 2017-10-25 A (+440d) | 30% → 100% | 32.3d → none | resources Eng Clinet Approval [14 h] → none |
| B34-UPSEB-MA250 | Review & Approval of Wall Covering |  | 2016-08-15 → 2017-11-12 A (+454d) | 10% → 100% | 92.1d → none | resources Eng Clinet Approval [14 h] → none |
| B34-UPSEB-MA300 | Review & Approval of Leather and Fabric |  | 2016-08-15 → 2017-11-09 A (+451d) | 10% → 100% | 101.1d → none | resources Eng Clinet Approval [14 h] → none |
| B34-UPSEB-MA310 | Review & Approval of Doors , Ironmongery and Hardware |  | 2016-08-15 → 2017-11-14 A (+456d) | 10% → 100% | 113.1d → none | resources Eng Clinet Approval [14 h] → none |
| B34-UPSEB-MS270 | Preparation and Submission of Tiles |  | 2016-07-27 → 2017-08-01 A (+370d) | 50% → 100% | 47d → none | resources Preparation and Submission Material [14 h] → none |
| B34-UPSEB-MS290 | Preparation and Submission of Stone |  | 2016-08-04 → 2017-06-01 A (+301d) | 30% → 100% | 9d → none | resources Preparation and Submission Material [14 h] → none |
| B34-UPSEB-MA280 | Review & Approval of Ceiling System | 2016-07-15 → 2016-07-24 A (+9d) | 2016-08-04 → 2016-09-15 A (+42d) | 0% → 100% | 14d → none | resources Eng Clinet Approval [14 h] → none |
| B34-UPSEB-MA270 | Review & Approval of Tiles | 2016-07-28 → 2016-09-11 A (+45d) | 2016-08-17 → 2017-08-08 A (+356d) | 0% → 100% | 67d → none | resources Eng Clinet Approval [14 h] → none |
| B34-UPSEB-MA290 | Review & Approval of Stone | 2016-08-05 → 2016-09-11 A (+37d) | 2016-08-25 → 2017-06-06 A (+285d) | 0% → 100% | 13d → none | resources Eng Clinet Approval [14 h] → none |
| 20 | **Material Process Bill 35-LIFT CAR - TOWER C** |  | 2016-08-08 → 2017-07-31 (+357d) |  |  |  |
| B35-TCSR-MS150 | Preparation and Submission of Metal |  | 2016-07-24 → 2017-07-24 A (+365d) | 50% → 100% | 52.3d → none | resources Preparation and Submission Material [14 h] → none |
| B35-TCSR-MS190 | Preparation and Submission of Ceiling System |  | 2016-07-13 → 2016-09-10 A (+59d) | 80% → 100% | 43d → none | resources Preparation and Submission Material [14 h] → none |
| B35-TCSR-MA150 | Review & Approval of Metal |  | 2016-08-08 → 2017-07-31 A (+357d) | 30% → 100% | 61.3d → none | resources Eng Clinet Approval [14 h] → none |
| B35-TCSR-MA190 | Review & Approval of Ceiling System | 2016-07-14 → 2016-07-24 A (+10d) | 2016-08-03 → 2016-09-15 A (+43d) | 0% → 100% | 51d → none | resources Eng Clinet Approval [14 h] → none |
| 21 | **Material Process Bill 39-LG- LIFT LOBBY** |  | 2016-08-08 → 2017-08-08 (+365d) |  |  |  |
| B39-LGLL-MS110 | Preparation and Submission of Veneer |  | 2016-07-24 → 2017-06-20 A (+331d) | 50% → 100% | 104.5d → none | resources Preparation and Submission Material [14 h] → none |
| B39-LGLL-MS150 | Preparation and Submission of Glass |  | 2016-07-16 → 2017-08-02 A (+382d) | 75% → 100% | 123d → none | resources Preparation and Submission Material [14 h] → none |
| B39-LGLL-MS160 | Preparation and Submission of Metal |  | 2016-07-24 → 2017-06-01 A (+312d) | 50% → 100% | 44.3d → none | resources Preparation and Submission Material [14 h] → none |
| B39-LGLL-MS190 | Preparation and Submission of Ceiling System |  | 2016-07-13 → 2016-09-10 A (+59d) | 80% → 100% | 30d → none | resources Preparation and Submission Material [14 h] → none |
| B39-LGLL-MA110 | Review & Approval of Veneer |  | 2016-08-04 → 2017-07-01 A (+331d) | 50% → 100% | 122.5d → none | resources Eng Clinet Approval [14 h] → none |
| B39-LGLL-MA150 | Review & Approval of Glass |  | 2016-07-26 → 2017-08-08 A (+378d) | 50% → 100% | 144d → none | resources Eng Clinet Approval [14 h] → none |
| B39-LGLL-MA160 | Review & Approval of Metal |  | 2016-08-08 → 2017-06-06 A (+302d) | 30% → 100% | 52.3d → none | resources Eng Clinet Approval [14 h] → none |
| B39-LGLL-MA190 | Review & Approval of Ceiling System | 2016-07-14 → 2016-07-24 A (+10d) | 2016-08-03 → 2016-09-15 A (+43d) | 0% → 100% | 35d → none | resources Eng Clinet Approval [14 h] → none |

| ID | Task | Start | Finish | Complete | Total float | Other |
| --- | --- | --- | --- | --- | --- | --- |
| 4 | **Procurement Phase** | 2016-07-23 → 2016-08-21 (+29d) | 2017-01-17 → 2018-05-03 (+471d) |  |  |  |
| 1 | **Procurement Process Bill 2 UP-HOTEL LOBBY** | 2016-08-15 → 2016-09-04 (+20d) | 2016-12-01 → 2017-11-25 (+359d) |  |  |  |
| B2-UPHL-PR120 | Fabrication and Delivery of Paint | 2016-08-15 → 2016-09-04 A (+20d) | 2016-10-14 → 2017-11-25 A (+407d) | 0% → 100% | 38.77d → none | resources Procurement [28 h] → none |
| B2-UPHL-PR180 | Fabrication and Delivery of Ceiling System | 2016-08-23 → 2016-09-18 A (+26d) | 2016-09-30 → 2017-07-18 A (+291d) | 0% → 100% | 7.66d → none | resources Procurement [28 h] → none |
| B2-UPHL-PR100 | Fabrication and Delivery of Veneer Works - Joinery | 2016-09-22 → 2016-09-25 A (+3d) | 2016-11-04 → 2017-06-14 A (+222d) | 0% → 100% | 49.7d → none | resources Procurement [84 h] → none |
| B2-UPHL-PR130 | Fabrication and Delivery of Glass | 2016-08-15 → 2016-09-29 A (+45d) | 2016-10-14 → 2017-10-19 A (+370d) | 0% → 100% | 86.77d → none | resources Procurement [35 h] → none |
| B2-UPHL-PR140 | Fabrication and Delivery of Metal | 2016-08-15 → 2016-09-29 A (+45d) | 2016-11-04 → 2017-06-04 A (+212d) | 0% → 100% | 41.77d → none | resources Procurement [49 h] → none |
| B2-UPHL-PR170 | Fabrication and Delivery of Tiles | 2016-08-17 → 2016-09-29 A (+43d) | 2016-10-30 → 2017-07-29 A (+272d) | 0% → 100% | 2.62d → none | resources Procurement [56 h] → none |
| B2-UPHL-PR190 | Fabrication and Delivery of Stone | 2016-08-25 → 2016-11-06 A (+73d) | 2016-10-31 → 2017-08-15 A (+288d) | 0% → 100% | 1.62d → none | resources Procurement [56 h] → none |
| B2-UPHL-PR260 | Fabrication and Delivery of Doors , Ironmongery and Hardware | 2016-10-12 → 2017-09-26 A (+349d) | 2016-12-01 → 2017-10-26 A (+329d) | 0% → 100% | 53.85d → none | resources Procurement [42 h] → none |
| 2 | **Procurement Process Bill 3-UP-HOTEL RECEPTION** | 2016-07-28 → 2016-09-18 (+52d) | 2016-10-31 → 2018-01-11 (+437d) |  |  |  |
| B3-UPHR-PR180 | Fabrication and Delivery of Ceiling System | 2016-08-04 → 2016-09-18 A (+45d) | 2016-10-17 → 2017-07-01 A (+257d) | 0% → 100% | 9.62d → none | resources Procurement [28 h] → none |
| B3-UPHR-PR130 | Fabrication and Delivery of Glass | 2016-07-28 → 2016-09-29 A (+63d) | 2016-09-25 → 2017-12-04 A (+435d) | 0% → 100% | 56d → none | resources Procurement [35 h] → none |
| B3-UPHR-PR140 | Fabrication and Delivery of Metal | 2016-08-11 → 2016-09-29 A (+49d) | 2016-10-31 → 2018-01-11 A (+437d) | 0% → 100% | 56.74d → none | resources Procurement [49 h] → none |
| 3 | **Procurement Process Bill 4-UP-VIP PROTOCOL** | 2016-07-23 → 2016-09-18 (+57d) | 2016-11-10 → 2017-10-22 (+346d) |  |  |  |
| B4-UPVP-PR180 | Fabrication and Delivery of Ceiling System | 2016-08-04 → 2016-09-18 A (+45d) | 2016-09-18 → 2017-07-01 A (+286d) | 0% → 100% | 29d → none | resources Procurement [28 h] → none |
| B4-UPVP-PR100 | Fabrication and Delivery of Veneer Works - Joinery | 2016-09-01 → 2016-09-25 A (+24d) | 2016-11-07 → 2017-06-11 A (+216d) | 0% → 100% | 49.69d → none | resources Procurement [84 h] → none |
| B4-UPVP-PR110 | Fabrication and Delivery of Solid Works - Joinery | 2016-07-23 → 2016-09-25 A (+64d) | 2016-10-30 → 2017-07-18 A (+261d) | 0% → 100% | 24.7d → none | resources Procurement [84 h] → none |
| B4-UPVP-PR130 | Fabrication and Delivery of Glass | 2016-09-14 → 2016-09-29 A (+15d) | 2016-11-10 → 2017-10-19 A (+343d) | 0% → 100% | 46.81d → none | resources Procurement [35 h] → none |
| B4-UPVP-PR160 | Fabrication and Delivery of Wall Covering | 2016-09-14 → 2016-10-16 A (+32d) | 2016-11-03 → 2017-06-08 A (+217d) | 0% → 100% | 62.81d → none | resources Procurement [35 h] → none |
| B4-UPVP-PR260 | Fabrication and Delivery of Doors , Ironmongery and Hardware | 2016-09-14 → 2016-11-27 A (+74d) | 2016-11-03 → 2017-10-22 A (+353d) | 0% → 100% | 62.81d → none | resources Procurement [42 h] → none |
| 4 | **Procurement Process Bill 5-UP-SAFE DEPOSIT** | 2016-08-04 → 2016-09-18 (+45d) | 2016-11-07 → 2017-12-09 (+397d) |  |  |  |
| B5-UPSD-PR180 | Fabrication and Delivery of Ceiling System | 2016-08-04 → 2016-09-18 A (+45d) | 2016-10-10 → 2017-07-04 A (+267d) | 0% → 100% | 6d → none | resources Procurement [28 h] → none |
| B5-UPSD-PR100 | Fabrication and Delivery of Veneer Works - Joinery | 2016-09-01 → 2016-09-25 A (+24d) | 2016-11-07 → 2017-09-13 A (+310d) | 0% → 100% | 55.69d → none | resources Procurement [84 h] → none |
| B5-UPSD-PR260 | Fabrication and Delivery of Doors , Ironmongery and Hardware | 2016-08-30 → 2016-11-27 A (+89d) | 2016-10-22 → 2017-12-09 A (+413d) | 0% → 100% | 78.96d → none | resources Procurement [42 h] → none |
| 5 | **Procurement Process Bill 6-UP-HOTEL LIFT LOBBY** | 2016-08-09 → 2016-09-18 (+40d) | 2016-11-02 → 2017-09-21 (+323d) |  |  |  |
| B6-UPHLL-PR180 | Fabrication and Delivery of Ceiling System | 2016-08-09 → 2016-09-18 A (+40d) | 2016-10-29 → 2017-06-29 A (+243d) | 0% → 100% | 25.85d → none | resources Procurement [28 h] → none |
| B6-UPHLL-PR130 | Fabrication and Delivery of Glass | 2016-08-15 → 2016-09-29 A (+45d) | 2016-10-14 → 2017-09-21 A (+342d) | 0% → 100% | 90.77d → none | resources Procurement [35 h] → none |
| B6-UPHLL-PR140 | Fabrication and Delivery of Metal | 2016-08-13 → 2016-09-29 A (+47d) | 2016-11-02 → 2017-01-18 A (+77d) | 0% → 100% | 52.19d → none | resources Procurement [49 h] → none |
| 6 | **Procurement Process Bill 7-UP-RESIDENCE'S LIFT LOBBY** | 2016-08-05 → 2016-09-18 (+44d) | 2016-10-18 → 2017-07-01 (+256d) |  |  |  |
| B7-UPRLL-PR180 | Fabrication and Delivery of Ceiling System | 2016-08-05 → 2016-09-18 A (+44d) | 2016-10-18 → 2017-07-01 A (+256d) | 0% → 100% | 23.04d → none | resources Procurement [28 h] → none |
| 7 | **Procurement Process Bill 8-UP-FRONT OFFICE** | 2016-08-04 → 2016-08-21 (+17d) | 2016-11-21 → 2017-10-24 (+337d) |  |  |  |
| B8-UPFO-PR200 | Fabrication and Delivery of Carpet | 2016-09-01 → 2016-08-21 A (-11d) | 2016-11-07 → 2017-09-19 A (+316d) | 0% → 100% | 80.31d → none | resources Procurement [56 h] → none |
| B8-UPFO-PR180 | Fabrication and Delivery of Ceiling System | 2016-08-04 → 2016-09-18 A (+45d) | 2016-09-25 → 2017-07-03 A (+281d) | 0% → 100% | 18.62d → none | resources Procurement [28 h] → none |
| B8-UPFO-PR100 | Fabrication and Delivery of Veneer Works - Joinery | 2016-09-01 → 2016-09-25 A (+24d) | 2016-11-21 → 2017-07-25 A (+246d) | 0% → 100% | 57.69d → none | resources Procurement [84 h] → none |
| B8-UPFO-PR260 | Fabrication and Delivery of Doors , Ironmongery and Hardware | 2016-08-23 → 2016-11-27 A (+96d) | 2016-10-15 → 2017-10-24 A (+374d) | 0% → 100% | 58.93d → none | resources Procurement [42 h] → none |
| 8 | **Procurement Process Bill 9-UP-CHOCOLATE BOUTIQUE** | 2016-08-09 → 2016-09-04 (+26d) | 2016-12-05 → 2018-05-03 (+514d) |  |  |  |
| B9-UPCB-PR120 | Fabrication and Delivery of Paint | 2016-08-31 → 2016-09-04 A (+4d) | 2016-10-30 → 2017-12-06 A (+402d) | 0% → 100% | 57.89d → none | resources Procurement [28 h] → none |
| B9-UPCB-PR180 | Fabrication and Delivery of Ceiling System | 2016-08-09 → 2016-09-18 A (+40d) | 2016-09-06 → 2017-11-21 A (+441d) | 0% → 100% | 50.96d → none | resources Procurement [28 h] → none |
| B9-UPCB-PR100 | Fabrication and Delivery of Veneer Works - Joinery | 2016-09-30 → 2016-09-25 A (-5d) | 2016-11-26 → 2018-05-01 (+521d) | 0% → 90% | 50.93d → -459.91d | resources Procurement [84 h] → none |
| B9-UPCB-PR130 | Fabrication and Delivery of Glass | 2016-10-30 → 2016-09-29 A (-31d) | 2016-12-05 → 2018-04-29 (+510d) | 0% → 90% | 59.96d → -449.19d | resources Procurement [35 h] → none |
| B9-UPCB-PR140 | Fabrication and Delivery of Metal | 2016-08-31 → 2016-09-29 A (+29d) | 2016-11-20 → 2018-05-03 (+529d) | 0% → 90% | 3.89d → -521.35d | resources Procurement [49 h] → none |
| B9-UPCB-PR170 | Fabrication and Delivery of Tiles | 2016-08-21 → 2016-10-16 A (+56d) | 2016-10-13 → 2017-09-20 A (+342d) | 0% → 100% | 51.93d → none | resources Procurement [56 h] → none |
| 9 | **Procurement Process Bill 10-UP-RETAIL** | 2016-07-28 → 2016-09-04 (+38d) | 2016-10-16 → 2018-04-28 (+559d) |  |  |  |
| B10-UPRT-PR120 | Fabrication and Delivery of Paint | 2016-07-28 → 2016-09-04 A (+38d) | 2016-09-25 → 2017-07-19 A (+297d) | 0% → 100% | 79d → none | resources Procurement [28 h] → none |
| B10-UPRT-PR130 | Fabrication and Delivery of Glass | 2016-08-15 → 2016-09-29 A (+45d) | 2016-10-14 → 2018-04-28 (+561d) | 0% → 96% | 82.77d → -436.55d | resources Procurement [35 h] → none |
| B10-UPRT-PR170 | Fabrication and Delivery of Tiles | 2016-08-17 → 2016-10-16 A (+60d) | 2016-10-16 → 2017-09-06 A (+325d) | 0% → 100% | 49d → none | resources Procurement [56 h] → none |
| 10 | **Procurement Process Bill 11-UP-REST ROOMS** | 2016-07-29 → 2016-09-18 (+51d) | 2016-12-02 → 2018-03-06 (+459d) |  |  |  |
| B11-UPRR-PR180 | Fabrication and Delivery of Ceiling System | 2016-08-04 → 2016-09-18 A (+45d) | 2016-09-25 → 2017-06-27 A (+275d) | 0% → 100% | 16.62d → none | resources Procurement [28 h] → none |
| B11-UPRR-PR100 | Fabrication and Delivery of Veneer Works - Joinery | 2016-09-01 → 2016-09-25 A (+24d) | 2016-11-14 → 2017-06-29 A (+227d) | 0% → 100% | 28.69d → none | resources Procurement [84 h] → none |
| B11-UPRR-PR130 | Fabrication and Delivery of Glass | 2016-07-29 → 2016-09-29 A (+62d) | 2016-09-26 → 2017-10-26 A (+395d) | 0% → 100% | 100.89d → none | resources Procurement [35 h] → none |
| B11-UPRR-PR140 | Fabrication and Delivery of Metal | 2016-08-11 → 2016-09-29 A (+49d) | 2016-10-31 → 2018-02-15 A (+472d) | 0% → 100% | 58.74d → none | resources Procurement [49 h] → none |
| B11-UPRR-PR160 | Fabrication and Delivery of Wall Covering | 2016-08-15 → 2016-10-16 A (+62d) | 2016-10-28 → 2017-06-01 A (+216d) | 0% → 100% | 52.66d → none | resources Procurement [35 h] → none |
| B11-UPRR-PR260 | Fabrication and Delivery of Doors , Ironmongery and Hardware | 2016-08-15 → 2017-07-04 A (+323d) | 2016-10-07 → 2017-09-13 A (+341d) | 0% → 100% | 113.66d → none | resources Procurement [42 h] → none |
| B11-UPRR-PR270 | Fabrication and Delivery of Sanitary Ware , Fitttings and Accessories | 2016-09-04 → 2018-02-12 A (+526d) | 2016-12-02 → 2018-03-06 A (+459d) | 0% → 100% | 58.62d → none | resources Procurement [77 h] → none |
| 11 | **Procurement Process Bill 12-UP-PRAYER ROOMS** | 2016-08-09 → 2016-08-21 (+12d) | 2016-12-06 → 2017-10-26 (+324d) |  |  |  |
| B12-UPPR-PR200 | Fabrication and Delivery of Carpet | 2016-09-01 → 2016-08-21 A (-11d) | 2016-11-07 → 2017-10-05 A (+332d) | 0% → 100% | 83.31d → none | resources Procurement [56 h] → none |
| B12-UPPR-PR180 | Fabrication and Delivery of Ceiling System | 2016-08-09 → 2016-09-18 A (+40d) | 2016-09-16 → 2017-06-27 A (+284d) | 0% → 100% | 18.22d → none | resources Procurement [28 h] → none |
| B12-UPPR-PR100 | Fabrication and Delivery of Veneer Works - Joinery | 2016-09-01 → 2016-09-25 A (+24d) | 2016-12-06 → 2017-09-13 A (+281d) | 0% → 100% | 49.69d → none | resources Procurement [84 h] → none |
| B12-UPPR-PR160 | Fabrication and Delivery of Wall Covering | 2016-08-15 → 2016-10-16 A (+62d) | 2016-10-28 → 2017-06-29 A (+244d) | 0% → 100% | 51.66d → none | resources Procurement [35 h] → none |
| B12-UPPR-PR260 | Fabrication and Delivery of Doors , Ironmongery and Hardware | 2016-08-15 → 2017-07-05 A (+324d) | 2016-10-07 → 2017-10-26 A (+384d) | 0% → 100% | 56.66d → none | resources Procurement [42 h] → none |
| 12 | **Procurement Process Bill 13-UP-RESIDENCES LOBBY** | 2016-08-22 → 2016-09-18 (+27d) | 2016-12-21 → 2018-02-25 (+431d) |  |  |  |
| B13-UPRL-PR180 | Fabrication and Delivery of Ceiling System | 2016-08-22 → 2016-09-18 A (+27d) | 2016-09-29 → 2017-06-26 A (+270d) | 0% → 100% | 5.68d → none | resources Procurement [28 h] → none |
| B13-UPRL-PR100 | Fabrication and Delivery of Veneer Works - Joinery | 2016-10-17 → 2016-09-25 A (-22d) | 2016-12-21 → 2017-08-16 A (+238d) | 0% → 100% | 2.79d → none | resources Procurement [84 h] → none |
| B13-UPRL-PR140 | Fabrication and Delivery of Metal | 2016-09-07 → 2016-09-29 A (+22d) | 2016-11-27 → 2018-02-25 A (+455d) | 0% → 100% | 40.72d → none | resources Procurement [49 h] → none |
| 15 | **Procurement Process Bill 20-UP-COFFEE BAR** | 2016-09-28 → 2016-09-25 (-3d) | 2016-11-17 → 2018-03-29 (+497d) |  |  |  |
| B20-UPCB-PR100 | Fabrication and Delivery of Veneer Works - Joinery | 2016-09-28 → 2016-09-25 A (-3d) | 2016-11-17 → 2018-03-29 A (+497d) | 0% → 100% | 73d → none | resources Procurement [84 h] → none |
| 16 | **Procurement Process Bill 28-LIFT CAR - TOWER A, B & D** | 2016-08-25 → 2016-09-18 (+24d) | 2016-12-31 → 2017-12-13 (+347d) |  |  |  |
| B28-TsLC-PR180 | Fabrication and Delivery of Ceiling System | 2016-08-25 → 2016-09-18 A (+24d) | 2016-10-10 → 2017-07-28 A (+291d) | 0% → 100% | 8.62d → none | resources Procurement [28 h] → none |
| B28-TsLC-PR100 | Fabrication and Delivery of Veneer Works - Joinery | 2016-11-17 → 2016-09-25 A (-53d) | 2016-12-31 → 2017-08-20 A (+232d) | 0% → 100% | 8.62d → none | resources Procurement [84 h] → none |

| ID | Task | Start | Finish | Duration | Complete | Total float | Predecessors | Other |
| --- | --- | --- | --- | --- | --- | --- | --- | --- |
| B28-TsLC-PR130 | Fabrication and Delivery of Glass | 2016-10-19 → 2016-09-29 A (-20d) | 2016-12-16 → 2017-11-14 A (+333d) |  | 0% → 100% | 45.62d → none |  | resources Procurement [35 h] → none |
| B28-TsLC-PR140 | Fabrication and Delivery of Metal | 2016-09-17 → 2016-09-29 A (+12d) | 2016-12-05 → 2017-09-04 A (+273d) |  | 0% → 100% | 0.62d → none |  | resources Procurement [49 h] → none |
| B28-TsLC-PR220 | Fabrication and Delivery of Streached Printed Panel | 2016-08-30 → 2017-09-28 A (+394d) | 2016-11-26 → 2017-12-13 A (+382d) |  | 0% → 100% | 65.62d → none |  | resources Procurement [56 h] → none |
| 17 | **Procurement Process Bill 29-SPA** | 2016-08-10 → 2016-09-04 (+25d) | 2016-12-16 → 2018-03-02 (+441d) |  |  |  |  |  |
| B29-SPALC-PR120 | Fabrication and Delivery of Paint | 2016-09-07 → 2016-09-04 A (-3d) | 2016-11-06 → 2017-12-04 A (+393d) |  | 0% → 100% | 36.62d → none |  | resources Procurement [28 h] → none |
| B29-SPALC-PR180 | Fabrication and Delivery of Ceiling System | 2016-08-10 → 2016-09-18 A (+39d) | 2016-10-01 → 2017-09-14 A (+348d) |  | 0% → 100% | 27.62d → none |  | resources Procurement [28 h] → none |
| B29-SPALC-PR100 | Fabrication and Delivery of Veneer Works - Joinery | 2016-10-11 → 2016-09-25 A (-16d) | 2016-11-22 → 2017-06-05 A (+195d) |  | 0% → 100% | 32.62d → none |  | resources Procurement [84 h] → none |
| B29-SPALC-PR130 | Fabrication and Delivery of Glass | 2016-09-25 → 2016-09-29 A (+4d) | 2016-11-21 → 2018-02-10 A (+446d) |  | 0% → 100% | 58.62d → none |  | resources Procurement [35 h] → none |
| B29-SPALC-PR140 | Fabrication and Delivery of Metal | 2016-09-07 → 2016-09-29 A (+22d) | 2016-11-27 → 2018-01-06 A (+405d) |  | 0% → 100% | 19.62d → none |  | resources Procurement [49 h] → none |
| B29-SPALC-PR160 | Fabrication and Delivery of Wall Covering | 2016-09-07 → 2016-10-16 A (+39d) | 2016-11-20 → 2017-06-10 A (+202d) |  | 0% → 100% | 69.62d → none |  | resources Procurement [35 h] → none |
| B29-SPALC-PR170 | Fabrication and Delivery of Tiles | 2016-08-24 → 2016-10-16 A (+53d) | 2016-11-13 → 2017-10-25 A (+346d) |  | 0% → 100% | 46.62d → none |  | resources Procurement [56 h] → none |
| B29-SPALC-PR210 | Fabrication and Delivery of Leather and Fabric | 2016-10-11 → 2017-01-24 A (+105d) | 2016-12-07 → 2017-06-10 A (+185d) |  | 0% → 100% | 10.62d → none |  | resources Procurement [56 h] → none |
| B29-SPALC-PR260 | Fabrication and Delivery of Doors , Ironmongery and Hardware | 2016-11-09 → 2017-07-19 A (+252d) | 2016-12-16 → 2018-03-02 A (+441d) |  | 0% → 100% | 21.62d → none |  | resources Procurement [42 h] → none |
| B29-SPALC-PR190 | Fabrication and Delivery of Stone | 2016-08-25 → 2017-10-18 A (+419d) | 2016-11-14 → 2017-12-02 A (+383d) |  | 0% → 100% | 45.62d → none |  | resources Procurement [56 h] → none |
| 22 | **Procurement Process Bill 34-UP-SPEAK EASY BAR** | 2016-07-28 → 2016-09-04 (+38d) | 2016-11-29 → 2018-02-11 (+439d) |  |  |  |  |  |
| B34-UPSEB-PR120 | Fabrication and Delivery of Paint | 2016-07-28 → 2016-09-04 A (+38d) | 2016-09-25 → 2017-12-19 A (+450d) |  | 0% → 100% | 50.62d → none |  | resources Procurement [28 h] → none |
| B34-UPSEB-PR180 | Fabrication and Delivery of Ceiling System | 2016-08-09 → 2016-09-18 A (+40d) | 2016-09-06 → 2017-06-27 A (+294d) |  | 0% → 100% | 9.85d → none |  | resources Procurement [28 h] → none |
| B34-UPSEB-PR100 | Fabrication and Delivery of Veneer Works - Joinery | 2016-09-19 → 2016-09-25 A (+6d) | 2016-11-29 → 2017-08-28 A (+272d) |  | 0% → 100% | 20.22d → none |  | resources Procurement [84 h] → none |
| B34-UPSEB-PR110 | Fabrication and Delivery of Solid Works - Joinery | 2016-09-01 → 2016-09-28 A (+27d) | 2016-11-07 → 2017-12-06 A (+394d) |  | 0% → 100% | 42.69d → none |  | resources Procurement [84 h] → none |
| B34-UPSEB-PR130 | Fabrication and Delivery of Glass | 2016-07-28 → 2016-09-29 A (+63d) | 2016-09-25 → 2018-02-10 A (+503d) |  | 0% → 100% | 75.62d → none |  | resources Procurement [35 h] → none |
| B34-UPSEB-PR140 | Fabrication and Delivery of Metal | 2016-08-11 → 2016-09-29 A (+49d) | 2016-10-31 → 2018-02-11 A (+468d) |  | 0% → 100% | 32.74d → none |  | resources Procurement [49 h] → none |
| B34-UPSEB-PR160 | Fabrication and Delivery of Wall Covering | 2016-08-15 → 2016-10-16 A (+62d) | 2016-10-28 → 2017-06-30 A (+245d) |  | 0% → 100% | 92.66d → none |  | resources Procurement [35 h] → none |
| B34-UPSEB-PR170 | Fabrication and Delivery of Tiles | 2016-08-17 → 2016-10-16 A (+60d) | 2016-11-06 → 2017-09-05 A (+303d) |  | 0% → 100% | 67.62d → none |  | resources Procurement [56 h] → none |
| B34-UPSEB-PR210 | Fabrication and Delivery of Leather and Fabric | 2016-08-15 → 2017-07-18 A (+337d) | 2016-11-04 → 2017-10-10 A (+340d) |  | 0% → 100% | 101.04d → none |  | resources Procurement [56 h] → none |
| B34-UPSEB-PR190 | Fabrication and Delivery of Stone | 2016-08-25 → 2017-08-01 A (+341d) | 2016-10-17 → 2017-09-06 A (+324d) |  | 0% → 100% | 13.62d → none |  | resources Procurement [56 h] → none |
| B34-UPSEB-PR260 | Fabrication and Delivery of Doors , Ironmongery and Hardware | 2016-09-25 → 2017-08-30 A (+339d) | 2016-11-14 → 2017-12-05 A (+386d) |  | 0% → 100% | 75.81d → none |  | resources Procurement [42 h] → none |
| 20 | **Procurement Process Bill 35-LIFT CAR - TOWER C** | 2016-08-25 → 2016-09-18 (+24d) | 2016-12-28 → 2017-10-25 (+301d) |  |  |  |  |  |
| B35-TCSR-PR180 | Fabrication and Delivery of Ceiling System | 2016-08-25 → 2016-09-18 A (+24d) | 2016-10-10 → 2017-07-28 A (+291d) |  | 0% → 100% | 29.62d → none |  | resources Procurement [28 h] → none |
| B35-TCSR-PR140 | Fabrication and Delivery of Metal | 2016-10-10 → 2016-09-29 A (-11d) | 2016-12-28 → 2017-10-25 A (+301d) |  | 0% → 100% | 2.62d → none |  | resources Procurement [49 h] → none |
| 21 | **Procurement Process Bill 39-LG- LIFT LOBBY** | 2016-08-25 → 2016-09-18 (+24d) | 2017-01-17 → 2017-10-25 (+281d) |  |  |  |  |  |
| B39-LGLL-PR180 | Fabrication and Delivery of Ceiling System | 2016-08-25 → 2016-09-18 A (+24d) | 2016-10-10 → 2017-07-28 A (+291d) |  | 0% → 100% | 13.62d → none |  | resources Procurement [28 h] → none |
| B39-LGLL-PR100 | Fabrication and Delivery of Veneer Works - Joinery | 2016-11-28 → 2016-09-25 A (-64d) | 2016-12-28 → 2017-08-04 A (+219d) |  | 0% → 100% | 10.62d → none |  | resources Procurement [84 h] → none |
| B39-LGLL-PR130 | Fabrication and Delivery of Glass | 2016-12-13 → 2016-09-29 A (-75d) | 2017-01-17 → 2017-10-24 A (+280d) |  | 0% → 100% | 10.75d → none |  | resources Procurement [35 h] → none |
| B39-LGLL-PR140 | Fabrication and Delivery of Metal | 2016-09-28 → 2016-09-29 A (+1d) | 2016-12-17 → 2017-10-25 A (+312d) |  | 0% → 100% | 4.62d → none |  | resources Procurement [49 h] → none |
| 5 | **Construction Phase** |  | 2017-02-15 → 2018-08-01 (+532d) |  |  |  |  |  |
| Con000 | Site Mobilization |  | 2016-07-17 A |  | 40% → 100% | 21.6d → none |  | resources Steel [42 M3] → none |
| 1 | **Bill 2 UP-HOTEL LOBBY** | 2016-08-07 → 2016-10-13 (+67d) | 2017-02-14 → 2018-05-03 (+443d) |  |  |  |  |  |
| B2-UPHL-C021 | Clearance process for Measurements , Framing&Enabling Works | 2016-08-07 → 2016-10-13 A (+67d) | 2016-08-11 → 2016-11-24 A (+105d) |  | 0% → 100% | 3d → none |  | resources none → Concrete Barrier |
| B2-UPHL-C001 | Installation of Ceiling System | 2016-10-24 → 2016-11-12 A (+19d) | 2016-11-03 → 2017-02-08 A (+97d) | 10d → 20.94d | 0% → 100% | 0d → none | Measurement , Framing and Enabling Works, A2630, Site Access BILL 17 - P1 - FAMILY FRIENDLY RESTAURANT → Con000, RM-SA-001, B2-UPHL-1stP001, B2-UPHL-C031 | resources Steel [80 M3] → Concrete Barrier [305007 m] |
| B2-UPHL-1stP001 | MEP 1st , 2nd Fix and Wall System | 2016-08-07 → 2016-11-23 A (+108d) | 2016-08-07 → 2016-11-23 A (+108d) |  | 0% → 100% | 3d → none |  |  |
| B2-UPHL-C031 | Measurements , Framing & Enabling Works | 2016-08-13 → 2016-11-26 A (+105d) | 2016-08-28 → 2017-03-12 A (+196d) |  | 0% → 100% | 3d → none |  | resources Steel [28 M3] → Concrete Barrier [123887 m] |
| B2-UPHL-2ndP002 | MEP Ceiling Closure Clearance | 2016-09-26 → 2017-02-09 A (+136d) | 2016-10-04 → 2017-03-19 A (+166d) |  | 0% → 100% | 3d → none | RM-SA-001, B12-UPPR-C9 → B2-UPHL-C001, RM-SA-001 | resources none → Concrete Barrier |
| B2-UPHL-C002 | Ceiling Closure | 2016-10-05 → 2017-03-20 A (+166d) | 2016-10-29 → 2017-04-14 A (+167d) | 21d → 21.44d | 0% → 100% | 3d → none |  | resources Steel [46 M3] → Concrete Barrier [405007 m] |
| B2-UPHL-C006 | Installation of Wooden wall panelling | 2016-11-23 → 2017-04-02 A (+130d) | 2016-12-10 → 2017-08-23 A (+256d) | 14d → 14.28d | 0% → 100% | 26d → none |  | resources Steel [70 M3] → Concrete Barrier [259897 m] |
| B2-UPHL-3rdP003 | Flooring (by others) | 2016-11-09 → 2017-04-09 A (+151d) | 2016-11-20 → 2017-08-10 A (+263d) |  | 0% → 100% | 1d → none |  | resources none → Concrete Barrier [68513 m] |
| B2-UPHL-C007 | Installation of Metal panelling | 2016-11-24 → 2017-05-01 A (+158d) | 2016-12-12 → 2018-02-01 A (+416d) | 14d → 13.94d | 0% → 100% | 18d → none |  | resources Steel [127 M3] → Concrete Barrier [72888 m] |
| B2-UPHL-C003 | Installation of Wall Tiling | 2016-11-01 → 2017-05-09 A (+189d) | 2016-11-08 → 2017-11-25 A (+382d) | 7d → 6.89d | 0% → 100% | 1d → none |  | resources Steel [16 M3] → Concrete Barrier [166852 m] |
| B2-UPHL-C011 | Installation of Doors & Ironmongery | 2016-12-13 → 2017-09-09 A (+270d) | 2016-12-20 → 2017-12-10 A (+355d) |  | 0% → 100% | 37d → none |  | resources Steel [21 M3] → Concrete Barrier [44144 m] |
| B2-UPHL-C008 | Installation of Joinery Works | 2016-11-24 → 2017-09-11 A (+291d) | 2016-12-12 → 2018-03-01 A (+444d) | 14d → 13.94d | 0% → 100% | 25d → none |  | resources Steel [27 M3] → Concrete Barrier [97350 m] |
| B2-UPHL-C009 | Installation of Mirror | 2016-12-21 → 2017-09-20 A (+273d) | 2016-12-26 → 2017-12-20 A (+359d) | 5d → 4.94d | 0% → 100% | 18d → none |  | resources Steel [4 M3] → Concrete Barrier [148832 m] |
| B2-UPHL-C004 | 1st Coat of Paint | 2016-11-21 → 2017-11-06 A (+350d) | 2016-12-27 → 2017-12-19 A (+357d) |  | 0% → 100% | 1d → none |  | resources Steel [41 M3] → Concrete Barrier [20244 m] |
| B2-UPHL-C014 | Final Coat of Paint | 2016-12-28 → 2017-12-28 A (+365d) | 2017-01-31 → 2018-03-03 A (+396d) |  | 0% → 100% | 1d → none |  | resources none → Concrete Barrier [20244 m] |
| B2-UPHL-C005 | Installation of Metal Skirting | 2016-12-13 → 2018-01-13 A (+396d) | 2016-12-20 → 2018-02-05 A (+412d) | 7d → 7.06d | 0% → 100% | 18d → none |  | resources Steel [2 M3] → Concrete Barrier [22888 m] |
| B2-UPHL-C010 | Installation of Light Fittings | 2016-12-27 → 2018-01-23 A (+392d) | 2017-01-11 → 2018-02-20 A (+405d) |  | 0% → 100% | 18d → none |  | resources Steel [49 M3] → Concrete Barrier [49738 m] |
| B2-UPHL-C012 | FF&E | 2017-02-01 → 2018-02-18 A (+382d) | 2017-02-06 → 2018-03-07 A (+394d) |  | 0% → 100% | 1d → none |  | resources Steel [14 M3] → Concrete Barrier [66854 m] |
| B2-UPHL-S13 | Snagging and De-Snagging | 2017-02-07 → 2018-04-26 (+443d) | 2017-02-14 → 2018-05-03 (+443d) |  |  | 1d → -379d |  | resources Steel [14 M3] → Concrete Barrier |
| 2 | **Bill 3-UP-HOTEL RECEPTION** | 2016-08-14 → 2016-08-19 (+5d) | 2017-02-08 → 2018-05-03 (+449d) |  |  |  |  |  |
| B3-UPHR-1stP001 | MEP 1st , 2nd Fix and Wall System | 2016-08-14 → 2016-08-19 A (+5d) | 2016-08-14 → 2016-08-19 A (+5d) |  | 0% → 100% | 6d → none |  |  |
| B3-UPHR-C021 | Clearance process for Measurements , Framing&Enabling Works | 2016-08-14 → 2016-08-20 A (+6d) | 2016-08-18 → 2016-08-29 A (+11d) |  | 0% → 100% | 6d → none |  | resources none → Concrete Barrier |
| B3-UPHR-C003 | Paint Works | 2016-12-10 → 2016-08-29 A (-103d) | 2017-01-14 → 2018-01-20 A (+371d) |  | 0% → 100% | 6d → none |  | resources Steel [21 M3] → Concrete Barrier [7357 m] |
| B3-UPHR-C031 | Measurements , Framing & Enabling Works | 2016-08-20 → 2016-08-30 A (+10d) | 2016-09-04 → 2016-09-18 A (+14d) | 14d → 13.94d | 0% → 100% | 6d → none |  | resources none → Concrete Barrier [2000 m] |
| B3-UPHR-C001 | Installation of Celling System | 2016-09-05 → 2017-04-04 A (+211d) | 2016-10-11 → 2017-06-10 A (+242d) |  | 0% → 100% | 6d → none |  | resources Steel [11 M3] → Concrete Barrier [34834 m] |
| B3-UPHR-C002 | Ceiling Closure | 2016-10-20 → 2017-04-17 A (+179d) | 2016-11-21 → 2017-08-13 A (+265d) |  | 0% → 100% | 6d → none |  | resources Steel [11 M3] → Concrete Barrier [36843 m] |
| B3-UPHR-2ndP002 | MEP Ceiling Closure Clearance | 2016-10-12 → 2017-04-25 A (+195d) | 2016-10-19 → 2017-07-26 A (+280d) |  | 0% → 100% | 6d → none |  | resources none → Concrete Barrier |
| B3-UPHR-C007 | Installation of Metal panelling | 2016-12-14 → 2017-05-02 A (+139d) | 2016-12-29 → 2018-03-01 A (+427d) |  | 0% → 100% | 13d → none |  | resources Steel [8 M3] → Concrete Barrier [12100 m] |
| B3-UPHR-3rdP003 | Flooring (by others) | 2016-11-22 → 2017-07-31 A (+251d) | 2016-12-08 → 2017-08-12 A (+247d) | 14d → 13.94d | 0% → 100% | 6d → none |  | resources none → Concrete Barrier |
| B3-UPHR-C008 | Installation of Joinery Works | 2016-12-14 → 2017-09-18 A (+278d) | 2017-01-07 → 2018-02-03 A (+392d) | 21d → 21.06d | 0% → 100% | 6d → none |  | resources Steel [9 M3] → Concrete Barrier [11022 m] |
| B3-UPHR-C004 | Installation of Metal Skirting | 2016-12-31 → 2018-01-28 A (+393d) | 2017-01-07 → 2018-02-19 A (+408d) | 7d → 6.94d | 0% → 100% | 20d → none |  | resources Steel [9 M3] → Concrete Barrier [7921 m] |
| B3-UPHR-C011 | FF&E | 2017-01-24 → 2018-02-11 A (+383d) | 2017-01-31 → 2018-02-14 A (+379d) |  | 0% → 100% | 6d → none |  | resources Steel [14 M3] → Concrete Barrier [426 m] |
| B3-UPHR-C010 | Installation of Light Fittings | 2017-01-08 → 2018-02-17 A (+405d) | 2017-01-23 → 2018-03-01 A (+402d) | 14d → 13.94d | 0% → 100% | 6d → none |  | resources Steel [15 M3] → Concrete Barrier [5278 m] |

| ID | Task | Start | Finish | Duration | Complete | Total float | Other |
| --- | --- | --- | --- | --- | --- | --- | --- |
| B3-UPHR-S012 | Snagging and De-Snagging | 2017-02-01 → 2018-04-26 (+449d) | 2017-02-08 → 2018-05-03 (+449d) |  |  | 6d → -379d | resources Steel [14 M3] → Concrete Barrier |
| 3 | **Bill 4-UP-VIP PROTOCOL** | 2016-07-05 → 2016-07-03 (-2d) | 2017-01-22 → 2018-05-13 (+476d) |  |  |  |  |
| B4-UPVP-1stP001 | MEP 1st , 2nd Fix and Wall System | 2016-07-05 → 2016-07-03 A (-2d) | 2016-07-05 → 2016-07-03 A (-2d) |  | 0% → 100% | 23d → none |  |
| B4-UPVP-C021 | Clearance process for Measurements , Framing&Enabling Works | 2016-07-05 → 2016-07-04 A (-1d) | 2016-07-12 → 2016-10-01 A (+81d) |  | 0% → 100% | 23d → none | resources none → Concrete Barrier |
| B4-UPVP-C001 | Installation of Celling System | 2016-07-30 → 2016-09-18 A (+50d) | 2016-08-22 → 2016-12-19 A (+119d) |  | 0% → 100% | 23d → none | resources Steel [7 M3] → Concrete Barrier [8760 m] |
| B4-UPVP-C031 | Measurements , Framing & Enabling Works | 2016-07-13 → 2016-10-02 A (+81d) | 2016-07-28 → 2016-10-25 A (+89d) | 14d → 13.94d | 0% → 100% | 23d → none | resources none → Concrete Barrier [2000 m] |
| B4-UPVP-C003 | 1st Coat of Paint | 2016-09-28 → 2016-10-10 A (+12d) | 2016-11-02 → 2017-11-16 A (+379d) | 30d → 29.94d | 0% → 100% | 23d → none | resources Steel [14 M3] → Concrete Barrier [5272 m] |
| B4-UPVP-C007 | Installation of Wall Covering | 2016-11-15 → 2016-12-20 A (+35d) | 2016-12-03 → 2018-01-06 A (+399d) | 14d → 13.94d | 0% → 100% | 42.2d → none | resources Steel [6 M3] → Concrete Barrier [3668 m] |
| B4-UPVP-2ndP002 | MEP Ceiling Closure Clearance | 2016-08-23 → 2017-03-05 A (+194d) | 2016-08-30 → 2017-03-16 A (+198d) |  | 0% → 100% | 23d → none | resources none → Concrete Barrier |
| B4-UPVP-C002 | Ceiling Closure | 2016-08-31 → 2017-04-04 A (+216d) | 2016-09-27 → 2017-05-27 A (+242d) |  | 0% → 100% | 23d → none | resources Steel [7 M3] → Concrete Barrier [8760 m] |
| B4-UPVP-C004 | Installation of Wooden wall panelling | 2016-10-03 → 2017-04-05 A (+184d) | 2016-10-26 → 2017-08-19 A (+297d) |  | 0% → 100% | 24d → none | resources Steel [10 M3] → Concrete Barrier [5621 m] |
| B4-UPVP-C009 | Installation of Mirror | 2016-12-19 → 2017-06-28 A (+191d) | 2017-01-03 → 2017-07-27 A (+205d) |  | 0% → 100% | 23d → none | resources Steel [4 M3] → Concrete Barrier [6220 m] |
| B4-UPVP-C006 | Installation of Joinery Works | 2016-11-15 → 2017-08-27 A (+285d) | 2016-12-03 → 2017-10-14 A (+315d) | 14d → 14.06d | 0% → 100% | 21.2d → none | resources Steel [10 M3] → Concrete Barrier [7888 m] |
| B4-UPVP-C011 | Installation of Doors & Ironmongery | 2016-12-10 → 2017-09-13 A (+277d) | 2016-12-18 → 2017-11-20 A (+337d) |  | 0% → 100% | 23d → none | resources Steel [6 M3] → Concrete Barrier [5216 m] |
| B4-UPVP-C005 | Installation of Timber Flooring | 2016-10-30 → 2017-09-21 A (+326d) | 2016-11-15 → 2017-10-05 A (+324d) | 14d → 14.06d | 0% → 100% | 21.2d → none | resources Steel [15 M3] → Concrete Barrier [17074 m] |
| B4-UPVP-C008 | Installation of Glazing Works | 2016-12-03 → 2017-10-17 A (+318d) | 2016-12-28 → 2017-12-02 A (+339d) | 21d → 21.11d | 0% → 100% | 21.2d → none | resources Steel [10 M3] → Concrete Barrier [2000 m] |
| B4-UPVP-C013 | Fianl Coat of Paint | 2016-11-03 → 2017-12-28 A (+420d) | 2016-12-08 → 2018-01-22 A (+410d) |  | 0% → 100% | 23d → none | resources none → Concrete Barrier [5272 m] |
| B4-UPVP-C010 | Installation of Light Fittings | 2016-11-15 → 2018-01-18 A (+429d) | 2016-12-03 → 2018-01-23 A (+416d) | 14d → 14.06d | 0% → 100% | 49.2d → none | resources Steel [10 M3] → Concrete Barrier [1200 m] |
| B4-UPVP-C012 | FF&E | 2016-12-28 → 2018-02-01 A (+400d) | 2017-01-05 → 2018-02-08 A (+399d) | 7d → 6.94d | 0% → 100% | 21.2d → none | resources Steel [6 M3] → Concrete Barrier [3500 m] |
| B4-UPVP-S013 | Snagging and De-Snagging | 2017-01-05 → 2018-04-26 (+476d) | 2017-01-22 → 2018-05-13 (+476d) | 14d → 14.06d |  | 21.2d → -386.06d | resources Steel [14 M3] → Concrete Barrier |
| 4 | **Bill 5-UP-SAFE DEPOSIT** | 2016-08-07 → 2016-09-25 (+49d) | 2017-02-14 → 2018-05-03 (+443d) |  |  |  |  |
| B5-UPSD-1stP001 | MEP 1st , 2nd Fix and Wall System | 2016-08-07 → 2016-09-25 A (+49d) | 2016-08-07 → 2016-09-25 A (+49d) |  | 0% → 100% | 1d → none |  |
| B5-UPSD-C011 | Clearance process for Measurements , Framing&Enabling Works | 2016-08-07 → 2016-09-25 A (+49d) | 2016-08-11 → 2016-09-26 A (+46d) | 5d → 4.94d | 0% → 100% | 1d → none | resources none → Concrete Barrier |
| B5-UPSD-C021 | Measurements , Framing & Enabling Works | 2016-08-13 → 2016-09-27 A (+45d) | 2016-08-28 → 2016-12-15 A (+109d) |  | 0% → 100% | 1d → none | resources none → Concrete Barrier [2000 m] |
| B5-UPSD-C001 | Installation of Celling System | 2016-08-29 → 2016-09-28 A (+30d) | 2016-09-25 → 2016-12-15 A (+81d) |  | 0% → 100% | 1d → none | resources Steel [10 M3] → Concrete Barrier [5926 m] |
| B5-UPSD-C003 | 1st Coat of Paint | 2016-11-07 → 2016-10-10 A (-28d) | 2016-12-13 → 2017-11-25 A (+347d) |  | 0% → 100% | 1d → none | resources Steel [28 M3] → Concrete Barrier [581 m] |
| B5-UPSD-2ndP002 | MEP Ceiling Closure Clearance | 2016-09-26 → 2017-01-18 A (+114d) | 2016-10-04 → 2017-01-26 A (+114d) |  | 0% → 100% | 1d → none | resources none → Concrete Barrier |
| B5-UPSD-C002 | Ceiling Closure | 2016-10-05 → 2017-01-29 A (+116d) | 2016-10-29 → 2017-04-09 A (+162d) |  | 0% → 100% | 1d → none | resources Steel [10 M3] → Concrete Barrier [5926 m] |
| B5-UPSD-C004 | Installation of Wooden wall panelling | 2016-11-07 → 2017-05-09 A (+183d) | 2016-11-22 → 2017-09-23 A (+305d) |  | 0% → 100% | 40d → none | resources Steel [6 M3] → Concrete Barrier [9198 m] |
| B5-UPSD-C005 | Installation of Joinery Works | 2016-12-22 → 2017-07-02 A (+192d) | 2017-01-07 → 2017-10-11 A (+277d) |  | 0% → 100% | 24d → none | resources Steel [6 M3] → Concrete Barrier [9572 m] |
| B5-UPSD-3rdP003 | Flooring (by others) | 2016-10-30 → 2017-07-12 A (+255d) | 2016-11-06 → 2017-08-05 A (+272d) |  | 0% → 100% | 1d → none | resources none → Concrete Barrier |
| B5-UPSD-C007 | Installation of Doors & Ironmongery | 2016-12-14 → 2017-08-29 A (+258d) | 2016-12-21 → 2017-10-17 A (+300d) | 7d → 6.89d | 0% → 100% | 24d → none | resources Steel [6 M3] → Concrete Barrier [5642 m] |
| B5-UPSD-C013 | Fianl Coat of Paint | 2016-12-31 → 2017-12-09 A (+343d) | 2017-02-02 → 2018-02-05 A (+368d) |  | 0% → 100% | 1d → none | resources none → Concrete Barrier [581 m] |
| B5-UPSD-C006 | Installation of Light Fittings | 2016-12-14 → 2018-02-01 A (+414d) | 2016-12-29 → 2018-02-26 A (+424d) | 14d → 14.11d | 0% → 100% | 1d → none | resources Steel [6 M3] → Concrete Barrier [414 m] |
| B5-UPSD-C008 | FF&E | 2017-02-04 → 2018-02-11 A (+372d) | 2017-02-06 → 2018-02-14 A (+373d) | 3d → 2.94d | 0% → 100% | 1d → none | resources Steel [6 M3] → Concrete Barrier [269 m] |
| B5-UPSD-S009 | Snagging and De-Snagging | 2017-02-07 → 2018-04-26 (+443d) | 2017-02-14 → 2018-05-03 (+443d) |  |  | 1d → -379d | resources Steel [10 M3] → Concrete Barrier |
| 5 | **Bill 6-UP-HOTEL LIFT LOBBY** | 2016-08-21 → 2016-10-01 (+41d) | 2017-02-04 → 2018-05-13 (+463d) |  |  |  |  |
| B5-UPSD-C21 | Clearance process for Measurements , Framing&Enabling Works | 2016-08-21 → 2016-10-01 A (+41d) | 2016-08-25 → 2016-10-03 A (+39d) |  | 0% → 100% | 10d → none | resources none → Concrete Barrier |
| B6-UPHLL-1stP001 | MEP 1st , 2nd Fix and Wall System | 2016-08-21 → 2016-10-01 A (+41d) | 2016-08-21 → 2016-10-01 A (+41d) |  | 0% → 100% | 10d → none |  |
| B5-UPSD-C31 | Measurements , Framing & Enabling Works | 2016-08-27 → 2016-10-04 A (+38d) | 2016-09-14 → 2017-03-01 A (+168d) |  | 0% → 100% | 10d → none | resources none → Concrete Barrier [2000 m] |
| B6-UPHLL-C001 | Installation of Celling System | 2016-09-15 → 2016-10-22 A (+37d) | 2016-10-18 → 2017-03-16 A (+149d) | 28d → 27.94d | 0% → 100% | 10d → none | resources Steel [10 M3] → Concrete Barrier [5411 m] |
| B6-UPHLL-3rdP003 | Flooring (by others) | 2016-10-27 → 2017-01-04 A (+69d) | 2016-11-12 → 2017-01-11 A (+60d) |  | 0% → 100% | 10d → none | resources none → Concrete Barrier |
| B6-UPHLL-C002 | Ceiling Closure | 2016-11-13 → 2017-04-11 A (+149d) | 2016-12-17 → 2017-05-15 A (+149d) |  | 0% → 100% | 10d → none | resources Steel [10 M3] → Concrete Barrier [5411 m] |
| B6-UPHLL-2ndP002 | MEP Ceiling Closure Clearance | 2016-10-19 → 2017-05-04 A (+197d) | 2016-10-26 → 2017-05-06 A (+192d) |  | 0% → 100% | 10d → none | resources none → Concrete Barrier |
| B6-UPHLL-C004 | Installation of Mirror | 2017-01-03 → 2017-09-21 A (+261d) | 2017-01-10 → 2017-10-12 A (+275d) |  | 0% → 100% | 10d → none | resources Steel [4 M3] → Concrete Barrier [5384 m] |
| B6-UPHLL-C003 | Installation of Light Fittings | 2016-12-18 → 2018-01-18 A (+396d) | 2017-01-02 → 2018-02-24 A (+418d) | 14d → 13.94d | 0% → 100% | 10d → none | resources Steel [6 M3] → Concrete Barrier [2208 m] |
| B6-UPHLL-C005 | FF&E | 2017-01-11 → 2018-02-10 A (+395d) | 2017-01-18 → 2018-02-14 A (+392d) | 7d → 7.11d | 0% → 100% | 10d → none | resources Steel [4 M3] → Concrete Barrier [33177 m] |
| B6-UPHLL-S006 | Snagging and De-Snagging | 2017-01-19 → 2018-04-26 (+462d) | 2017-02-04 → 2018-05-13 (+463d) | 14d → 14.11d |  | 10d → -386.11d | resources Steel [6 M3] → Concrete Barrier |
| 6 | **Bill 7-UP-RESIDENCE'S LIFT LOBBY** | 2016-07-24 → 2016-10-01 (+69d) | 2017-01-30 → 2018-05-13 (+468d) |  |  |  |  |
| B7-UPRLL-1stP001 | MEP 1st , 2nd Fix and Wall System | 2016-07-24 → 2016-10-01 A (+69d) | 2016-07-24 → 2016-10-01 A (+69d) |  | 0% → 100% | 15d → none |  |
| B5-UPSD-C41 | Clearance process for Measurements , Framing&Enabling Works | 2016-07-24 → 2016-10-02 A (+70d) | 2016-07-28 → 2016-10-03 A (+67d) |  | 0% → 100% | 15d → none | resources none → Concrete Barrier |
| B5-UPSD-C51 | Measurements , Framing & Enabling Works | 2016-07-30 → 2016-10-04 A (+66d) | 2016-08-14 → 2017-03-26 A (+224d) |  | 0% → 100% | 15d → none | resources none → Concrete Barrier [2000 m] |
| B7-UPRLL-C001 | Installation of Celling System | 2016-08-15 → 2016-12-20 A (+127d) | 2016-09-19 → 2017-02-09 A (+143d) |  | 0% → 100% | 15d → none | resources Steel [35 M3] → Concrete Barrier [23069 m] |
| B7-UPRLL-2ndP002 | MEP Ceiling Closure Clearance | 2016-09-20 → 2017-02-08 A (+141d) | 2016-09-27 → 2017-02-25 A (+151d) |  | 0% → 100% | 15d → none | resources none → Concrete Barrier |
| B7-UPRLL-C002 | Ceiling Closure | 2016-09-28 → 2017-02-26 A (+151d) | 2016-10-31 → 2017-04-18 A (+169d) |  | 0% → 100% | 15d → none | resources Steel [14 M3] → Concrete Barrier [23069 m] |
| B7-UPRLL-3rdP003 | Flooring (by others) | 2016-11-01 → 2017-03-02 A (+121d) | 2016-11-08 → 2017-03-25 A (+137d) |  | 0% → 100% | 32d → none | resources none → Concrete Barrier |
| B7-UPRLL-C004 | Installation of Wooden wall panelling | 2016-11-01 → 2017-04-19 A (+169d) | 2016-11-24 → 2017-08-12 A (+261d) |  | 0% → 100% | 34d → none | resources Steel [50 M3] → Concrete Barrier [122682 m] |
| B7-UPRLL-C012 | 1st Coat of Paint | 2016-10-31 → 2017-05-01 A (+182d) | 2016-11-30 → 2017-08-31 A (+274d) |  | 0% → 100% | 18.64d → none | resources none → Concrete Barrier [3507 m] |
| B7-UPRLL-C005 | Installation of Steel wall panelling | 2016-12-01 → 2017-09-21 A (+294d) | 2016-12-19 → 2017-10-12 A (+297d) | 15d → 15.11d | 0% → 100% | 15d → none | resources Steel [50 M3] → Concrete Barrier [237202 m] |
| B7-UPRLL-C006 | Apply of Sibu Finish | 2016-12-01 → 2017-10-05 A (+308d) | 2016-12-19 → 2017-12-18 A (+364d) | 15d → 15.11d | 0% → 100% | 15d → none | resources Steel [40 M3] → Concrete Barrier [169359 m] |
| B7-UPRLL-C003 | Final Coat of Paint | 2016-12-01 → 2017-12-28 A (+392d) | 2017-01-05 → 2018-01-22 A (+382d) |  | 0% → 100% | 14d → none | resources Steel [31 M3] → Concrete Barrier [3507 m] |
| B7-UPRLL-C007 | Installation of Light Fittings | 2016-12-20 → 2018-01-18 A (+394d) | 2017-01-12 → 2018-02-27 A (+411d) |  | 0% → 100% | 15d → none | resources Steel [15 M3] → Concrete Barrier [2196 m] |
| B7-UPRLL-C008 | FF&E | 2017-01-07 → 2018-02-08 A (+397d) | 2017-01-14 → 2018-02-15 A (+397d) |  | 0% → 100% | 14d → none | resources Steel [6 M3] → Concrete Barrier [2000 m] |
| B7-UPRLL-S009 | Snagging and De-Snagging | 2017-01-15 → 2018-04-26 (+466d) | 2017-01-30 → 2018-05-13 (+468d) | 14d → 14.11d |  | 14d → -386.11d | resources Steel [10 M3] → Concrete Barrier |
| 7 | **Bill 8-UP-FRONT OFFICE** | 2016-07-31 → 2016-09-25 (+56d) | 2017-01-30 → 2018-05-03 (+458d) |  |  |  |  |
| B8-UPFO-1stP001 | MEP 1st , 2nd Fix and Wall System | 2016-07-31 → 2016-09-25 A (+56d) | 2016-07-31 → 2016-09-25 A (+56d) |  | 0% → 100% | 14d → none |  |
| B5-UPSD-C61 | Clearance process for Measurements , Framing&Enabling Works | 2016-07-31 → 2016-09-26 A (+57d) | 2016-08-04 → 2016-10-03 A (+60d) | 5d → 4.94d | 0% → 100% | 14d → none | resources none → Concrete Barrier |
| B8-UPFO-C001 | Installation of Celling System | 2016-08-22 → 2016-09-27 A (+36d) | 2016-09-18 → 2016-12-15 A (+88d) |  | 0% → 100% | 14d → none | resources Steel [10 M3] → Concrete Barrier [19324 m] |
| B5-UPSD-C71 | Measurements , Framing & Enabling Works | 2016-08-06 → 2016-10-04 A (+59d) | 2016-08-21 → 2016-10-25 A (+65d) |  | 0% → 100% | 14d → none | resources none → Concrete Barrier [2000 m] |
| B8-UPFO-C003 | 1st Coat of Paint | 2016-10-23 → 2016-10-10 A (-13d) | 2016-11-26 → 2017-07-16 A (+232d) |  | 0% → 100% | 14d → none | resources Steel [14 M3] → Concrete Barrier [1647 m] |

| ID | Task | Start | Finish | Duration | Complete | Total float | Predecessors | Other |
| --- | --- | --- | --- | --- | --- | --- | --- | --- |
| B8-UPFO-2ndP002 | MEP Ceiling Closure Clearance | 2016-09-19 → 2017-02-07 A (+141d) | 2016-09-26 → 2017-02-22 A (+149d) |  | 0% → 100% | 14d → none |  | resources none → Concrete Barrier |
| B8-UPFO-C002 | Ceiling Closure | 2016-09-27 → 2017-02-23 A (+149d) | 2016-10-22 → 2017-05-17 A (+207d) |  | 0% → 100% | 14d → none |  | resources Steel [10 M3] → Concrete Barrier [19324 m] |
| B8-UPFO-C004 | Installation of Doors & Ironmongery | 2016-11-27 → 2017-06-27 A (+212d) | 2016-12-05 → 2017-10-17 A (+316d) |  | 0% → 100% | 14d → none |  | resources Steel [4 M3] → Concrete Barrier [5786 m] |
| B8-UPFO-C014 | Installation of Joinery Works | 2016-12-06 → 2017-07-01 A (+207d) | 2016-12-22 → 2017-08-16 A (+237d) | 14d → 14.06d | 0% → 100% | 30d → none |  | resources Steel [10 M3] → Concrete Barrier [2025 m] |
| B8-UPFO-C005 | Installation of Carpet | 2017-01-11 → 2017-09-18 A (+250d) | 2017-01-18 → 2017-11-23 A (+309d) | 7d → 7.06d | 0% → 100% | 14d → none |  | resources Steel [6 M3] → Concrete Barrier [37100 m] |
| B8-UPFO-C013 | Final Coat of Paint | 2016-12-06 → 2017-12-28 A (+387d) | 2017-01-10 → 2018-02-05 A (+391d) |  | 0% → 100% | 14d → none |  | resources Steel [24.55 M3] → Concrete Barrier [1647 m] |
| B8-UPFO-C006 | FF&E | 2017-01-19 → 2018-02-08 A (+385d) | 2017-01-22 → 2018-02-12 A (+386d) | 3d → 3.11d | 0% → 100% | 14d → none |  | resources Steel [4 M3] → Concrete Barrier [2000 m] |
| B8-UPFO-S007 | Snagging and De-Snagging | 2017-01-23 → 2018-04-26 (+458d) | 2017-01-30 → 2018-05-03 (+458d) | 7d → 6.94d |  | 14d → -378.94d |  | resources Steel [10 M3] → Concrete Barrier |
| 8 | **Bill 9-UP-CHOCOLATE BOUTIQUE** | 2016-07-17 → 2017-08-17 (+396d) | 2017-02-12 → 2018-07-23 (+526d) |  |  |  |  |  |
| B5-UPSD-C81 | Clearance process for Measurements , Framing&Enabling Works | 2016-07-17 → 2017-08-17 A (+396d) | 2016-07-21 → 2017-08-20 A (+395d) |  | 0% → 100% | 40d → none |  | resources none → Concrete Barrier |
| B9-UPCB-1stP001 | MEP 1st , 2nd Fix and Wall System | 2016-07-17 → 2017-08-17 A (+396d) | 2016-07-17 → 2017-08-17 A (+396d) |  | 0% → 100% | 40d → none |  |  |
| B5-UPSD-C91 | Measurements , Framing & Enabling Works | 2016-07-23 → 2017-08-19 A (+392d) | 2016-08-07 → 2017-10-09 A (+428d) |  | 0% → 100% | 40d → none |  | resources none → Concrete Barrier [2000 m] |
| B9-UPCB-2ndP002 | MEP Ceiling Closure Clearance | 2016-09-01 → 2017-09-10 A (+374d) | 2016-09-08 → 2017-09-10 A (+367d) |  | 0% → 100% | 40d → none |  | resources none → Concrete Barrier |
| B9-UPCB-C008 | Installation of Joinery Works | 2016-12-28 → 2017-10-09 A (+285d) | 2017-01-14 → 2018-06-11 (+513d) |  | 0% → 85% | 17.7d → -422.62d |  | resources Steel [20 M3] → Concrete Barrier [32170 m] |
| B9-UPCB-C001 | Installation of Celling System | 2016-08-08 → 2017-12-14 A (+493d) | 2016-08-31 → 2018-01-21 A (+508d) |  | 0% → 100% | 40d → none |  | resources Steel [14 M3] → Concrete Barrier [5978 m] |
| B9-UPCB-C002 | Ceiling Closure | 2016-09-10 → 2018-03-22 A (+558d) | 2016-10-08 → 2018-04-01 A (+540d) |  | 0% → 100% | 40d → none |  | resources Steel [14 M3] → Concrete Barrier [29672 m] |
| B9-UPCB-C003 | Installation of Wall Tiling | 2016-10-13 → 2018-04-26 (+560d) | 2016-10-25 → 2018-05-07 (+559d) | 10d → 9.89d |  | 43.8d → -433.22d |  | resources Steel [10 M3] → Concrete Barrier [1400 m] |
| B9-UPCB-C007 | Installation of Metal panelling | 2016-11-20 → 2018-05-05 (+531d) | 2016-12-07 → 2018-05-20 (+529d) | 14d → 13.78d |  | 3.7d → -447.89d |  | resources Steel [35 M3] → Concrete Barrier [43415 m] |
| B9-UPCB-3rdP003 | Flooring (by others) | 2016-10-25 → 2018-05-07 (+559d) | 2016-11-06 → 2018-05-19 (+559d) |  |  | 43.8d → -433.22d |  | resources none → Concrete Barrier |
| B9-UPCB-C014 | Apply of Sibu Finish | 2016-11-06 → 2018-05-19 (+559d) | 2016-11-22 → 2018-06-04 (+559d) | 14d → 13.78d |  | 64.8d → -412.67d |  | resources Steel [56 M3] → Concrete Barrier [74024 m] |
| B9-UPCB-C005 | Installation of Metal Skirting | 2016-12-07 → 2018-05-20 (+529d) | 2016-12-12 → 2018-05-23 (+527d) |  |  | 45.7d → -406.78d |  | resources Steel [6 M3] → Concrete Barrier [495 m] |
| B9-UPCB-C013 | Aluminium Works | 2016-12-07 → 2018-05-20 (+529d) | 2016-12-25 → 2018-06-05 (+527d) | 14d → 13.78d |  | 3.7d → -447.89d |  | resources Steel [14 M3] → Concrete Barrier [7920 m] |
| B9-UPCB-C004 | Paint Works | 2016-12-25 → 2018-06-05 (+527d) | 2017-01-18 → 2018-06-30 (+528d) | 21d → 20.56d |  | 3.7d → -447.89d |  | resources Steel [20 M3] → Concrete Barrier [8904 m] |
| B9-UPCB-C006 | Installation of Wooden wall panelling | 2016-12-25 → 2018-06-05 (+527d) | 2017-01-10 → 2018-06-21 (+527d) | 14d → 13.67d |  | 20.7d → -431.22d |  | resources Steel [8 M3] → Concrete Barrier [2000 m] |
| B9-UPCB-C011 | Installation of Doors & Ironmongery | 2017-01-14 → 2018-06-11 (+513d) | 2017-01-16 → 2018-06-13 (+513d) |  |  | 19.7d → -420.62d |  | resources Steel [4 M3] → Concrete Barrier [5176 m] |
| B9-UPCB-C009 | Installation of Mirror | 2017-01-14 → 2018-06-21 (+523d) | 2017-01-16 → 2018-06-24 (+524d) |  |  | 17.7d → -431.22d |  | resources Steel [4 M3] → Concrete Barrier [2000 m] |
| B9-UPCB-C010 | Installation of Light Fittings | 2017-01-18 → 2018-06-30 (+528d) | 2017-02-04 → 2018-07-15 (+526d) | 14d → 13.78d |  | 3.7d → -447.89d |  | resources Steel [20 M3] → Concrete Barrier [1872 m] |
| B9-UPCB-C012 | FF&E | 2017-01-18 → 2018-06-30 (+528d) | 2017-01-21 → 2018-07-02 (+527d) |  |  | 15.7d → -436.11d |  | resources Steel [4 M3] → Concrete Barrier [7084 m] |
| B9-UPCB-S13 | Snagging and De-Snagging | 2017-02-04 → 2018-07-15 (+526d) | 2017-02-12 → 2018-07-23 (+526d) |  |  | 3.7d → -447.89d |  | resources Steel [10 M3] → Concrete Barrier |
| 9 | **Bill 10-UP-RETAIL** | 2016-07-31 → 2016-10-09 (+70d) | 2017-02-02 → 2018-05-05 (+457d) |  |  |  |  |  |
| B10-UPRT-1stP001 | MEP 1st , 2nd Fix and Wall System | 2016-07-31 → 2016-10-09 A (+70d) | 2016-07-31 → 2016-10-09 A (+70d) |  | 0% → 100% | 14d → none |  |  |
| B10-UPRT-C001 | Paint Works | 2016-10-31 → 2016-10-10 A (-21d) | 2016-12-05 → 2017-09-25 A (+294d) | 30d → 29.94d | 0% → 100% | 11d → none |  | resources Steel [34 M3] → Concrete Barrier [22179 m] |
| B10-UPRT-3rdP003 | Flooring (by others) | 2016-09-04 → 2016-12-19 A (+106d) | 2016-10-01 → 2017-01-19 A (+110d) |  | 0% → 100% | 11d → none |  | resources none → Concrete Barrier |
| B5-UPSD-C101 | Clearance process for Measurements , Framing&Enabling Works | 2016-10-03 → 2016-12-19 A (+77d) | 2016-10-08 → 2017-01-22 A (+106d) |  | 0% → 100% | 11d → none | B10-UPRT-3rdP003 → B10-UPRT-3rdP003, B10-UPRT-1stP001 | resources none → Concrete Barrier [5000 m] |
| B5-UPSD-C111 | Measurements , Framing & Enabling Works | 2016-10-09 → 2017-01-22 A (+105d) | 2016-10-24 → 2017-01-25 A (+93d) | 14d → 13.99d | 0% → 100% | 11d → none |  | resources none → Concrete Barrier [5502 m] |
| B10-UPRT-3rdP013 | Celling System | 2016-07-31 → 2017-01-24 A (+177d) | 2016-09-04 → 2017-07-21 A (+320d) |  | 0% → 100% | 16d → none |  | resources none → Concrete Barrier [15000 m] |
| B10-UPRT-C002 | Installation of Wall Tiling | 2016-10-25 → 2017-08-19 A (+298d) | 2016-11-26 → 2017-08-24 A (+271d) | 28d → 27.94d | 0% → 100% | 11d → none |  | resources Steel [20 M3] → Concrete Barrier [8508 m] |
| B10-UPRT-C004 | Aluminium Works | 2016-12-06 → 2017-12-07 A (+366d) | 2016-12-31 → 2018-03-10 A (+434d) |  | 0% → 100% | 11d → none |  | resources Steel [20 M3] → Concrete Barrier [7196 m] |
| B10-UPRT-C005 | Installation of Glazing Works | 2016-11-27 → 2017-12-26 A (+394d) | 2016-12-22 → 2018-03-12 A (+445d) | 21d → 21.06d | 0% → 100% | 33d → none |  | resources Steel [20 M3] → Concrete Barrier [12000 m] |
| B10-UPRT-C006 | FF&E | 2017-01-18 → 2018-02-11 A (+389d) | 2017-01-25 → 2018-03-13 A (+412d) |  | 0% → 100% | 11d → none |  | resources Steel [8 M3] → Concrete Barrier [2348 m] |
| B10-UPRT-C003 | Installation of Light Fittings | 2017-01-01 → 2018-03-04 A (+427d) | 2017-01-17 → 2018-03-13 A (+420d) |  | 0% → 100% | 11d → none |  | resources Steel [20 M3] → Concrete Barrier [6500 m] |
| B10-UPRT-S007 | Snagging and De-Snagging | 2017-01-26 → 2018-04-26 (+455d) | 2017-02-02 → 2018-05-05 (+457d) | 7d → 7.06d |  | 11d → -379.06d |  | resources Steel [20 M3] → Concrete Barrier |
| 10 | **Bill 11-UP-REST ROOMS** | 2016-07-24 → 2016-11-08 (+107d) | 2017-02-04 → 2018-05-03 (+453d) |  |  |  |  |  |
| B11-UPRR-1stP001 | MEP 1st , 2nd Fix and Wall System | 2016-07-24 → 2016-11-08 A (+107d) | 2016-07-24 → 2016-11-08 A (+107d) |  | 0% → 100% | 10d → none |  |  |
| B5-UPSD-C121 | Clearance process for Measurements , Framing&Enabling Works | 2016-07-24 → 2016-11-10 A (+109d) | 2016-07-28 → 2017-02-08 A (+195d) |  | 0% → 100% | 10d → none |  | resources none → Concrete Barrier [2000 m] |
| B5-UPSD-C131 | Measurements , Framing & Enabling Works | 2016-07-30 → 2016-11-12 A (+105d) | 2016-08-14 → 2017-03-12 A (+210d) |  | 0% → 100% | 10d → none |  | resources none → Concrete Barrier [2000 m] |
| B11-UPRR-C001 | Installation of Celling System | 2016-08-15 → 2016-12-20 A (+127d) | 2016-09-21 → 2017-03-19 A (+179d) |  | 0% → 100% | 10d → none |  | resources Steel [11 M3] → Concrete Barrier [16492 m] |
| B11-UPRR-C007 | Installation of Wall Covering | 2016-12-10 → 2017-03-09 A (+89d) | 2016-12-18 → 2017-12-28 A (+375d) |  | 0% → 100% | 10d → none |  | resources Steel [6 M3] → Concrete Barrier [6646 m] |
| B11-UPRR-C002 | Ceiling Closure | 2016-10-01 → 2017-04-08 A (+189d) | 2016-11-05 → 2017-05-11 A (+187d) | 30d → 29.94d | 0% → 100% | 10d → none |  | resources Steel [11 M3] → Concrete Barrier [16492 m] |
| B11-UPRR-2ndP002 | MEP Ceiling Closure Clearance | 2016-09-22 → 2017-05-04 A (+224d) | 2016-09-29 → 2017-05-06 A (+219d) |  | 0% → 100% | 10d → none |  | resources none → Concrete Barrier |
| B11-UPRR-C003 | Paint Works | 2016-11-22 → 2017-05-08 A (+167d) | 2016-12-28 → 2017-12-23 A (+360d) |  | 0% → 100% | 10d → none |  | resources Steel [9 M3] → Concrete Barrier [6105 m] |
| B11-UPRR-C005 | Installation of Doors & Ironmongery | 2017-01-12 → 2017-06-27 A (+166d) | 2017-01-19 → 2017-11-06 A (+291d) |  | 0% → 100% | 16d → none |  | resources Steel [6 M3] → Concrete Barrier [87876 m] |
| B11-UPRR3rdP003 | Flooring (by others) | 2016-11-06 → 2017-08-15 A (+282d) | 2016-11-21 → 2017-09-23 A (+306d) |  | 0% → 100% | 10d → none |  | resources none → Concrete Barrier [10754 m] |
| B11-UPRR-C010 | Installation of Joinery Works | 2016-11-22 → 2017-08-23 A (+274d) | 2016-12-08 → 2017-12-21 A (+378d) | 14d → 14.06d | 0% → 100% | 10d → none |  | resources Steel [14 M3] → Concrete Barrier [64080 m] |
| B11-UPRR-C008 | Installation of Glazing Works | 2016-12-27 → 2017-11-20 A (+328d) | 2017-01-11 → 2018-01-18 A (+372d) | 14d → 13.89d | 0% → 100% | 10d → none |  | resources Steel [6 M3] → Concrete Barrier [20016 m] |
| B11-UPRR-C004 | Installation of Metal Skirting | 2016-12-19 → 2018-01-09 A (+386d) | 2016-12-26 → 2018-02-07 A (+408d) | 7d → 7.06d | 0% → 100% | 10d → none |  | resources Steel [6 M3] → Concrete Barrier [15590 m] |
| B11-UPRR-C009 | Installation of Sanitary Ware | 2017-01-12 → 2018-01-15 A (+368d) | 2017-01-19 → 2018-03-08 A (+413d) |  | 0% → 100% | 16d → none |  | resources Steel [6 M3] → Concrete Barrier [16549 m] |
| B11-UPRR-C006 | Installation of Light Fittings | 2017-01-12 → 2018-01-24 A (+377d) | 2017-01-28 → 2018-03-07 A (+403d) |  | 0% → 100% | 10d → none |  | resources Steel [10 M3] → Concrete Barrier [4326 m] |
| B11-UPRR-S011 | Snagging and De-Snagging | 2017-01-28 → 2018-04-26 (+453d) | 2017-02-04 → 2018-05-03 (+453d) | 7d → 6.89d |  | 10d → -378.89d |  | resources Steel [10 M3] → Concrete Barrier |
| 11 | **Bill 12-UP-PRAYER ROOMS** | 2016-07-05 → 2016-07-03 (-2d) | 2017-02-02 → 2018-05-03 (+455d) |  |  |  |  |  |
| B12-UPPR-1stP001 | MEP 1st , 2nd Fix and Wall System | 2016-07-05 → 2016-07-03 A (-2d) | 2016-07-05 → 2016-07-03 A (-2d) |  | 0% → 100% | 11d → none |  |  |
| B5-UPSD-C141 | Clearance process for Measurements , Framing&Enabling Works | 2016-07-05 → 2016-07-04 A (-1d) | 2016-07-12 → 2016-09-15 A (+65d) |  | 0% → 100% | 11d → none |  | resources none → Concrete Barrier |
| B12-UPPR-C001 | Installation of Celling System | 2016-07-30 → 2016-09-18 A (+50d) | 2016-08-30 → 2016-09-29 A (+30d) | 28d → 27.94d | 0% → 100% | 11d → none |  | resources none → Concrete Barrier [3965 m] |
| B5-UPSD-C151 | Measurements , Framing & Enabling Works | 2016-07-13 → 2016-09-18 A (+67d) | 2016-07-28 → 2016-09-25 A (+59d) | 14d → 13.94d | 0% → 100% | 11d → none |  | resources none → Concrete Barrier [2008 m] |
| B12-UPPR-C003 | Paint Works | 2016-10-16 → 2016-10-10 A (-6d) | 2016-11-19 → 2017-12-25 A (+401d) | 30d → 29.94d | 0% → 100% | 11d → none |  | resources none → Concrete Barrier [20977 m] |
| B12-UPPR-C004 | Installation of Doors & Ironmongery | 2016-11-20 → 2016-12-20 A (+30d) | 2016-11-27 → 2017-12-03 A (+371d) |  | 0% → 100% | 11d → none |  | resources none → Concrete Barrier [1638 m] |
| B12-UPPR-C007 | Installation of Wall Covering | 2016-11-20 → 2017-01-24 A (+65d) | 2016-11-27 → 2017-12-26 A (+394d) |  | 0% → 100% | 25d → none |  | resources none → Concrete Barrier [58969 m] |
| B12-UPPR-2ndP002 | MEP Ceiling Closure Clearance | 2016-08-31 → 2017-02-05 A (+158d) | 2016-09-07 → 2017-02-20 A (+166d) |  | 0% → 100% | 11d → none |  | resources none → Concrete Barrier |
| B12-UPPR-C002 | Ceiling Closure | 2016-09-08 → 2017-02-22 A (+167d) | 2016-10-06 → 2017-05-10 A (+216d) |  | 0% → 100% | 11d → none |  | resources none → Concrete Barrier [3965 m] |
| B12-UPPR-C008 | Installation of Carpet | 2017-01-18 → 2017-10-04 A (+259d) | 2017-01-25 → 2017-12-28 A (+337d) | 7d → 7.06d | 0% → 100% | 11d → none |  | resources none → Concrete Barrier [23016 m] |

| ID | Task | Start | Finish | Duration | Complete | Total float | Predecessors | Other |
| --- | --- | --- | --- | --- | --- | --- | --- | --- |
| B12-UPPR-3rdP003 | Flooring (by others) | 2016-10-08 → 2017-10-18 A (+375d) | 2016-10-15 → 2017-11-05 A (+386d) |  | 0% → 100% | 11d → none |  | resources none → Concrete Barrier |
| B12-UPPR-C009 | Installation of Joinery Works | 2017-01-02 → 2017-11-21 A (+323d) | 2017-01-17 → 2018-01-04 A (+352d) | 14d → 13.94d | 0% → 100% | 11d → none |  | resources none → Concrete Barrier [43336 m] |
| B12-UPPR-C006 | Installation of Timber Flooring | 2016-12-17 → 2017-12-12 A (+360d) | 2017-01-01 → 2017-12-27 A (+360d) | 14d → 13.94d | 0% → 100% | 11d → none |  | resources none → Concrete Barrier [4644 m] |
| B12-UPPR-C005 | Installation of Light Fittings | 2016-11-28 → 2018-01-18 A (+416d) | 2016-12-15 → 2018-02-20 A (+432d) | 14d → 14.11d | 0% → 100% | 11d → none |  | resources none → Concrete Barrier [2112 m] |
| B12-UPPR-S010 | Snagging and De-Snagging | 2017-01-26 → 2018-04-26 (+455d) | 2017-02-02 → 2018-05-03 (+455d) |  |  | 11d → -379d |  | resources none → Concrete Barrier |
| 12 | **Bill 13-UP-RESIDENCES LOBBY** | 2016-08-07 → 2016-10-12 (+66d) | 2017-02-14 → 2018-05-03 (+443d) |  |  |  |  |  |
| B13-UPRL-1stP001 | MEP 1st , 2nd Fix and Wall System | 2016-08-07 → 2016-10-12 A (+66d) | 2016-08-07 → 2016-10-12 A (+66d) |  | 0% → 100% | 1d → none |  |  |
| B5-UPSD-C161 | Clearance process for Measurements , Framing&Enabling Works | 2016-08-07 → 2016-10-13 A (+67d) | 2016-08-11 → 2016-11-08 A (+89d) |  | 0% → 100% | 1d → none |  | resources none → Concrete Barrier |
| B5-UPSD-C171 | Measurements , Framing & Enabling Works | 2016-08-13 → 2016-11-09 A (+88d) | 2016-08-28 → 2016-12-05 A (+99d) |  | 0% → 100% | 1d → none |  | resources none → Concrete Barrier [3000 m] |
| B13-UPRL-C001 | Installation of Celling System | 2016-08-29 → 2016-12-06 A (+99d) | 2016-09-25 → 2017-01-19 A (+116d) | 21d → 20.94d | 0% → 100% | 1d → none |  | resources Steel [64 M3] → Concrete Barrier [208105 m] |
| B13-UPRL-2ndP002 | MEP Ceiling Closure Clearance | 2016-09-26 → 2017-03-01 A (+156d) | 2016-10-04 → 2017-03-11 A (+158d) |  | 0% → 100% | 1d → none |  | resources none → Concrete Barrier |
| B13-UPRL-C002 | Ceiling Closure | 2016-10-05 → 2017-03-12 A (+158d) | 2016-10-29 → 2017-05-28 A (+211d) |  | 0% → 100% | 1d → none |  | resources Steel [64 M3] → Concrete Barrier [208105 m] |
| B13-UPRL-3rdP003 | Flooring (by others) | 2016-10-30 → 2017-05-01 A (+183d) | 2016-11-14 → 2017-05-30 A (+197d) |  | 0% → 100% | 1d → none |  | resources none → Concrete Barrier |
| B13-UPRL-C004 | Installation of Wooden wall panelling | 2016-12-22 → 2017-05-15 A (+144d) | 2017-01-07 → 2017-08-12 A (+217d) | 14d → 13.94d | 0% → 100% | 1d → none |  | resources Steel [78 M3] → Concrete Barrier [219935 m] |
| B13-UPRL-C003 | Paint Works | 2016-11-15 → 2017-05-17 A (+183d) | 2016-12-21 → 2018-01-06 A (+381d) |  | 0% → 100% | 1d → none |  | resources Steel [53 M3] → Concrete Barrier [21816 m] |
| B13-UPRL-C009 | Installation of Joinery Works | 2017-01-08 → 2017-07-02 A (+175d) | 2017-01-24 → 2018-03-15 A (+415d) | 15d → 15.11d | 0% → 100% | 12d → none |  | resources Steel [14 M3] → Concrete Barrier [89308 m] |
| B13-UPRL-C007 | Installation of Metal panelling | 2017-01-08 → 2017-08-08 A (+212d) | 2017-01-12 → 2018-01-11 A (+364d) | 5d → 4.94d | 0% → 100% | 1d → none |  | resources Steel [28 M3] → Concrete Barrier [186930 m] |
| B13-UPRL-C005 | Installation of Mirror | 2017-01-15 → 2017-09-20 A (+248d) | 2017-01-19 → 2018-01-23 A (+369d) |  | 0% → 100% | 1d → none |  | resources Steel [4 M3] → Concrete Barrier [57460 m] |
| B13-UPRL-C008 | Aluminium Works | 2017-01-09 → 2017-12-27 A (+352d) | 2017-01-14 → 2018-03-05 A (+415d) |  | 0% → 100% | 1d → none |  | resources Steel [10 M3] → Concrete Barrier [63908 m] |
| B13-UPRL-C006 | Installation of Light Fittings | 2017-01-21 → 2018-02-19 A (+394d) | 2017-02-06 → 2018-03-10 A (+397d) |  | 0% → 100% | 1d → none |  | resources Steel [49 M3] → Concrete Barrier [40059 m] |
| B13-UPRL-S010 | Snagging and De-Snagging | 2017-02-07 → 2018-04-26 (+443d) | 2017-02-14 → 2018-05-03 (+443d) |  |  | 1d → -379d |  | resources Steel [14 M3] → Concrete Barrier |
| 15 | **Bill 20-UP-COFFEE BAR** | 2016-07-10 → 2018-01-21 (+560d) | 2016-12-10 → 2018-08-01 (+599d) |  |  |  |  |  |
| B20-UPCB-1stP001 | MEP 1st , 2nd Fix and Wall System | 2016-07-10 → 2018-01-21 A (+560d) | 2016-07-10 → 2018-01-21 A (+560d) |  | 0% → 100% | 71d → none |  |  |
| B5-UPSD-C221 | Clearance process for Measurements , Framing&Enabling Works | 2016-08-03 → 2018-04-02 A (+607d) | 2016-08-08 → 2018-05-10 (+640d) | 5d → 4.94d | 0% → 85% | 71d → -384.26d |  | resources none → Concrete Barrier |
| B5-UPSD-C231 | Measurements , Framing & Enabling Works | 2016-08-09 → 2018-04-04 A (+603d) | 2016-08-24 → 2018-04-12 A (+596d) |  | 0% → 100% | 71d → none |  | resources none → Concrete Barrier [5000 m] |
| B20-UPCB-3rdP003 | Flooring (by others) | 2016-07-10 → 2018-04-05 A (+634d) | 2016-08-02 → 2018-05-09 (+645d) |  | 0% → 45% | 71d → -455.36d |  | resources none → Concrete Barrier |
| B20-UPCB-C002 | Installation of Timber Flooring | 2016-09-14 → 2018-05-09 (+602d) | 2016-10-17 → 2018-06-10 (+601d) | 28d → 27.44d |  | 57d → -455.36d |  | resources Steel [15 M3] → Concrete Barrier [334184 m] |
| B20-UPCB-C001 | Installation of Light Fittings | 2016-10-18 → 2018-06-10 (+600d) | 2016-11-19 → 2018-07-12 (+600d) | 28d → 27.56d |  | 67d → -445.58d |  | resources Steel [10 M3] → Concrete Barrier [3642 m] |
| B20-UPCB-C003 | Installation of Joinery Works | 2016-10-18 → 2018-06-10 (+600d) | 2016-12-01 → 2018-07-24 (+600d) | 38d → 37.33d |  | 57d → -455.36d |  | resources Steel [5 M3] → Concrete Barrier [44640 m] |
| B20-UPCB-C004 | Snagging and De-Snagging | 2016-12-03 → 2018-07-24 (+598d) | 2016-12-10 → 2018-08-01 (+599d) | 7d → 7.06d |  | 57d → -455.36d |  | resources Steel [6 M3] → Concrete Barrier |
| 16 | **Bill 28-LIFT CAR - TOWER A, B & D** | 2016-08-14 → 2017-01-26 (+165d) | 2017-02-15 → 2018-05-03 (+442d) |  |  |  |  |  |
| B5-UPSD-C241 | Clearance process for Measurements , Framing&Enabling Works | 2016-08-14 → 2017-01-26 A (+165d) | 2016-08-18 → 2017-02-08 A (+174d) |  | 0% → 100% | 6d → none |  | resources none → Concrete Barrier |
| B28-TsLC-1stP001 | MEP 1st , 2nd Fix and Wall System | 2016-08-14 → 2017-02-09 A (+179d) | 2016-08-14 → 2017-02-09 A (+179d) |  | 0% → 100% | 6d → none |  |  |
| B5-UPSD-C251 | Measurements , Framing & Enabling Works | 2016-08-20 → 2017-02-11 A (+175d) | 2016-09-04 → 2017-03-08 A (+185d) | 14d → 13.94d | 0% → 100% | 6d → none |  | resources none → Concrete Barrier [5000 m] |
| B28-TsLC-C001 | Installation of Celling System | 2016-09-05 → 2017-05-04 A (+241d) | 2016-10-03 → 2017-08-14 A (+315d) |  | 0% → 100% | 6d → none |  | resources Steel [20 M3] → Concrete Barrier [42311 m] |
| B28-TsLC-C004 | Installation of Wooden wall panelling | 2017-01-09 → 2017-06-14 A (+156d) | 2017-01-24 → 2017-08-06 A (+194d) |  | 0% → 100% | 0d → none |  | resources Steel [10 M3] → Concrete Barrier [20423 m] |
| B28-TsLC-2ndP002 | MEP Ceiling Closure Clearance | 2016-10-04 → 2017-06-28 A (+267d) | 2016-10-11 → 2017-06-28 A (+260d) |  | 0% → 100% | 6d → none |  | resources none → Concrete Barrier |
| B28-TsLC-C009 | Installation of Metal Raling | 2016-11-06 → 2017-06-28 A (+234d) | 2016-11-29 → 2017-10-05 A (+310d) | 21d → 20.94d | 0% → 100% | 46d → none |  | resources Steel [10 M3] → Concrete Barrier [33633 m] |
| B28-TsLC-C003 | Installation of Metal Skirting | 2017-01-25 → 2017-07-03 A (+159d) | 2017-01-30 → 2017-12-28 A (+332d) |  | 0% → 100% | 0d → none |  | resources Steel [6 M3] → Concrete Barrier [21543 m] |
| B28-TsLC-C006 | Installation of Metal panelling | 2016-12-06 → 2017-07-03 A (+209d) | 2016-12-22 → 2017-09-27 A (+279d) | 14d → 13.89d | 0% → 100% | 0d → none |  | resources Steel [10 M3] → Concrete Barrier [32154 m] |
| B28-TsLC-C002 | Ceiling Closure | 2016-10-12 → 2017-08-16 A (+308d) | 2016-11-05 → 2017-11-06 A (+366d) | 21d → 21.11d | 0% → 100% | 6d → none |  | resources Steel [20 M3] → Concrete Barrier [42311 m] |
| B28-TsLC-3rdP003 | Flooring (by others) | 2016-11-12 → 2017-09-05 A (+297d) | 2016-11-27 → 2017-09-28 A (+305d) | 14d → 13.94d | 0% → 100% | 6d → none |  | resources none → Concrete Barrier [32152 m] |
| B28-TsLC-C007 | Installation of Glazing Works | 2017-01-31 → 2017-11-21 A (+294d) | 2017-02-07 → 2018-01-18 A (+345d) |  | 0% → 100% | 0d → none |  | resources Steel [10 M3] → Concrete Barrier [32154 m] |
| B28-TsLC-C008 | Installation of Wall Covering | 2017-01-31 → 2017-12-07 A (+310d) | 2017-02-05 → 2018-02-01 A (+361d) | 5d → 4.94d | 0% → 100% | 2d → none |  | resources Steel [6 M3] → Concrete Barrier [12353 m] |
| B28-TsLC-C005 | Installation of Light Fittings | 2016-12-24 → 2018-02-08 A (+411d) | 2017-01-08 → 2018-02-25 A (+413d) | 14d → 14.11d | 0% → 100% | 0d → none |  | resources Steel [10 M3] → Concrete Barrier [22132 m] |
| B28-TsLC-S010 | Snagging and De-Snagging | 2017-02-08 → 2018-04-26 (+442d) | 2017-02-15 → 2018-05-03 (+442d) |  |  | 0d → -379d |  | resources Steel [10 M3] → Concrete Barrier |
| 17 | **Bill 29-SPA** | 2016-08-07 → 2017-01-26 (+172d) | 2017-02-06 → 2018-05-03 (+451d) |  |  |  |  |  |
| B29-SPALC-1stP001 | MEP 1st , 2nd Fix and Wall System | 2016-08-07 → 2017-01-26 A (+172d) | 2016-08-07 → 2017-01-26 A (+172d) |  | 0% → 100% | 14d → none |  |  |
| B5-UPSD-C261 | Clearance process for Measurements , Framing&Enabling Works | 2016-08-07 → 2017-01-26 A (+172d) | 2016-08-11 → 2017-02-08 A (+181d) |  | 0% → 100% | 14d → none |  | resources none → Concrete Barrier |
| B5-UPSD-C271 | Measurements , Framing & Enabling Works | 2016-08-13 → 2017-02-09 A (+180d) | 2016-08-28 → 2017-08-27 A (+364d) | 14d → 13.94d | 0% → 100% | 14d → none |  | resources none → Concrete Barrier [5000 m] |
| B29-SPALC-C001 | Installation of Celling System | 2016-08-29 → 2017-03-05 A (+188d) | 2016-10-04 → 2017-08-29 A (+329d) |  | 0% → 100% | 14d → none |  | resources Steel [182 M3] → Concrete Barrier [85163 m] |
| B29-SPALC-C010 | Installation of Wall Covering | 2017-01-19 → 2017-05-16 A (+117d) | 2017-01-26 → 2018-02-14 A (+384d) | 7d → 6.89d | 0% → 100% | 10d → none |  | resources Steel [20 M3] → Concrete Barrier [196018 m] |
| B29-SPALC-C003 | Paint Works | 2016-11-27 → 2017-05-30 A (+184d) | 2017-01-02 → 2018-03-03 A (+425d) | 30d → 29.94d | 0% → 100% | 14d → none |  | resources Steel [152 M3] → Concrete Barrier [105756 m] |
| B29-SPALC-C017 | Installation of Steel wall panelling | 2016-12-01 → 2017-06-01 A (+182d) | 2016-12-26 → 2017-07-01 A (+187d) | 21d → 20.89d | 0% → 100% | 14d → none |  | resources Steel [28 M3] → Concrete Barrier [150012 m] |
| B29-SPALC-C011 | Installation of Wooden wall panelling | 2016-12-08 → 2017-06-17 A (+191d) | 2017-01-02 → 2018-02-10 A (+404d) |  | 0% → 100% | 8d → none |  | resources Steel [28 M3] → Concrete Barrier [86115 m] |
| B29-SPALC-2ndP002 | MEP Ceiling Closure Clearance | 2016-10-05 → 2017-07-25 A (+293d) | 2016-10-12 → 2017-08-30 A (+322d) |  | 0% → 100% | 14d → none | B29-SPALC-C001, RM-SA-017 → RM-SA-017, B34-UPSEB-C001, B29-SPALC-C001 | resources none → Concrete Barrier |
| B29-SPALC-3rdP003 | Flooring (by others) | 2016-11-15 → 2017-08-08 A (+266d) | 2016-11-26 → 2017-08-31 A (+278d) | 10d → 9.89d | 0% → 100% | 14d → none |  | resources none → Concrete Barrier [103800 m] |
| B29-SPALC-C015 | Installation of Joinery Works | 2016-12-08 → 2017-08-21 A (+256d) | 2016-12-25 → 2018-03-15 A (+445d) |  | 0% → 100% | 15d → none |  | resources Steel [28 M3] → Concrete Barrier [88201 m] |
| B29-SPALC-C002 | Ceiling Closure | 2016-10-13 → 2017-08-27 A (+318d) | 2016-11-14 → 2017-12-14 A (+395d) | 28d → 27.94d | 0% → 100% | 14d → none |  | resources Steel [182 M3] → Concrete Barrier [85163 m] |
| B29-SPALC-C004 | Installation of Wall Tiling | 2016-11-27 → 2017-09-11 A (+288d) | 2016-12-08 → 2017-11-15 A (+342d) | 10d → 9.94d | 0% → 100% | 28d → none |  | resources Steel [60 M3] → Concrete Barrier [88934 m] |
| B29-SPALC-C009 | Installation of Timber Flooring | 2017-01-03 → 2017-10-23 A (+293d) | 2017-01-18 → 2018-01-23 A (+370d) |  | 0% → 100% | 8d → none |  | resources Steel [42 M3] → Concrete Barrier [113800 m] |
| B29-SPALC-C012 | Installation of Floor Tiling | 2017-01-03 → 2017-11-14 A (+315d) | 2017-01-18 → 2017-11-25 A (+311d) |  | 0% → 100% | 8d → none |  | resources Steel [28 M3] → Concrete Barrier [131210 m] |
| B29-SPALC-C007 | Installation of Doors & Ironmongery | 2016-12-17 → 2017-11-27 A (+345d) | 2016-12-21 → 2018-03-15 A (+449d) | 5d → 4.94d | 0% → 100% | 18d → none |  | resources Steel [30 M3] → Concrete Barrier [90975 m] |
| B29-SPALC-C006 | Installation of Mirror | 2017-01-03 → 2017-12-11 A (+342d) | 2017-01-10 → 2018-01-24 A (+379d) | 7d → 7.06d | 0% → 100% | 15d → none |  | resources Steel [12 M3] → Concrete Barrier [158888 m] |
| B29-SPALC-C005 | Installation of Metal Skirting | 2017-01-03 → 2018-01-08 A (+370d) | 2017-01-10 → 2018-01-25 A (+380d) | 7d → 7.06d | 0% → 100% | 15d → none |  | resources Steel [28 M3] → Concrete Barrier [25920 m] |
| B29-SPALC-C013 | Installation of Glazing Works | 2017-01-19 → 2018-01-15 A (+361d) | 2017-01-29 → 2018-01-25 A (+361d) | 9d → 8.94d | 0% → 100% | 8d → none |  | resources Steel [28 M3] → Concrete Barrier [229113 m] |
| B29-SPALC-C008 | Installation of Light Fittings | 2017-01-03 → 2018-01-22 A (+384d) | 2017-01-18 → 2018-03-17 A (+423d) |  | 0% → 100% | 8d → none |  | resources Steel [50 M3] → Concrete Barrier [35838 m] |
| B29-SPALC-C014 | Installation of Sanitary Ware | 2017-01-19 → 2018-02-13 A (+390d) | 2017-01-29 → 2018-03-22 A (+417d) | 9d → 8.89d | 0% → 100% | 8d → none |  | resources Steel [35 M3] → Concrete Barrier [30522 m] |
| B29-SPALC-S018 | Snagging and De-Snagging | 2017-01-30 → 2018-04-26 (+451d) | 2017-02-06 → 2018-05-03 (+451d) |  |  | 8d → -379d |  | resources Steel [14 M3] → Concrete Barrier |
| 18 | **Bill 34-UP-SPEAK EASY BAR** | 2016-07-05 → 2016-08-06 (+32d) | 2017-02-07 → 2018-05-03 (+450d) |  |  |  |  |  |

| ID | Task | Start | Finish | Duration | Complete | Total float | Predecessors | Other |
| --- | --- | --- | --- | --- | --- | --- | --- | --- |
| B34-UPSEB-1stP001 | MEP 1st , 2nd Fix and Wall System | 2016-07-05 → 2016-08-06 A (+32d) | 2016-07-05 → 2016-08-06 A (+32d) |  | 0% → 100% | 14d → none |  |  |
| B5-UPSD-C301 | Clearance process for Measurements , Framing&Enabling Works | 2016-07-05 → 2016-08-07 A (+33d) | 2016-07-12 → 2016-10-09 A (+89d) |  | 0% → 100% | 14d → none |  | resources none → Concrete Barrier |
| B5-UPSD-C311 | Measurements , Framing & Enabling Works | 2016-07-12 → 2016-10-10 A (+90d) | 2016-07-27 → 2016-10-20 A (+85d) |  | 0% → 100% | 14d → none |  | resources none → Concrete Barrier [5000 m] |
| B34-UPSEB-C001 | Installation of Celling System | 2016-07-28 → 2016-10-15 A (+79d) | 2016-08-21 → 2017-01-03 A (+135d) |  | 0% → 100% | 14d → none |  | resources Steel [20 M3] → Concrete Barrier [66885 m] |
| B34-UPSEB-C003 | Paint Works | 2016-11-07 → 2016-10-18 A (-20d) | 2016-12-03 → 2018-03-07 A (+459d) |  | 0% → 100% | 7.6d → none |  | resources Steel [42 M3] → Concrete Barrier [18899 m] |
| B34-UPSEB-C002 | Ceiling Closure | 2016-09-06 → 2017-05-28 A (+264d) | 2016-10-05 → 2017-05-31 A (+238d) |  | 0% → 100% | 7.6d → none |  | resources Steel [20 M3] → Concrete Barrier [73885 m] |
| B34-UPSEB-C011 | Installation of Wooden wall panelling | 2016-11-10 → 2017-05-30 A (+201d) | 2016-12-06 → 2017-09-23 A (+291d) | 21d → 20.89d | 0% → 100% | 18.6d → none |  | resources Steel [14 M3] → Concrete Barrier [41490 m] |
| B34-UPSEB-2ndP002 | MEP Ceiling Closure Clearance | 2016-08-22 → 2017-06-07 A (+289d) | 2016-08-29 → 2017-06-08 A (+283d) | 7d → 6.89d | 0% → 100% | 14d → none | B34-UPSEB-C001, RM-SA-020 → B34-UPSEB-C041, RM-SA-020 | resources none → Concrete Barrier |
| B34-UPSEB-3rdP003 | Flooring (by others) | 2016-10-05 → 2017-07-05 A (+273d) | 2016-10-22 → 2017-07-23 A (+274d) |  | 0% → 100% | 7.6d → none |  | resources none → Concrete Barrier |
| B34-UPSEB-C015 | Installation of Joinery Works | 2016-12-03 → 2017-08-27 A (+267d) | 2016-12-20 → 2018-03-08 A (+443d) | 14d → 14.11d | 0% → 100% | 7.6d → none |  | resources Steel [14 M3] → Concrete Barrier [20000 m] |
| B34-UPSEB-C017 | Installation of Steel wall panelling | 2016-11-10 → 2017-10-25 A (+349d) | 2016-12-06 → 2017-11-04 A (+333d) | 21d → 20.94d | 0% → 100% | 18.6d → none |  | resources Steel [14 M3] → Concrete Barrier [10212 m] |
| B34-UPSEB-C012 | Installation of Floor Tiling | 2016-12-20 → 2017-11-14 A (+329d) | 2016-12-28 → 2017-11-28 A (+335d) |  | 0% → 100% | 21.6d → none |  | resources Steel [14 M3] → Concrete Barrier [20000 m] |
| B34-UPSEB-C007 | Installation of Doors & Ironmongery | 2017-01-22 → 2017-11-20 A (+302d) | 2017-01-30 → 2017-12-13 A (+317d) |  | 0% → 100% | 7.6d → none |  | resources Steel [6 M3] → Concrete Barrier [4047 m] |
| B34-UPSEB-C004 | Installation of Wall Tiling | 2016-10-22 → 2017-11-29 A (+403d) | 2016-11-07 → 2017-12-21 A (+409d) |  | 0% → 100% | 7.6d → none |  | resources Steel [14 M3] → Concrete Barrier [12957 m] |
| B34-UPSEB-C009 | Installation of Timber Flooring | 2016-12-20 → 2017-12-12 A (+357d) | 2017-01-14 → 2017-12-28 A (+348d) | 21d → 21.06d | 0% → 100% | 7.6d → none |  | resources Steel [14 M3] → Concrete Barrier [16470 m] |
| B34-UPSEB-C010 | Installation of Wall Covering | 2017-01-14 → 2017-12-26 A (+346d) | 2017-01-22 → 2018-02-15 A (+389d) | 7d → 6.89d | 0% → 100% | 14.6d → none |  | resources Steel [10 M3] → Concrete Barrier [17784 m] |
| B34-UPSEB-C006 | Installation of Mirror | 2016-12-20 → 2018-02-10 A (+417d) | 2016-12-28 → 2018-02-15 A (+414d) |  | 0% → 100% | 21.6d → none |  | resources Steel [6 M3] → Concrete Barrier [7215 m] |
| B34-UPSEB-C005 | Installation of Metal Skirting | 2016-12-20 → 2018-02-18 A (+425d) | 2016-12-28 → 2018-03-05 A (+432d) |  | 0% → 100% | 21.6d → none |  | resources Steel [14 M3] → Concrete Barrier [5120 m] |
| B34-UPSEB-C013 | Installation of Glazing Works | 2017-01-14 → 2018-02-24 A (+406d) | 2017-01-22 → 2018-03-01 A (+403d) | 7d → 6.89d | 0% → 100% | 7.6d → none |  | resources Steel [14 M3] → Concrete Barrier [5000 m] |
| B34-UPSEB-C008 | Installation of Light Fittings | 2016-12-20 → 2018-02-24 A (+431d) | 2017-01-05 → 2018-03-05 A (+424d) | 14d → 14.06d | 0% → 100% | 14.6d → none |  | resources Steel [10 M3] → Concrete Barrier [4084 m] |
| B34-UPSEB-C014 | Installation of Sanitary Ware | 2017-01-14 → 2018-03-08 A (+418d) | 2017-01-22 → 2018-03-11 A (+413d) | 7d → 6.89d | 0% → 100% | 14.6d → none |  | resources Steel [10 M3] → Concrete Barrier [2000 m] |
| B34-UPSEB-C016 | Sanitary Ware | 2017-01-14 → 2018-03-08 A (+418d) | 2017-01-22 → 2018-03-11 A (+413d) | 7d → 6.89d | 0% → 100% | 14.6d → none |  | resources Steel [6 M3] → Concrete Barrier [2000 m] |
| B34-UPSEB-S018 | Snagging and De-Snagging | 2017-01-30 → 2018-04-26 (+451d) | 2017-02-07 → 2018-05-03 (+450d) |  |  | 7.6d → -379d |  | resources Steel [14 M3] → Concrete Barrier |
| 20 | **Bill 35-LIFT CAR - TOWER C** | 2016-08-07 → 2017-06-28 (+325d) | 2017-02-14 → 2018-05-03 (+443d) |  |  |  |  |  |
| B35-TCSR-C005 | Installation of Metal panelling | 2016-12-29 → 2017-06-28 A (+181d) | 2017-01-22 → 2017-10-12 A (+263d) |  | 0% → 100% | 1d → none |  | resources Steel [10 M3] → Concrete Barrier [46546 m] |
| B35-TCSR-1stP001 | MEP 1st , 2nd Fix and Wall System | 2016-08-07 → 2017-07-05 A (+332d) | 2016-08-07 → 2017-07-05 A (+332d) |  | 0% → 100% | 23d → none |  |  |
| B5-UPSD-C321 | Clearance process for Measurements , Framing&Enabling Works | 2016-08-07 → 2017-07-10 A (+337d) | 2016-08-11 → 2017-07-13 A (+336d) |  | 0% → 100% | 23d → none |  | resources none → Concrete Barrier |
| B5-UPSD-C331 | Measurements , Framing & Enabling Works | 2016-08-13 → 2017-07-16 A (+337d) | 2016-08-28 → 2017-07-27 A (+333d) | 14d → 14.11d | 0% → 100% | 23d → none |  | resources none → Concrete Barrier [2000 m] |
| B35-TCSR-2ndP002 | MEP Ceiling Closure Clearance | 2016-10-05 → 2017-08-10 A (+309d) | 2016-10-12 → 2017-08-10 A (+302d) |  | 0% → 100% | 23d → none |  | resources none → Concrete Barrier |
| B35-TCSR-C001 | Installation of Celling System | 2016-08-29 → 2017-08-15 A (+351d) | 2016-10-04 → 2017-09-06 A (+337d) |  | 0% → 100% | 23d → none |  | resources Steel [20 M3] → Concrete Barrier [18475 m] |
| B35-TCSR-C002 | Ceiling Closure | 2016-10-13 → 2017-09-07 A (+329d) | 2016-11-14 → 2017-09-26 A (+316d) |  | 0% → 100% | 23d → none |  | resources Steel [20 M3] → Concrete Barrier [20475 m] |
| B35-TCSR-3rdP003 | Flooring (by others) | 2016-11-15 → 2017-09-22 A (+311d) | 2016-12-01 → 2017-10-02 A (+305d) |  | 0% → 100% | 23d → none |  | resources none → Concrete Barrier [19533 m] |
| B35-TCSR-C006 | Installation of Metal Raling | 2016-12-29 → 2017-10-01 A (+276d) | 2017-01-14 → 2017-11-16 A (+306d) | 14d → 13.89d | 0% → 100% | 21d → none |  | resources Steel [10 M3] → Concrete Barrier [16085 m] |
| B35-TCSR-C003 | Installation of Metal Skirting | 2017-01-23 → 2017-12-07 A (+318d) | 2017-02-07 → 2018-01-14 A (+341d) | 14d → 14.11d | 0% → 100% | 1d → none |  | resources Steel [6 M3] → Concrete Barrier [9160 m] |
| B35-TCSR-C004 | Installation of Light Fittings | 2016-12-03 → 2018-01-18 A (+411d) | 2016-12-19 → 2018-02-20 A (+428d) | 14d → 13.94d | 0% → 100% | 43d → none |  | resources Steel [10 M3] → Concrete Barrier [14160 m] |
| B35-TCSR-S007 | Snagging and De-Snagging | 2017-02-07 → 2018-04-26 (+443d) | 2017-02-14 → 2018-05-03 (+443d) |  |  | 1d → -379d |  | resources Steel [10 M3] → Concrete Barrier |
| 21 | **Bill 39-LG- LIFT LOBBY** | 2016-08-14 → 2017-06-13 (+303d) | 2017-02-11 → 2018-05-03 (+446d) |  |  |  |  |  |
| B39-LGLL-C001 | Installation of Celling System | 2016-09-05 → 2017-06-13 A (+281d) | 2016-10-03 → 2017-06-25 A (+265d) | 21d → 20.94d | 0% → 100% | 10d → none |  | resources Steel [20 M3] → Concrete Barrier [2198 m] |
| B39-LGLL-C002 | Ceiling Closure | 2016-10-12 → 2017-06-20 A (+251d) | 2016-10-27 → 2017-06-28 A (+244d) | 14d → 14.06d | 0% → 100% | 10d → none |  | resources Steel [20 M3] → Concrete Barrier [2198 m] |
| B5-UPSD-C351 | Measurements , Framing & Enabling Works | 2016-08-20 → 2017-06-21 A (+305d) | 2016-09-04 → 2017-06-28 A (+297d) | 14d → 14.06d | 0% → 100% | 10d → none |  | resources none → Concrete Barrier [2000 m] |
| B39-LGLL-1stP001 | MEP 1st , 2nd Fix and Wall System | 2016-08-14 → 2017-06-22 A (+312d) | 2016-08-14 → 2017-06-22 A (+312d) |  | 0% → 100% | 10d → none |  |  |
| B5-UPSD-C341 | Clearance process for Measurements , Framing&Enabling Works | 2016-08-14 → 2017-06-22 A (+312d) | 2016-08-18 → 2017-06-28 A (+314d) |  | 0% → 100% | 10d → none |  | resources none → Concrete Barrier |
| B39-LGLL-2ndP002 | MEP Ceiling Closure Clearance | 2016-10-04 → 2017-07-13 A (+282d) | 2016-10-11 → 2017-07-15 A (+277d) | 7d → 7.06d | 0% → 100% | 10d → none |  | resources none → Concrete Barrier |
| B39-LGLL-3rdP003 | Floor Tiling | 2016-10-29 → 2017-09-02 A (+308d) | 2016-11-13 → 2017-09-18 A (+309d) | 14d → 13.94d | 0% → 100% | 10d → none |  | resources none → Concrete Barrier [930 m] |
| B39-LGLL-C008 | Installation of Steel wall panelling | 2016-12-18 → 2017-09-06 A (+262d) | 2017-01-18 → 2017-09-24 A (+249d) | 28d → 27.89d | 0% → 100% | 4d → none |  | resources Steel [10 M3] → Concrete Barrier [39670 m] |
| B39-LGLL-C007 | Installation of Wooden wall panelling | 2016-12-29 → 2017-09-13 A (+258d) | 2017-01-14 → 2017-10-07 A (+266d) |  | 0% → 100% | 8d → none |  | resources Steel [10 M3] → Concrete Barrier [5000 m] |
| B39-LGLL-C003 | Paint Works | 2016-11-14 → 2017-10-18 A (+338d) | 2016-12-08 → 2018-01-28 A (+416d) | 21d → 21.11d | 0% → 100% | 10d → none |  | resources Steel [56 M3] → Concrete Barrier [831 m] |
| B39-LGLL-C006 | Installation of Glazing Works | 2017-01-23 → 2017-11-02 A (+283d) | 2017-02-02 → 2017-11-20 A (+291d) |  | 0% → 100% | 4d → none |  | resources Steel [10 M3] → Concrete Barrier [2000 m] |
| B39-LGLL-C004 | Installation of Metal Skirting | 2017-01-19 → 2017-12-13 A (+328d) | 2017-01-22 → 2018-02-01 A (+375d) | 3d → 3.11d | 0% → 100% | 4d → none |  | resources Steel [6 M3] → Concrete Barrier [131 m] |
| B39-LGLL-C005 | Installation of Light Fittings | 2016-12-10 → 2018-03-01 A (+446d) | 2016-12-26 → 2018-03-07 A (+436d) | 14d → 13.94d | 0% → 100% | 10d → none |  | resources Steel [10 M3] → Concrete Barrier [3573 m] |
| B39-LGLL-S009 | Snagging and De-Snagging | 2017-02-04 → 2018-04-26 (+446d) | 2017-02-11 → 2018-05-03 (+446d) |  |  | 4d → -379d |  | resources Steel [10 M3] → Concrete Barrier |
| 13 | **Variation No: 009** | 2016-07-04 → 2016-07-03 (-1d) | 2017-02-15 → 2018-06-25 (+495d) |  |  |  |  |  |
| 2 | **Engineering Phase** | 2016-07-05 → 2016-08-14 (+40d) | 2016-10-25 → 2018-02-28 (+491d) |  |  |  |  |  |
| 1 | **Shop Drawing Process** | 2016-07-05 → 2016-08-14 (+40d) | 2016-09-28 → 2017-11-02 (+400d) |  |  |  |  |  |
| 11 | **Bill 14-P1-PRE-FUNCTION** | 2016-07-05 → 2016-08-14 (+40d) | 2016-09-05 → 2017-08-31 (+360d) |  |  |  |  |  |
| A5190 | Preparation and Submission of Shop Drawing | 2016-07-05 → 2016-08-14 A (+40d) | 2016-08-15 → 2016-10-05 A (+51d) |  | 0% → 100% | 17d → none |  | resources Preparation and Submission Shop Drawing [28 h] → none |
| A5200 | Review and Approval of Shop Drawing | 2016-08-16 → 2016-08-15 A (-1d) | 2016-09-05 → 2017-08-31 A (+360d) |  | 0% → 100% | 23d → none |  | resources Eng Clinet Approval [21 h] → none |
| 12 | **Bill 15-P1-REST ROOMS (PRE-FUNTION)** | 2016-07-05 → 2016-08-14 (+40d) | 2016-09-05 → 2017-02-08 (+156d) |  |  |  |  |  |
| A5210 | Preparation and Submission of Shop Drawing | 2016-07-05 → 2016-08-14 A (+40d) | 2016-08-15 → 2016-10-05 A (+51d) |  | 0% → 100% | 17d → none |  | resources Preparation and Submission Shop Drawing [28 h] → none |
| A5220 | Review and Approval of Shop Drawing | 2016-08-16 → 2016-08-15 A (-1d) | 2016-09-05 → 2017-02-08 A (+156d) |  | 0% → 100% | 23d → none |  | resources Eng Clinet Approval [21 h] → none |
| 16 | **Bill 32 Work Play Suite** | 2016-07-05 → 2016-08-28 (+54d) | 2016-09-05 → 2017-05-07 (+244d) |  |  |  |  |  |
| A5830 | Preparation and Submission of Shop Drawing | 2016-07-05 → 2016-08-28 A (+54d) | 2016-08-15 → 2016-10-11 A (+57d) |  | 0% → 100% | 38d → none |  | resources Preparation and Submission Shop Drawing [28 h] → none |
| A5840 | Review and Approval of Shop Drawing | 2016-08-16 → 2016-09-29 A (+44d) | 2016-09-05 → 2017-05-07 A (+244d) |  | 0% → 100% | 54d → none |  | resources Eng Clinet Approval [21 h] → none |
| 13 | **Bill 33-P1-SCREENING ROOM** | 2016-07-05 → 2016-08-14 (+40d) | 2016-09-17 → 2017-08-25 (+342d) |  |  |  |  |  |
| A5230 | Preparation and Submission of Shop Drawing | 2016-07-05 → 2016-08-14 A (+40d) | 2016-08-24 → 2016-10-06 A (+43d) |  | 0% → 100% | 10d → none |  | resources Preparation and Submission Shop Drawing [28 h] → none |
| A5240 | Review and Approval of Shop Drawing | 2016-08-25 → 2016-08-15 A (-10d) | 2016-09-17 → 2017-08-25 A (+342d) |  | 0% → 100% | 14d → none |  | resources Eng Clinet Approval [21 h] → none |
| 14 | **BILL 37 - 7F - PUBLIC TOILETS** | 2016-07-05 → 2016-08-28 (+54d) | 2016-09-17 → 2017-08-22 (+339d) |  |  |  |  |  |
| A5340 | Preparation and Submission of Shop Drawing | 2016-07-05 → 2016-08-28 A (+54d) | 2016-08-24 → 2017-08-16 A (+357d) |  | 0% → 100% | 10d → none |  | resources Preparation and Submission Shop Drawing [28 h] → none |
| A5350 | Review and Approval of Shop Drawing | 2016-08-25 → 2016-09-11 A (+17d) | 2016-09-17 → 2017-08-22 A (+339d) |  | 0% → 100% | 14d → none |  | resources Eng Clinet Approval [21 h] → none |
| 2 | **BILL 17.2 - P1 - PUBLIC TOILETS** | 2016-07-05 → 2016-08-28 (+54d) | 2016-09-17 → 2017-08-26 (+343d) |  |  |  |  |  |

| ID | Task | Start | Finish | Complete | Total float | Other |
| --- | --- | --- | --- | --- | --- | --- |
| A1350 | Preparation and Submission of Shop Drawing | 2016-07-05 → 2016-08-28 A (+54d) | 2016-08-24 → 2016-10-06 A (+43d) | 0% → 100% | 10d → none | resources Preparation and Submission Shop Drawing [28 h] → none |
| A1360 | Review and Approval of Shop Drawing | 2016-08-25 → 2016-08-31 A (+6d) | 2016-09-17 → 2017-08-26 A (+343d) | 0% → 100% | 14d → none | resources Eng Clinet Approval [21 h] → none |
| 3 | **BILL 21 - P1 - KID'S CLUB** | 2016-07-05 → 2016-08-28 (+54d) | 2016-09-17 → 2017-08-30 (+347d) |  |  |  |
| A1370 | Preparation and Submission of Shop Drawing | 2016-07-05 → 2016-08-28 A (+54d) | 2016-08-24 → 2016-10-12 A (+49d) | 0% → 100% | 10d → none | resources Preparation and Submission Shop Drawing [28 h] → none |
| A1380 | Review and Approval of Shop Drawing | 2016-08-25 → 2016-09-11 A (+17d) | 2016-09-17 → 2017-08-30 A (+347d) | 0% → 100% | 14d → none | resources Eng Clinet Approval [21 h] → none |
| 4 | **BILL 24 - 8F - GYM - TOWER C** | 2016-07-05 → 2016-08-28 (+54d) | 2016-09-28 → 2017-11-02 (+400d) |  |  |  |
| A1390 | Preparation and Submission of Shop Drawing | 2016-07-05 → 2016-08-28 A (+54d) | 2016-09-04 → 2016-10-09 A (+35d) | 0% → 100% | 3d → none | resources Preparation and Submission Shop Drawing [28 h] → none |
| A1400 | Review and Approval of Shop Drawing | 2016-09-05 → 2016-09-11 A (+6d) | 2016-09-28 → 2017-11-02 A (+400d) | 0% → 100% | 3d → none | resources Eng Clinet Approval [21 h] → none |
| 5 | **BILL 25 - 8F - MALE AND FEMALE TOILETS FOR GYM - TOWER C** | 2016-07-05 → 2016-08-28 (+54d) | 2016-09-28 → 2017-09-01 (+338d) |  |  |  |
| A1410 | Preparation and Submission of Shop Drawing | 2016-07-05 → 2016-08-28 A (+54d) | 2016-09-04 → 2016-10-09 A (+35d) | 0% → 100% | 3d → none | resources Preparation and Submission Shop Drawing [28 h] → none |
| A1420 | Review and Approval of Shop Drawing | 2016-09-05 → 2016-08-31 A (-5d) | 2016-09-28 → 2017-09-01 A (+338d) | 0% → 100% | 3d → none | resources Eng Clinet Approval [21 h] → none |
| 7 | **BILL 27.1 - 8F - GYM - TOWER A** | 2016-07-05 → 2016-08-28 (+54d) | 2016-09-28 → 2017-10-31 (+398d) |  |  |  |
| A1450 | Preparation and Submission of Shop Drawing | 2016-07-05 → 2016-08-28 A (+54d) | 2016-09-04 → 2016-10-09 A (+35d) | 0% → 100% | 3d → none | resources Preparation and Submission Shop Drawing [28 h] → none |
| A1460 | Review and Approval of Shop Drawing | 2016-09-05 → 2016-09-11 A (+6d) | 2016-09-28 → 2017-10-31 A (+398d) | 0% → 100% | 3d → none | resources Eng Clinet Approval [21 h] → none |
| 8 | **BILL 27.2 - 8F - GYM - TOWER B** | 2016-07-05 → 2016-08-28 (+54d) | 2016-09-28 → 2017-10-30 (+397d) |  |  |  |
| A1470 | Preparation and Submission of Shop Drawing | 2016-07-05 → 2016-08-28 A (+54d) | 2016-09-04 → 2016-10-09 A (+35d) | 0% → 100% | 3d → none | resources Preparation and Submission Shop Drawing [28 h] → none |
| A1480 | Review and Approval of Shop Drawing | 2016-09-05 → 2016-09-11 A (+6d) | 2016-09-28 → 2017-10-30 A (+397d) | 0% → 100% | 3d → none | resources Eng Clinet Approval [21 h] → none |
| 9 | **BILL 27.3 - 8F - GYM - TOWER D** | 2016-07-05 → 2016-08-28 (+54d) | 2016-09-28 → 2017-08-30 (+336d) |  |  |  |
| A1490 | Preparation and Submission of Shop Drawing | 2016-07-05 → 2016-08-28 A (+54d) | 2016-09-04 → 2016-10-09 A (+35d) | 0% → 100% | 3d → none | resources Preparation and Submission Shop Drawing [28 h] → none |
| A1500 | Review and Approval of Shop Drawing | 2016-09-05 → 2016-09-11 A (+6d) | 2016-09-28 → 2017-08-30 A (+336d) | 0% → 100% | 3d → none | resources Eng Clinet Approval [21 h] → none |
| 15 | **BILL 38 - UG - GROCERY - TOWER A** | 2016-07-05 → 2016-08-28 (+54d) | 2016-09-28 → 2017-08-30 (+336d) |  |  |  |
| A5580 | Preparation and Submission of Shop Drawing | 2016-07-05 → 2016-08-28 A (+54d) | 2016-09-04 → 2016-10-16 A (+42d) | 0% → 100% | 3d → none | resources Preparation and Submission Shop Drawing [28 h] → none |
| A5590 | Review and Approval of Shop Drawing | 2016-09-05 → 2016-09-29 A (+24d) | 2016-09-28 → 2017-08-30 A (+336d) | 0% → 100% | 3d → none | resources Eng Clinet Approval [21 h] → none |
| 2 | **Material Process** | 2016-07-05 → 2016-08-14 (+40d) | 2016-10-25 → 2018-02-28 (+491d) |  |  |  |
| 1 | **Wall Material** | 2016-07-05 → 2016-08-14 (+40d) | 2016-10-19 → 2017-11-08 (+385d) |  |  |  |
| 1 | **Preparation and Submission** | 2016-07-05 → 2016-08-14 (+40d) | 2016-09-27 → 2017-10-24 (+392d) |  |  |  |
| A1690 | Preparation and Submission of Paint Finish to Walls | 2016-07-05 → 2016-08-14 A (+40d) | 2016-07-17 → 2017-10-18 A (+458d) | 0% → 100% | 6d → none | resources Preparation and Submission Material [5 h] → none |
| A1720 | Preparation and Submission of Metal Finish to Wall | 2016-07-27 → 2016-08-14 A (+18d) | 2016-08-04 → 2017-10-19 A (+441d) | 0% → 100% | 6d → none | resources Preparation and Submission Material [5 h] → none |
| A1760 | Preparation and Submission of Glass/Mirrors | 2016-09-05 → 2016-08-14 A (-22d) | 2016-09-18 → 2017-10-19 A (+396d) | 0% → 100% | 6d → none | resources Preparation and Submission Material [5 h] → none |
| A1700 | Preparation and Submission of Stone Finish to Wall | 2016-07-05 → 2016-08-28 A (+54d) | 2016-07-17 → 2017-04-27 A (+284d) | 0% → 100% | 6d → none | resources Preparation and Submission Material [5 h] → none |
| A1710 | Preparation and Submission of Wall Tiling | 2016-07-18 → 2016-09-04 A (+48d) | 2016-07-26 → 2017-09-21 A (+422d) | 0% → 100% | 6d → none | resources Preparation and Submission Material [5 h] → none |
| A1730 | Preparation and Submission of Wall Paper | 2016-08-07 → 2016-09-04 A (+28d) | 2016-08-15 → 2017-10-24 A (+435d) | 0% → 100% | 6d → none | resources Preparation and Submission Material [5 h] → none |
| A1740 | Preparation and Submission of Clear Acrylic Panel | 2016-08-16 → 2016-09-04 A (+19d) | 2016-08-24 → 2017-03-09 A (+197d) | 0% → 100% | 6d → none | resources Preparation and Submission Material [5 h] → none |
| A1750 | Preparation and Submission of Wood Wall Panels | 2016-08-25 → 2016-09-04 A (+10d) | 2016-09-04 → 2017-10-05 A (+396d) | 0% → 100% | 6d → none | resources Preparation and Submission Material [5 h] → none |
| A1770 | Preparation and Submission of Brick Panel | 2016-09-19 → 2016-09-18 A (-1d) | 2016-09-27 → 2017-10-11 A (+379d) | 0% → 100% | 6d → none | resources Preparation and Submission Material [5 h] → none |
| 2 | **Review and Approval** | 2016-07-18 → 2016-08-15 (+28d) | 2016-10-19 → 2017-11-08 (+385d) |  |  |  |
| A1810 | Review and Approval of Metal Finish to Wall | 2016-08-05 → 2016-08-15 A (+10d) | 2016-08-25 → 2017-10-26 A (+427d) | 0% → 100% | 22d → none | resources Eng Clinet Approval [21 h] → none |
| A1780 | Review and Approval of Paint Finish to Walls | 2016-07-18 → 2016-08-19 A (+32d) | 2016-08-07 → 2017-10-25 A (+444d) | 0% → 100% | 89d → none | resources Eng Clinet Approval [21 h] → none |
| A1850 | Review and Approval of Glass/Mirrors | 2016-09-19 → 2016-08-21 A (-29d) | 2016-10-10 → 2017-10-24 A (+379d) | 0% → 100% | 8d → none | resources Eng Clinet Approval [21 h] → none |
| A1820 | Review and Approval of Wall Paper | 2016-08-16 → 2016-09-04 A (+19d) | 2016-09-05 → 2017-10-30 A (+420d) | 0% → 100% | 84d → none | resources Eng Clinet Approval [21 h] → none |
| A1840 | Review and Approval of Wood Wall Panels | 2016-09-05 → 2016-09-04 A (-1d) | 2016-09-28 → 2017-10-18 A (+385d) | 0% → 100% | 11d → none | resources Eng Clinet Approval [21 h] → none |
| A1830 | Review and Approval of Clear Acrylic Panel | 2016-08-25 → 2016-09-12 A (+18d) | 2016-09-17 → 2017-03-26 A (+190d) | 0% → 100% | 17d → none | resources Eng Clinet Approval [21 h] → none |
| A1860 | Review and Approval of Brick Panel | 2016-09-28 → 2016-09-26 A (-2d) | 2016-10-19 → 2017-10-25 A (+371d) | 0% → 100% | 8d → none | resources Eng Clinet Approval [21 h] → none |
| A1790 | Review and Approval of Stone Finish to Wall | 2016-07-18 → 2016-10-20 A (+94d) | 2016-08-07 → 2017-04-05 A (+241d) | 0% → 100% | 40d → none | resources Eng Clinet Approval [21 h] → none |
| A1800 | Review and Approval of Wall Tiling | 2016-07-27 → 2016-10-23 A (+88d) | 2016-08-16 → 2017-11-08 A (+449d) | 0% → 100% | 31d → none | resources Eng Clinet Approval [21 h] → none |
| 2 | **Floor Material** | 2016-07-05 → 2016-08-14 (+40d) | 2016-10-19 → 2017-09-14 (+330d) |  |  |  |
| 1 | **Preparation and Submission** | 2016-07-05 → 2016-08-14 (+40d) | 2016-09-27 → 2017-09-12 (+350d) |  |  |  |
| A1530 | Preparation and Submission Metal Flooring | 2016-07-05 → 2016-08-14 A (+40d) | 2016-07-17 → 2017-08-31 A (+410d) | 0% → 100% | 12d → none | resources Preparation and Submission Material [5 h] → none |
| A1570 | Preparation and Submission Carpet Flooring | 2016-08-16 → 2016-08-14 A (-2d) | 2016-08-24 → 2017-04-03 A (+222d) | 0% → 100% | 25d → none | resources Preparation and Submission Material [5 h] → none |
| A1540 | Preparation and Submission Wooden Flooring | 2016-07-18 → 2016-08-28 A (+41d) | 2016-07-26 → 2017-09-07 A (+408d) | 0% → 100% | 12d → none | resources Preparation and Submission Material [5 h] → none |
| A1590 | Preparation and Submission Floor Painting | 2016-09-05 → 2016-08-28 A (-8d) | 2016-09-18 → 2017-09-12 A (+359d) | 0% → 100% | 25d → none | resources Preparation and Submission Material [5 h] → none |
| A1550 | Preparation and Submission Floor Tiling | 2016-07-27 → 2016-09-04 A (+39d) | 2016-08-04 → 2017-09-07 A (+399d) | 0% → 100% | 12d → none | resources Preparation and Submission Material [5 h] → none |
| A1560 | Preparation and Submission Stone Flooring | 2016-08-07 → 2016-09-04 A (+28d) | 2016-08-15 → 2017-08-31 A (+381d) | 0% → 100% | 12d → none | resources Preparation and Submission Material [5 h] → none |
| A1580 | Preparation and Submission Vinyl Flooring | 2016-08-25 → 2016-09-18 A (+24d) | 2016-09-04 → 2017-03-28 A (+205d) | 0% → 100% | 25d → none | resources Preparation and Submission Material [5 h] → none |
| A1600 | Preparation and Submission Rubber Flooring | 2016-09-19 → 2016-09-18 A (-1d) | 2016-09-27 → 2017-09-12 A (+350d) | 0% → 100% | 25d → none | resources Preparation and Submission Material [5 h] → none |
| 2 | **Review and Approval** | 2016-07-18 → 2016-08-15 (+28d) | 2016-10-19 → 2017-09-14 (+330d) |  |  |  |
| A1650 | Review and Approval Carpet Flooring | 2016-08-25 → 2016-08-15 A (-10d) | 2016-09-17 → 2017-04-13 A (+208d) | 0% → 100% | 52d → none | resources Eng Clinet Approval [21 h] → none |
| A1610 | Review and Approval Metal Flooring | 2016-07-18 → 2016-08-19 A (+32d) | 2016-08-07 → 2017-09-08 A (+397d) | 0% → 100% | 47d → none | resources Eng Clinet Approval [21 h] → none |
| A1670 | Review and Approval Floor Painting | 2016-09-19 → 2016-09-14 A (-5d) | 2016-10-10 → 2017-09-14 A (+339d) | 0% → 100% | 59d → none | resources Eng Clinet Approval [21 h] → none |
| A1660 | Review and Approval Vinyl Flooring | 2016-09-05 → 2016-09-26 A (+21d) | 2016-09-28 → 2017-04-13 A (+197d) | 0% → 100% | 48d → none | resources Eng Clinet Approval [21 h] → none |
| A1680 | Review and Approval Rubber Flooring | 2016-09-28 → 2016-09-27 A (-1d) | 2016-10-19 → 2017-09-14 A (+330d) | 0% → 100% | 35d → none | resources Eng Clinet Approval [21 h] → none |
| A1620 | Review and Approval Wooden Flooring | 2016-07-27 → 2016-10-23 A (+88d) | 2016-08-16 → 2017-09-09 A (+389d) | 0% → 100% | 48d → none | resources Eng Clinet Approval [21 h] → none |
| A1630 | Review and Approval Floor Tiling | 2016-08-05 → 2016-10-23 A (+79d) | 2016-08-25 → 2017-09-11 A (+382d) | 0% → 100% | 27d → none | resources Eng Clinet Approval [21 h] → none |
| A1640 | Review and Approval Stone Flooring | 2016-08-16 → 2016-10-23 A (+68d) | 2016-09-05 → 2017-09-12 A (+372d) | 0% → 100% | 16d → none | resources Eng Clinet Approval [21 h] → none |
| 3 | **Celing Material** | 2016-07-05 → 2016-08-14 (+40d) | 2016-08-30 → 2016-09-16 (+17d) |  |  |  |
| 1 | **Preparation and Submission** | 2016-07-05 → 2016-08-14 (+40d) | 2016-08-09 → 2016-09-07 (+29d) |  |  |  |
| A1870 | Preparation and Submission of Suspended Ceiling | 2016-07-05 → 2016-08-14 A (+40d) | 2016-07-20 → 2016-09-05 A (+47d) | 0% → 100% | 0d → none | resources Preparation and Submission Material [5 h] → none |
| A1900 | Preparation and Submission of Painting to Ceiling | 2016-08-01 → 2016-08-14 A (+13d) | 2016-08-09 → 2016-09-07 A (+29d) | 0% → 100% | 26d → none | resources Preparation and Submission Material [5 h] → none |
| A1890 | Preparation and Submission of Gypsum Ceiling | 2016-07-21 → 2016-08-21 A (+31d) | 2016-07-31 → 2016-09-06 A (+37d) | 0% → 100% | 19d → none | resources Preparation and Submission Material [5 h] → none |
| 2 | **Review and Approval** | 2016-07-21 → 2016-08-19 (+29d) | 2016-08-30 → 2016-09-16 (+17d) |  |  |  |

| ID | Task | Start | Finish | Complete | Total float | Predecessors | Other |
| --- | --- | --- | --- | --- | --- | --- | --- |
| A1910 | Review and Approval of Suspended Ceiling | 2016-07-21 → 2016-08-19 A (+29d) | 2016-08-10 → 2016-09-15 A (+36d) | 0% → 100% | 0d → none |  | resources Eng Clinet Approval [21 h] → none |
| A1920 | Review and Approval of Gypsum Ceiling | 2016-08-01 → 2016-08-21 A (+20d) | 2016-08-21 → 2016-09-16 A (+26d) | 0% → 100% | 25d → none |  | resources Eng Clinet Approval [21 h] → none |
| A1930 | Review and Approval of Painting to Ceiling | 2016-08-10 → 2016-08-21 A (+11d) | 2016-08-30 → 2016-09-16 A (+17d) | 0% → 100% | 38d → none |  | resources Eng Clinet Approval [21 h] → none |
| 4 | **Carpentry and Joinery Material** | 2016-07-05 → 2016-09-04 (+61d) | 2016-09-28 → 2017-10-10 (+377d) |  |  |  |  |
| 1 | **Preparation and Submission** | 2016-07-05 → 2016-09-04 (+61d) | 2016-09-04 → 2017-09-21 (+382d) |  |  |  |  |
| A1940 | Preparation and Submission Internal Doors , Frames , Ironmongery and Hardware | 2016-07-05 → 2016-09-04 A (+61d) | 2016-07-17 → 2017-09-21 A (+431d) | 0% → 100% | 12d → none |  | resources Preparation and Submission Material [5 h] → none |
| A1950 | Preparation and Submission Vanities & Counters | 2016-07-18 → 2016-09-04 A (+48d) | 2016-07-26 → 2017-08-08 A (+378d) | 0% → 100% | 12d → none |  | resources Preparation and Submission Material [5 h] → none |
| A1960 | Preparation and Submission Shelves | 2016-07-27 → 2016-09-04 A (+39d) | 2016-08-04 → 2017-08-15 A (+376d) | 0% → 100% | 12d → none |  | resources Preparation and Submission Material [5 h] → none |
| A1970 | Preparation and Submission Seatings | 2016-08-07 → 2016-09-04 A (+28d) | 2016-08-15 → 2017-08-15 A (+365d) | 0% → 100% | 12d → none |  | resources Preparation and Submission Material [5 h] → none |
| A1980 | Preparation and Submission Wardrobes & Cabinets | 2016-08-16 → 2016-09-04 A (+19d) | 2016-08-24 → 2017-08-14 A (+355d) | 0% → 100% | 12d → none |  | resources Preparation and Submission Material [5 h] → none |
| A1990 | Preparation and Submission Tables | 2016-08-25 → 2016-09-04 A (+10d) | 2016-09-04 → 2017-08-02 A (+332d) | 0% → 100% | 15d → none |  | resources Preparation and Submission Material [5 h] → none |
| 2 | **Review and Approval** | 2016-07-18 → 2016-10-23 (+97d) | 2016-09-28 → 2017-10-10 (+377d) |  |  |  |  |
| A2010 | Review and Approval Vanities & Counters | 2016-07-27 → 2016-10-23 A (+88d) | 2016-08-16 → 2017-09-05 A (+385d) | 0% → 100% | 39d → none |  | resources Eng Clinet Approval [21 h] → none |
| A2020 | Review and Approval Shelves | 2016-08-05 → 2016-10-23 A (+79d) | 2016-08-25 → 2017-09-03 A (+374d) | 0% → 100% | 45d → none |  | resources Eng Clinet Approval [21 h] → none |
| A2030 | Review and Approval Seatings | 2016-08-16 → 2016-10-23 A (+68d) | 2016-09-05 → 2017-09-06 A (+366d) | 0% → 100% | 40d → none |  | resources Eng Clinet Approval [21 h] → none |
| A2040 | Review and Approval Wardrobes & Cabinets | 2016-08-25 → 2016-10-23 A (+59d) | 2016-09-17 → 2017-08-30 A (+347d) | 0% → 100% | 18d → none |  | resources Eng Clinet Approval [21 h] → none |
| A2050 | Review and Approval Tables | 2016-09-05 → 2016-10-23 A (+48d) | 2016-09-28 → 2017-09-23 A (+360d) | 0% → 100% | 21d → none |  | resources Eng Clinet Approval [21 h] → none |
| A2000 | Review and Approval Internal Doors , Frames , Ironmongery and Hardware | 2016-07-18 → 2016-10-23 A (+97d) | 2016-08-07 → 2017-10-10 A (+429d) | 0% → 100% | 81d → none |  | resources Eng Clinet Approval [21 h] → none |
| 5 | **Lighting Points and Fittings** | 2016-07-05 → 2016-09-18 (+75d) | 2016-10-25 → 2016-10-01 (-24d) |  |  |  |  |
| 1 | **Preparation and Submission** | 2016-07-05 → 2016-09-18 (+75d) | 2016-10-04 → 2016-10-01 (-3d) |  |  |  |  |
| A2060 | Preparation and Submission Recessed spotlight | 2016-07-05 → 2016-09-18 A (+75d) | 2016-07-20 → 2016-10-01 A (+73d) | 0% → 100% | 11d → none |  | resources Preparation and Submission Material [5 h] → none |
| A2070 | Preparation and Submission Indirect LED Strip | 2016-07-21 → 2016-09-18 A (+59d) | 2016-08-03 → 2016-10-01 A (+59d) | 0% → 100% | 11d → none |  | resources Preparation and Submission Material [5 h] → none |
| A2080 | Preparation and Submission Cover Plates | 2016-08-04 → 2016-09-18 A (+45d) | 2016-08-17 → 2016-10-01 A (+45d) | 0% → 100% | 11d → none |  | resources Preparation and Submission Material [5 h] → none |
| A2090 | Preparation and Submission Recessed Down Light | 2016-08-18 → 2016-09-18 A (+31d) | 2016-08-31 → 2016-10-01 A (+31d) | 0% → 100% | 11d → none |  | resources Preparation and Submission Material [5 h] → none |
| A2100 | Preparation and Submission Track Light | 2016-09-01 → 2016-09-18 A (+17d) | 2016-09-19 → 2016-10-01 A (+12d) | 0% → 100% | 11d → none |  | resources Preparation and Submission Material [5 h] → none |
| A2110 | Preparation and Submission LED Pin Light | 2016-09-20 → 2016-09-18 A (-2d) | 2016-10-04 → 2016-10-01 A (-3d) | 0% → 100% | 11d → none |  | resources Preparation and Submission Material [5 h] → none |
| 2 | **Review and Approval** | 2016-07-21 → 2016-09-18 (+59d) | 2016-10-25 → 2016-10-01 (-24d) |  |  |  |  |
| A2120 | Review and Approval Recessed spotlight | 2016-07-21 → 2016-09-18 A (+59d) | 2016-08-10 → 2016-10-01 A (+52d) | 0% → 100% | 87d → none |  | resources Eng Clinet Approval [21 h] → none |
| A2130 | Review and Approval Indirect LED Strip | 2016-08-04 → 2016-09-18 A (+45d) | 2016-08-24 → 2016-10-01 A (+38d) | 0% → 100% | 73d → none |  | resources Eng Clinet Approval [21 h] → none |
| A2140 | Review and Approval Cover Plates | 2016-08-18 → 2016-09-18 A (+31d) | 2016-09-07 → 2016-10-01 A (+24d) | 0% → 100% | 59d → none |  | resources Eng Clinet Approval [21 h] → none |
| A2150 | Review and Approval Recessed Down Light | 2016-09-01 → 2016-09-18 A (+17d) | 2016-09-24 → 2016-10-01 A (+7d) | 0% → 100% | 45d → none |  | resources Eng Clinet Approval [21 h] → none |
| A2160 | Review and Approval Track Light | 2016-09-20 → 2016-09-18 A (-2d) | 2016-10-11 → 2016-10-01 A (-10d) | 0% → 100% | 29d → none |  | resources Eng Clinet Approval [21 h] → none |
| A2170 | Review and Approval LED Pin Light | 2016-10-05 → 2016-09-18 A (-17d) | 2016-10-25 → 2016-10-01 A (-24d) | 0% → 100% | 15d → none |  | resources Eng Clinet Approval [21 h] → none |
| 6 | **Aluminium and Glazing Works** | 2016-07-05 → 2016-08-28 (+54d) | 2016-10-19 → 2017-11-23 (+400d) |  |  |  |  |
| 1 | **Preparation and Submission** | 2016-07-05 → 2016-08-28 (+54d) | 2016-09-27 → 2017-11-09 (+408d) |  |  |  |  |
| A2180 | Preparation and Submission Internal Glazed Partitions/ Dividing Screens | 2016-07-05 → 2016-08-28 A (+54d) | 2016-07-26 → 2017-08-16 A (+386d) | 0% → 100% | 13d → none |  | resources Preparation and Submission Material [5 h] → none |
| A2190 | Preparation and Submission Internal Glazed Doors | 2016-07-27 → 2016-09-04 A (+39d) | 2016-08-15 → 2017-05-09 A (+267d) | 0% → 100% | 13d → none |  | resources Preparation and Submission Material [5 h] → none |
| A2200 | Preparation and Submission Windows | 2016-08-16 → 2016-09-04 A (+19d) | 2016-09-04 → 2017-11-08 A (+430d) | 0% → 100% | 13d → none |  | resources Preparation and Submission Material [5 h] → none |
| A2210 | Preparation and Submission Balustrades and Railing | 2016-09-05 → 2016-09-04 A (-1d) | 2016-09-27 → 2017-11-09 A (+408d) | 0% → 100% | 13d → none |  | resources Preparation and Submission Material [5 h] → none |
| 2 | **Review and Approval** | 2016-07-27 → 2016-09-04 (+39d) | 2016-10-19 → 2017-11-23 (+400d) |  |  |  |  |
| A2220 | Review and Approval Internal Glazed Partitions/ Dividing Screens | 2016-07-27 → 2016-09-04 A (+39d) | 2016-08-16 → 2017-08-21 A (+370d) | 0% → 100% | 83d → none |  | resources Eng Clinet Approval [21 h] → none |
| A2230 | Review and Approval Internal Glazed Doors | 2016-08-16 → 2016-09-04 A (+19d) | 2016-09-05 → 2017-05-27 A (+264d) | 0% → 100% | 63d → none |  | resources Eng Clinet Approval [21 h] → none |
| A2250 | Review and Approval Balustrades and Railing | 2016-09-28 → 2016-09-04 A (-24d) | 2016-10-19 → 2017-11-15 A (+392d) | 0% → 100% | 19d → none |  | resources Eng Clinet Approval [21 h] → none |
| A2240 | Review and Approval Windows | 2016-09-05 → 2016-09-15 A (+10d) | 2016-09-28 → 2017-11-23 A (+421d) | 0% → 100% | 37d → none |  | resources Eng Clinet Approval [21 h] → none |
| 7 | **Sanitary Appliances and Accessories** | 2016-07-05 → 2016-09-18 (+75d) | 2016-09-17 → 2018-02-28 (+529d) |  |  |  |  |
| 1 | **Preparation and Submission** | 2016-07-05 → 2016-09-18 (+75d) | 2016-08-24 → 2018-02-24 (+549d) |  |  |  |  |
| A2980 | Preparation and Submission of Sanitary Equipment & Fixture | 2016-07-05 → 2016-09-18 A (+75d) | 2016-08-24 → 2018-02-24 A (+549d) | 0% → 100% | 38d → none |  | resources Preparation and Submission Material [21 h] → none |
| 2 | **Review and Approval** | 2016-08-25 → 2016-11-06 (+73d) | 2016-09-17 → 2018-02-28 (+529d) |  |  |  |  |
| A2990 | Review and Approval of Sanitary Equipment & Fixture | 2016-08-25 → 2016-11-06 A (+73d) | 2016-09-17 → 2018-02-28 A (+529d) | 0% → 100% | 56d → none |  | resources Eng Clinet Approval [21 h] → none |
| 3 | **Procurement Phase** | 2016-08-07 → 2016-08-21 (+14d) | 2017-01-12 → 2018-05-03 (+476d) |  |  |  |  |
| 2 | **Floor Material** | 2016-08-07 → 2016-08-21 (+14d) | 2016-12-30 → 2018-02-06 (+403d) |  |  |  |  |
| A2380 | Fabrication and Delivery Carpet Flooring | 2016-09-17 → 2016-08-21 A (-27d) | 2016-12-13 → 2017-10-05 A (+296d) | 0% → 100% | 52.62d → none | A1650, Review and Approval of Shop Drawing FF+21d, A1360 FF+21d, A1380 FF+21d, A1400 FF+21d, A1420 FF+21d, Review and Approval of Shop Drawing FF+21d, A1460 FF+21d, A1480 FF+21d, A1500 FF+21d, Review and Approval of Shop Drawing FF+21d, A5200 FF+21d, A5220 FF+21d, A5240 FF+21d, A5350 FF+21d, A5590 FF+21d, A1000 → A1420 FF+21d, A1500 FF+21d, A1000, A1650, A1360 FF+21d, A1380 FF+21d, A5200 FF+21d, A5240 FF+21d, A1480 FF+21d, A1460 FF+21d, A5590 FF+21d, A5220 FF+21d, A5350 FF+21d, A1400 FF+21d | resources Procurement [84 h] → none |
| A2340 | Fabrication and Delivery Metal Flooring | 2016-08-07 → 2016-09-29 A (+53d) | 2016-10-20 → 2018-02-02 A (+470d) | 0% → 100% | 47.62d → none | A1610, Review and Approval of Shop Drawing FF+21d, A1360 FF+21d, A1380 FF+21d, A1400 FF+21d, A1420 FF+21d, Review and Approval of Shop Drawing FF+21d, A1460 FF+21d, A1480 FF+21d, A1500 FF+21d, Review and Approval of Shop Drawing FF+21d, A5200 FF+21d, A5220 FF+21d, A5240 FF+21d, A5350 FF+21d, A5590 FF+21d, A1000 → A1360 FF+21d, A1380 FF+21d, A1480 FF+21d, A1610, A1000, A1420 FF+21d, A1460 FF+21d, A1500 FF+21d, A5350 FF+21d, A5220 FF+21d, A1400 FF+21d, A5590 FF+21d, A5200 FF+21d, A5240 FF+21d | resources Procurement [70 h] → none |
| A2360 | Fabrication and Delivery Floor Tiling | 2016-09-01 → 2016-10-16 A (+45d) | 2016-11-14 → 2017-10-30 A (+350d) | 0% → 100% | 21.31d → none | A1630, Review and Approval of Shop Drawing FF+21d, A1360 FF+21d, A1380 FF+21d, A1400 FF+21d, A1420 FF+21d, Review and Approval of Shop Drawing FF+21d, A1460 FF+21d, A1480 FF+21d, A1500 FF+21d, Review and Approval of Shop Drawing FF+21d, A5200 FF+21d, A5220 FF+21d, A5240 FF+21d, A5350 FF+21d, A5590 FF+21d, A1000 → A5590 FF+21d, A5200 FF+21d, A5240 FF+21d, A1630, A5220 FF+21d, A1400 FF+21d, A1460 FF+21d, A1380 FF+21d, A1420 FF+21d, A1000, A1360 FF+21d, A1500 FF+21d, A5350 FF+21d, A1480 FF+21d | resources Procurement [70 h] → none |
| A2370 | Fabrication and Delivery Stone Flooring | 2016-09-05 → 2016-12-05 A (+91d) | 2016-11-18 → 2017-12-06 A (+383d) | 0% → 100% | 16.62d → none | A1640, Review and Approval of Shop Drawing FF+21d, A1360 FF+21d, A1380 FF+21d, A1400 FF+21d, A1420 FF+21d, Review and Approval of Shop Drawing FF+21d, A1460 FF+21d, A1480 FF+21d, A1500 FF+21d, Review and Approval of Shop Drawing FF+21d, A5200 FF+21d, A5220 FF+21d, A5240 FF+21d, A5350 FF+21d, A5590 FF+21d, A1000 → A1420 FF+21d, A5220 FF+21d, A5350 FF+21d, A1640, A1500 FF+21d, A1460 FF+21d, A5590 FF+21d, A1480 FF+21d, A1360 FF+21d, A1400 FF+21d, A5200 FF+21d, A5240 FF+21d, A1380 FF+21d, A1000 | resources Procurement [70 h] → none |
| A2350 | Fabrication and Delivery Wooden Flooring | 2016-08-16 → 2017-01-04 A (+141d) | 2016-10-29 → 2017-11-04 A (+371d) | 0% → 100% | 48.62d → none | A1620, Review and Approval of Shop Drawing FF+21d, A1360 FF+21d, A1380 FF+21d, A1400 FF+21d, A1420 FF+21d, Review and Approval of Shop Drawing FF+21d, A1460 FF+21d, A1480 FF+21d, A1500 FF+21d, Review and Approval of Shop Drawing FF+21d, A5200 FF+21d, A5220 FF+21d, A5240 FF+21d, A5350 FF+21d, A5590 FF+21d, A1000 → A5220 FF+21d, A5200 FF+21d, A1000, A1420 FF+21d, A1460 FF+21d, A1360 FF+21d, A1380 FF+21d, A1400 FF+21d, A1500 FF+21d, A5590 FF+21d, A1480 FF+21d, A1620, A5350 FF+21d, A5240 FF+21d | resources Procurement [70 h] → none |
| A2390 | Fabrication and Delivery Vinyl Flooring | 2016-09-28 → 2018-01-11 A (+470d) | 2016-12-17 → 2018-02-04 A (+414d) | 0% → 100% | 48.62d → none | A1660, Review and Approval of Shop Drawing FF+21d, A1360 FF+21d, A1380 FF+21d, A1400 FF+21d, A1420 FF+21d, Review and Approval of Shop Drawing FF+21d, A1460 FF+21d, A1480 FF+21d, A1500 FF+21d, Review and Approval of Shop Drawing FF+21d, A5200 FF+21d, A5220 FF+21d, A5240 FF+21d, A5350 FF+21d, A5590 FF+21d, A1000 → A1420 FF+21d, A5350 FF+21d, A1000, A1380 FF+21d, A1360 FF+21d, A1500 FF+21d, A5200 FF+21d, A1480 FF+21d, A1660, A1400 FF+21d, A1460 FF+21d, A5240 FF+21d, A5590 FF+21d, A5220 FF+21d | resources Procurement [77 h] → none |
| A2400 | Fabrication and Delivery Floor Painting | 2016-10-10 → 2018-01-11 A (+458d) | 2016-11-21 → 2018-02-06 A (+442d) | 0% → 100% | 59d → none | A1670, Review and Approval of Shop Drawing FF+21d, A1360 FF+21d, A1380 FF+21d, A1400 FF+21d, A1420 FF+21d, Review and Approval of Shop Drawing FF+21d, A1460 FF+21d, A1480 FF+21d, A1500 FF+21d, Review and Approval of Shop Drawing FF+21d, A5200 FF+21d, A5220 FF+21d, A5240 FF+21d, A5350 FF+21d, A5590 FF+21d, A1000 → A5350 FF+21d, A5240 FF+21d, A1380 FF+21d, A5590 FF+21d, A1670, A1420 FF+21d, A1460 FF+21d, A1000, A5200 FF+21d, A1480 FF+21d, A1360 FF+21d, A1500 FF+21d, A5220 FF+21d, A1400 FF+21d | resources Procurement [42 h] → none |
| A2410 | Fabrication and Delivery Rubber Flooring | 2016-10-19 → 2018-01-13 A (+451d) | 2016-12-30 → 2018-02-04 A (+401d) | 0% → 100% | 35.62d → none | A1680, Review and Approval of Shop Drawing FF+21d, A1360 FF+21d, A1380 FF+21d, A1400 FF+21d, A1420 FF+21d, Review and Approval of Shop Drawing FF+21d, A1460 FF+21d, A1480 FF+21d, A1500 FF+21d, Review and Approval of Shop Drawing FF+21d, A5200 FF+21d, A5220 FF+21d, A5240 FF+21d, A5350 FF+21d, A5590 FF+21d, A1000 → A1000, A1380 FF+21d, A5200 FF+21d, A1480 FF+21d, A1360 FF+21d, A1460 FF+21d, A5350 FF+21d, A5220 FF+21d, A1400 FF+21d, A1680, A1420 FF+21d, A5590 FF+21d, A5240 FF+21d, A1500 FF+21d | resources Procurement [70 h] → none |
| 1 | **Wall Material** | 2016-08-14 → 2016-09-04 (+21d) | 2016-12-02 → 2018-02-07 (+432d) |  |  |  |  |
| A2510 | Fabrication and Delivery of Paint Finish to Walls | 2016-10-06 → 2016-09-04 A (-32d) | 2016-10-20 → 2017-12-10 A (+416d) | 0% → 100% | 33.62d → none | A1780, Review and Approval of Shop Drawing FF+21d, A1360 FF+21d, A1380 FF+21d, A1400 FF+21d, A1420 FF+21d, Review and Approval of Shop Drawing FF+21d, A1460 FF+21d, A1480 FF+21d, A1500 FF+21d, Review and Approval of Shop Drawing FF+21d, A5200 FF+21d, A5220 FF+21d, A5240 FF+21d, A5350 FF+21d, A5590 FF+21d → A1380 FF+21d, A1420 FF+21d, A5200 FF+21d, A5240 FF+21d, A5590 FF+21d, A5220 FF+21d, A1400 FF+21d, A1360 FF+21d, A1500 FF+21d, A5350 FF+21d, A1460 FF+21d, A1480 FF+21d, A1780 | resources Procurement [14 h] → none |
| A2540 | Fabrication and Delivery of Metal Finish to Wall | 2016-08-25 → 2016-09-29 A (+35d) | 2016-10-31 → 2018-02-07 A (+464d) | 0% → 100% | 22.62d → none | A1810, Review and Approval of Shop Drawing FF+21d, A1360 FF+21d, A1380 FF+21d, A1400 FF+21d, A1420 FF+21d, Review and Approval of Shop Drawing FF+21d, A1460 FF+21d, A1480 FF+21d, A1500 FF+21d, Review and Approval of Shop Drawing FF+21d, A5200 FF+21d, A5220 FF+21d, A5240 FF+21d, A5350 FF+21d, A5590 FF+21d → A1460 FF+21d, A1480 FF+21d, A1420 FF+21d, A1500 FF+21d, A5240 FF+21d, A5350 FF+21d, A1810, A5590 FF+21d, A5200 FF+21d, A1360 FF+21d, A1380 FF+21d, A5220 FF+21d, A1400 FF+21d | resources Procurement [63 h] → none |
| A2570 | Fabrication and Delivery of Wood Wall Panels | 2016-09-28 → 2016-09-29 A (+1d) | 2016-12-02 → 2017-12-02 A (+365d) | 0% → 100% | 11.62d → none | A1840, Review and Approval of Shop Drawing FF+21d, A1360 FF+21d, A1380 FF+21d, A1400 FF+21d, A1420 FF+21d, Review and Approval of Shop Drawing FF+21d, A1460 FF+21d, A1480 FF+21d, A1500 FF+21d, Review and Approval of Shop Drawing FF+21d, A5200 FF+21d, A5220 FF+21d, A5240 FF+21d, A5350 FF+21d, A5590 FF+21d → A1380 FF+21d, A5240 FF+21d, A5590 FF+21d, A1500 FF+21d, A1420 FF+21d, A5220 FF+21d, A5200 FF+21d, A1480 FF+21d, A5350 FF+21d, A1360 FF+21d, A1460 FF+21d, A1840, A1400 FF+21d | resources Procurement [63 h] → none |
| A2530 | Fabrication and Delivery of Wall Tiling | 2016-09-01 → 2016-10-16 A (+45d) | 2016-11-07 → 2017-11-26 A (+384d) | 0% → 100% | 16.31d → none | A1800, Review and Approval of Shop Drawing FF+21d, A1360 FF+21d, A1380 FF+21d, A1400 FF+21d, A1420 FF+21d, Review and Approval of Shop Drawing FF+21d, A1460 FF+21d, A1480 FF+21d, A1500 FF+21d, Review and Approval of Shop Drawing FF+21d, A5200 FF+21d, A5220 FF+21d, A5240 FF+21d, A5350 FF+21d, A5590 FF+21d → A5350 FF+21d, A1480 FF+21d, A5240 FF+21d, A1800, A1360 FF+21d, A1500 FF+21d, A5200 FF+21d, A5590 FF+21d, A5220 FF+21d, A1420 FF+21d, A1400 FF+21d, A1380 FF+21d, A1460 FF+21d | resources Procurement [63 h] → none |
| A2550 | Fabrication and Delivery of Wall Paper | 2016-09-05 → 2016-10-16 A (+41d) | 2016-10-28 → 2017-11-14 A (+382d) | 0% → 100% | 84.62d → none | A1820, Review and Approval of Shop Drawing FF+21d, A1360 FF+21d, A1380 FF+21d, A1400 FF+21d, A1420 FF+21d, Review and Approval of Shop Drawing FF+21d, A1460 FF+21d, A1480 FF+21d, A1500 FF+21d, Review and Approval of Shop Drawing FF+21d, A5200 FF+21d, A5220 FF+21d, A5240 FF+21d, A5350 FF+21d, A5590 FF+21d → A1480 FF+21d, A1820, A1460 FF+21d, A1360 FF+21d, A5200 FF+21d, A1400 FF+21d, A5590 FF+21d, A5240 FF+21d, A1420 FF+21d, A1500 FF+21d, A5350 FF+21d, A1380 FF+21d, A5220 FF+21d | resources Procurement [49 h] → none |
| A2580 | Fabrication and Delivery of Glass/Mirrors | 2016-10-10 → 2016-11-06 A (+27d) | 2016-11-14 → 2017-12-05 A (+386d) | 0% → 100% | 8.62d → none | A1850, Review and Approval of Shop Drawing FF+21d, A1360 FF+21d, A1380 FF+21d, A1400 FF+21d, A1420 FF+21d, Review and Approval of Shop Drawing FF+21d, A1460 FF+21d, A1480 FF+21d, A1500 FF+21d, Review and Approval of Shop Drawing FF+21d, A5200 FF+21d, A5220 FF+21d, A5240 FF+21d, A5350 FF+21d, A5590 FF+21d → A1850, A1360 FF+21d, A5200 FF+21d, A1400 FF+21d, A5350 FF+21d, A1420 FF+21d, A5220 FF+21d, A1380 FF+21d, A1500 FF+21d, A5240 FF+21d, A1460 FF+21d, A1480 FF+21d, A5590 FF+21d | resources Procurement [35 h] → none |
| A2590 | Fabrication and Delivery of Brick Panel | 2016-10-19 → 2016-12-10 A (+52d) | 2016-11-23 → 2017-12-14 A (+386d) | 0% → 100% | 8.62d → none | A1860, Review and Approval of Shop Drawing FF+21d, A1360 FF+21d, A1380 FF+21d, A1400 FF+21d, A1420 FF+21d, Review and Approval of Shop Drawing FF+21d, A1460 FF+21d, A1480 FF+21d, A1500 FF+21d, Review and Approval of Shop Drawing FF+21d, A5200 FF+21d, A5220 FF+21d, A5240 FF+21d, A5350 FF+21d, A5590 FF+21d → A1500 FF+21d, A5240 FF+21d, A1380 FF+21d, A5350 FF+21d, A1400 FF+21d, A1420 FF+21d, A1460 FF+21d, A1480 FF+21d, A1360 FF+21d, A5590 FF+21d, A5200 FF+21d, A5220 FF+21d, A1860 | resources Procurement [35 h] → none |
| A2560 | Fabrication and Delivery of Clear Acrylic Panel | 2016-09-17 → 2017-05-15 A (+240d) | 2016-11-06 → 2018-02-05 A (+456d) | 0% → 100% | 17.62d → none | A1830, Review and Approval of Shop Drawing FF+21d, A1360 FF+21d, A1380 FF+21d, A1400 FF+21d, A1420 FF+21d, Review and Approval of Shop Drawing FF+21d, A1460 FF+21d, A1480 FF+21d, A1500 FF+21d, Review and Approval of Shop Drawing FF+21d, A5200 FF+21d, A5220 FF+21d, A5240 FF+21d, A5350 FF+21d, A5590 FF+21d → A5240 FF+21d, A5350 FF+21d, A1480 FF+21d, A5590 FF+21d, A5220 FF+21d, A1420 FF+21d, A1460 FF+21d, A1360 FF+21d, A1380 FF+21d, A1500 FF+21d, A1830, A5200 FF+21d, A1400 FF+21d | resources Procurement [49 h] → none |
| A2520 | Fabrication and Delivery of Stone Finish to Wall | 2016-08-14 → 2017-07-02 A (+322d) | 2016-10-20 → 2017-12-20 A (+426d) | 0% → 100% | 33.62d → none | A1790, Review and Approval of Shop Drawing FF+21d, A1360 FF+21d, A1380 FF+21d, A1400 FF+21d, A1420 FF+21d, Review and Approval of Shop Drawing FF+21d, A1460 FF+21d, A1480 FF+21d, A1500 FF+21d, Review and Approval of Shop Drawing FF+21d, A5200 FF+21d, A5220 FF+21d, A5240 FF+21d, A5350 FF+21d, A5590 FF+21d → A1500 FF+21d, A5590 FF+21d, A1790, A1480 FF+21d, A1420 FF+21d, A5200 FF+21d, A5240 FF+21d, A5350 FF+21d, A1400 FF+21d, A1360 FF+21d, A5220 FF+21d, A1380 FF+21d, A1460 FF+21d | resources Procurement [63 h] → none |
| 3 | **Celing Material** | 2016-08-10 → 2016-09-11 (+32d) | 2016-10-23 → 2017-08-27 (+308d) |  |  |  |  |

| ID | Task | Start | Finish | Duration | Complete | Total float | Predecessors | Other |
| --- | --- | --- | --- | --- | --- | --- | --- | --- |
| A2650 | Fabrication and Delivery of Painting to Ceiling | 2016-09-04 → 2016-09-11 A (+7d) | 2016-10-20 → 2017-08-23 A (+307d) |  | 0% → 100% | 33.62d → none | A1930, Review and Approval of Shop Drawing FF+21d, A1360 FF+21d, A1380 FF+21d, A1400 FF+21d, A1420 FF+21d, Review and Approval of Shop Drawing FF+21d, A1460 FF+21d, A1480 FF+21d, A1500 FF+21d, Review and Approval of Shop Drawing FF+21d, A5200 FF+21d, A5220 FF+21d, A5240 FF+21d, A5350 FF+21d, A5590 FF+21d → A1500 FF+21d, A5590 FF+21d, A1400 FF+21d, A1930, A1460 FF+21d, A1380 FF+21d, A1420 FF+21d, A1360 FF+21d, A5220 FF+21d, A5200 FF+21d, A5350 FF+21d, A5240 FF+21d, A1480 FF+21d | resources Procurement [42 h] → none |
| A2630 | Fabrication and Delivery of Suspended Ceiling | 2016-08-10 → 2016-09-18 A (+39d) | 2016-10-23 → 2017-06-10 A (+230d) |  | 0% → 100% | 0.62d → none | A1910, Review and Approval of Shop Drawing FF+21d, A1360 FF+21d, A1380 FF+21d, A1400 FF+21d, A1420 FF+21d, Review and Approval of Shop Drawing FF+21d, A1460 FF+21d, A1480 FF+21d, A1500 FF+21d, Review and Approval of Shop Drawing FF+21d, A5200 FF+21d, A5220 FF+21d, A5240 FF+21d, A5350 FF+21d, A5590 FF+21d → A5220 FF+21d, A1360 FF+21d, A1910, A1380 FF+21d, A1420 FF+21d, A1500 FF+21d, A5590 FF+21d, A1400 FF+21d, A5200 FF+21d, A1460 FF+21d, A5240 FF+21d, A5350 FF+21d, A1480 FF+21d | resources Procurement [70 h] → none |
| A2640 | Fabrication and Delivery of Gypsum Ceiling | 2016-08-28 → 2016-09-18 A (+21d) | 2016-10-20 → 2017-08-27 A (+311d) |  | 0% → 100% | 18.62d → none | A1920, Review and Approval of Shop Drawing FF+21d, A1360 FF+21d, A1380 FF+21d, A1400 FF+21d, A1420 FF+21d, Review and Approval of Shop Drawing FF+21d, A1460 FF+21d, A1480 FF+21d, A1500 FF+21d, Review and Approval of Shop Drawing FF+21d, A5200 FF+21d, A5220 FF+21d, A5240 FF+21d, A5350 FF+21d, A5590 FF+21d → A1920, A5240 FF+21d, A1500 FF+21d, A1380 FF+21d, A1460 FF+21d, A5350 FF+21d, A5590 FF+21d, A5220 FF+21d, A1480 FF+21d, A5200 FF+21d, A1360 FF+21d, A1420 FF+21d, A1400 FF+21d | resources Procurement [49 h] → none |
| 4 | **Carpentry and Joinery Material** | 2016-08-07 → 2016-09-29 (+53d) | 2016-12-17 → 2018-05-03 (+502d) |  |  |  |  |  |
| A2730 | Fabrication and Delivery Vanities & Counters | 2016-08-16 → 2016-09-29 A (+44d) | 2016-11-19 → 2017-12-28 A (+404d) |  | 0% → 100% | 39.62d → none | A2010, Review and Approval of Shop Drawing FF+21d, A1360 FF+21d, A1380 FF+21d, A1400 FF+21d, A1420 FF+21d, Review and Approval of Shop Drawing FF+21d, A1460 FF+21d, A1480 FF+21d, A1500 FF+21d, Review and Approval of Shop Drawing FF+21d, A5200 FF+21d, A5220 FF+21d, A5240 FF+21d, A5350 FF+21d, A5590 FF+21d → A5590 FF+21d, A5350 FF+21d, A1400 FF+21d, A5240 FF+21d, A1460 FF+21d, A5200 FF+21d, A1480 FF+21d, A2010, A1500 FF+21d, A1360 FF+21d, A1380 FF+21d, A1420 FF+21d, A5220 FF+21d | resources Procurement [91 h] → none |
| A2720 | Fabrication and Delivery Internal Doors , Frames , Ironmongery and Hardware | 2016-08-07 → 2017-07-16 A (+343d) | 2016-11-03 → 2017-12-28 A (+420d) |  | 0% → 100% | 81.62d → none | A2000, Review and Approval of Shop Drawing FF+21d, A1360 FF+21d, A1380 FF+21d, A1400 FF+21d, A1420 FF+21d, Review and Approval of Shop Drawing FF+21d, A1460 FF+21d, A1480 FF+21d, A1500 FF+21d, Review and Approval of Shop Drawing FF+21d, A5200 FF+21d, A5220 FF+21d, A5240 FF+21d, A5350 FF+21d, A5590 FF+21d → A1360 FF+21d, A1420 FF+21d, A1500 FF+21d, A5220 FF+21d, A5590 FF+21d, A1400 FF+21d, A1460 FF+21d, A5200 FF+21d, A5240 FF+21d, A5350 FF+21d, A2000, A1380 FF+21d, A1480 FF+21d | resources Procurement [84 h] → none |
| A2740 | Fabrication and Delivery Shelves | 2016-08-25 → 2017-08-08 A (+348d) | 2016-11-14 → 2017-12-28 A (+409d) |  | 0% → 100% | 45.62d → none | A2020, Review and Approval of Shop Drawing FF+21d, A1360 FF+21d, A1380 FF+21d, A1400 FF+21d, A1420 FF+21d, Review and Approval of Shop Drawing FF+21d, A1460 FF+21d, A1480 FF+21d, A1500 FF+21d, Review and Approval of Shop Drawing FF+21d, A5200 FF+21d, A5220 FF+21d, A5240 FF+21d, A5350 FF+21d, A5590 FF+21d → A5590 FF+21d, A1360 FF+21d, A5220 FF+21d, A1380 FF+21d, A1460 FF+21d, A1400 FF+21d, A2020, A5200 FF+21d, A5350 FF+21d, A5240 FF+21d, A1420 FF+21d, A1500 FF+21d, A1480 FF+21d | resources Procurement [77 h] → none |
| A2760 | Fabrication and Delivery Wardrobes & Cabinets | 2016-09-17 → 2017-08-26 A (+343d) | 2016-12-13 → 2018-02-12 A (+426d) |  | 0% → 100% | 18.62d → none | A2040, Review and Approval of Shop Drawing FF+21d, A1360 FF+21d, A1380 FF+21d, A1400 FF+21d, A1420 FF+21d, Review and Approval of Shop Drawing FF+21d, A1460 FF+21d, A1480 FF+21d, A1500 FF+21d, Review and Approval of Shop Drawing FF+21d, A5200 FF+21d, A5220 FF+21d, A5240 FF+21d, A5350 FF+21d, A5590 FF+21d → A2040, A5590 FF+21d, A5240 FF+21d, A1360 FF+21d, A1380 FF+21d, A1420 FF+21d, A1460 FF+21d, A1500 FF+21d, A5200 FF+21d, A5350 FF+21d, A1480 FF+21d, A5220 FF+21d, A1400 FF+21d | resources Procurement [84 h] → none |
| A2750 | Fabrication and Delivery Seatings | 2016-09-05 → 2018-03-22 A (+563d) | 2016-11-25 → 2018-05-03 (+524d) |  | 0% → 90% | 40.62d → -441.7d | A2030, Review and Approval of Shop Drawing FF+21d, A1360 FF+21d, A1380 FF+21d, A1400 FF+21d, A1420 FF+21d, Review and Approval of Shop Drawing FF+21d, A1460 FF+21d, A1480 FF+21d, A1500 FF+21d, Review and Approval of Shop Drawing FF+21d, A5200 FF+21d, A5220 FF+21d, A5240 FF+21d, A5350 FF+21d, A5590 FF+21d → A5200 FF+21d, A5220 FF+21d, A1380 FF+21d, A1460 FF+21d, A5350 FF+21d, A1360 FF+21d, A1500 FF+21d, A1420 FF+21d, A5590 FF+21d, A1480 FF+21d, A2030, A5240 FF+21d, A1400 FF+21d | resources Procurement [77 h] → none |
| A2770 | Fabrication and Delivery Tables | 2016-09-28 → 2018-03-22 A (+540d) | 2016-12-17 → 2018-05-03 (+502d) |  | 0% → 90% | 21.62d → -441.7d | A2050, Review and Approval of Shop Drawing FF+21d, A1360 FF+21d, A1380 FF+21d, A1400 FF+21d, A1420 FF+21d, Review and Approval of Shop Drawing FF+21d, A1460 FF+21d, A1480 FF+21d, A1500 FF+21d, Review and Approval of Shop Drawing FF+21d, A5200 FF+21d, A5220 FF+21d, A5240 FF+21d, A5350 FF+21d, A5590 FF+21d → A1460 FF+21d, A1480 FF+21d, A5240 FF+21d, A5590 FF+21d, A1420 FF+21d, A1500 FF+21d, A2050, A5220 FF+21d, A5200 FF+21d, A5350 FF+21d, A1400 FF+21d, A1380 FF+21d, A1360 FF+21d | resources Procurement [77 h] → none |
| 5 | **Lighting Points and Fittings** | 2016-08-10 → 2017-12-18 (+495d) | 2017-01-12 → 2018-03-01 (+413d) |  |  |  |  |  |
| A2840 | Fabrication and Delivery Recessed spotlight | 2016-08-10 → 2017-12-18 A (+495d) | 2016-10-30 → 2017-12-18 A (+414d) | 77d → 0d | 0% → 100% | 87.62d → none | A2120, Review and Approval of Shop Drawing FF+21d, A1360 FF+21d, A1380 FF+21d, A1400 FF+21d, A1420 FF+21d, Review and Approval of Shop Drawing FF+21d, A1460 FF+21d, A1480 FF+21d, A1500 FF+21d, Review and Approval of Shop Drawing FF+21d, A5200 FF+21d, A5220 FF+21d, A5240 FF+21d, A5350 FF+21d, A5590 FF+21d → A1460 FF+21d, A5240 FF+21d, A1400 FF+21d, A2120, A5200 FF+21d, A5350 FF+21d, A1360 FF+21d, A1480 FF+21d, A1500 FF+21d, A1380 FF+21d, A5590 FF+21d, A1420 FF+21d, A5220 FF+21d | resources Procurement [77 h] → none |
| A2870 | Fabrication and Delivery Recessed Down Light | 2016-09-24 → 2017-12-21 A (+453d) | 2016-12-13 → 2017-12-21 A (+373d) | 77d → 0d | 0% → 100% | 45.62d → none | A2150, Review and Approval of Shop Drawing FF+21d, A1360 FF+21d, A1380 FF+21d, A1400 FF+21d, A1420 FF+21d, Review and Approval of Shop Drawing FF+21d, A1460 FF+21d, A1480 FF+21d, A1500 FF+21d, Review and Approval of Shop Drawing FF+21d, A5200 FF+21d, A5220 FF+21d, A5240 FF+21d, A5350 FF+21d, A5590 FF+21d → A1420 FF+21d, A1460 FF+21d, A5200 FF+21d, A1400 FF+21d, A1500 FF+21d, A5240 FF+21d, A2150, A1480 FF+21d, A1360 FF+21d, A1380 FF+21d, A5220 FF+21d, A5590 FF+21d, A5350 FF+21d | resources Procurement [77 h] → none |
| A2880 | Fabrication and Delivery Track Light | 2016-10-11 → 2018-01-11 A (+457d) | 2016-12-29 → 2018-01-11 A (+378d) | 77d → 0d | 0% → 100% | 29.62d → none | A2160, Review and Approval of Shop Drawing FF+21d, A1360 FF+21d, A1380 FF+21d, A1400 FF+21d, A1420 FF+21d, Review and Approval of Shop Drawing FF+21d, A1460 FF+21d, A1480 FF+21d, A1500 FF+21d, Review and Approval of Shop Drawing FF+21d, A5200 FF+21d, A5220 FF+21d, A5240 FF+21d, A5350 FF+21d, A5590 FF+21d → A1500 FF+21d, A1480 FF+21d, A5240 FF+21d, A1420 FF+21d, A5350 FF+21d, A2160, A1380 FF+21d, A5590 FF+21d, A1360 FF+21d, A1460 FF+21d, A5200 FF+21d, A1400 FF+21d, A5220 FF+21d | resources Procurement [77 h] → none |
| A2850 | Fabrication and Delivery Indirect LED Strip | 2016-08-24 → 2018-02-01 A (+526d) | 2016-11-13 → 2018-02-01 A (+445d) | 77d → 0d | 0% → 100% | 73.62d → none | A2130, Review and Approval of Shop Drawing FF+21d, A1360 FF+21d, A1380 FF+21d, A1400 FF+21d, A1420 FF+21d, Review and Approval of Shop Drawing FF+21d, A1460 FF+21d, A1480 FF+21d, A1500 FF+21d, Review and Approval of Shop Drawing FF+21d, A5200 FF+21d, A5220 FF+21d, A5240 FF+21d, A5350 FF+21d, A5590 FF+21d → A5220 FF+21d, A5200 FF+21d, A5590 FF+21d, A1360 FF+21d, A2130, A1500 FF+21d, A1480 FF+21d, A1380 FF+21d, A1420 FF+21d, A1460 FF+21d, A5240 FF+21d, A5350 FF+21d, A1400 FF+21d | resources Procurement [77 h] → none |
| A2890 | Fabrication and Delivery LED Pin Light | 2016-10-25 → 2018-02-01 A (+464d) | 2017-01-12 → 2018-02-01 A (+385d) | 77d → 0d | 0% → 100% | 15.62d → none | A2170, Review and Approval of Shop Drawing FF+21d, A1360 FF+21d, A1380 FF+21d, A1400 FF+21d, A1420 FF+21d, Review and Approval of Shop Drawing FF+21d, A1460 FF+21d, A1480 FF+21d, A1500 FF+21d, Review and Approval of Shop Drawing FF+21d, A5200 FF+21d, A5220 FF+21d, A5240 FF+21d, A5350 FF+21d, A5590 FF+21d → A1500 FF+21d, A1380 FF+21d, A1420 FF+21d, A5240 FF+21d, A5220 FF+21d, A5590 FF+21d, A5200 FF+21d, A1400 FF+21d, A2170, A1360 FF+21d, A5350 FF+21d, A1480 FF+21d, A1460 FF+21d | resources Procurement [77 h] → none |
| A2860 | Fabrication and Delivery Cover Plates | 2016-09-07 → 2018-03-01 A (+540d) | 2016-11-27 → 2018-03-01 A (+459d) | 77d → 0d | 0% → 100% | 59.62d → none | A2140, Review and Approval of Shop Drawing FF+21d, A1360 FF+21d, A1380 FF+21d, A1400 FF+21d, A1420 FF+21d, Review and Approval of Shop Drawing FF+21d, A1460 FF+21d, A1480 FF+21d, A1500 FF+21d, Review and Approval of Shop Drawing FF+21d, A5200 FF+21d, A5220 FF+21d, A5240 FF+21d, A5350 FF+21d, A5590 FF+21d → A5220 FF+21d, A1420 FF+21d, A1400 FF+21d, A5350 FF+21d, A1480 FF+21d, A1380 FF+21d, A1460 FF+21d, A1500 FF+21d, A5200 FF+21d, A2140, A1360 FF+21d, A5590 FF+21d, A5240 FF+21d | resources Procurement [77 h] → none |
| 6 | **Aluminium and Glazing Works** | 2016-08-16 → 2017-09-27 (+407d) | 2017-01-06 → 2018-04-29 (+478d) |  |  |  |  |  |
| A2940 | Fabrication and Delivery Internal Glazed Partitions/ Dividing Screens | 2016-08-16 → 2017-09-27 A (+407d) | 2016-10-22 → 2018-04-29 (+554d) |  | 0% → 95% | 83.62d → -437.15d | A2220, Review and Approval of Shop Drawing FF+21d, A1360 FF+21d, A1380 FF+21d, A1400 FF+21d, A1420 FF+21d, Review and Approval of Shop Drawing FF+21d, A1460 FF+21d, A1480 FF+21d, A1500 FF+21d, Review and Approval of Shop Drawing FF+21d, A5200 FF+21d, A5220 FF+21d, A5240 FF+21d, A5350 FF+21d, A5590 FF+21d → A5350 FF+21d, A1360 FF+21d, A1400 FF+21d, A1460 FF+21d, A1380 FF+21d, A5590 FF+21d, A2220, A5200 FF+21d, A5220 FF+21d, A5240 FF+21d, A1480 FF+21d, A1500 FF+21d, A1420 FF+21d | resources Procurement [63 h] → none |
| A2950 | Fabrication and Delivery Internal Glazed Doors | 2016-09-05 → 2017-09-27 A (+387d) | 2016-11-11 → 2018-02-07 A (+453d) |  | 0% → 100% | 63.62d → none | A2230, Review and Approval of Shop Drawing FF+21d, A1360 FF+21d, A1380 FF+21d, A1400 FF+21d, A1420 FF+21d, Review and Approval of Shop Drawing FF+21d, A1460 FF+21d, A1480 FF+21d, A1500 FF+21d, Review and Approval of Shop Drawing FF+21d, A5200 FF+21d, A5220 FF+21d, A5240 FF+21d, A5350 FF+21d, A5590 FF+21d → A1380 FF+21d, A5590 FF+21d, A1400 FF+21d, A2230, A1500 FF+21d, A1480 FF+21d, A1420 FF+21d, A1360 FF+21d, A1460 FF+21d, A5200 FF+21d, A5350 FF+21d, A5220 FF+21d, A5240 FF+21d | resources Procurement [63 h] → none |
| A2960 | Fabrication and Delivery Windows | 2016-09-28 → 2017-09-27 A (+364d) | 2016-12-09 → 2018-04-29 (+506d) |  | 0% → 95% | 37.62d → -437.5d | A2240, Review and Approval of Shop Drawing FF+21d, A1360 FF+21d, A1380 FF+21d, A1400 FF+21d, A1420 FF+21d, Review and Approval of Shop Drawing FF+21d, A1460 FF+21d, A1480 FF+21d, A1500 FF+21d, Review and Approval of Shop Drawing FF+21d, A5200 FF+21d, A5220 FF+21d, A5240 FF+21d, A5350 FF+21d, A5590 FF+21d → A1460 FF+21d, A5240 FF+21d, A1360 FF+21d, A1420 FF+21d, A1500 FF+21d, A1480 FF+21d, A5350 FF+21d, A5590 FF+21d, A2240, A1380 FF+21d, A5200 FF+21d, A1400 FF+21d, A5220 FF+21d | resources Procurement [70 h] → none |
| A2970 | Fabrication and Delivery Balustrades and Railing | 2016-10-19 → 2017-09-28 A (+344d) | 2017-01-06 → 2018-03-10 A (+428d) |  | 0% → 100% | 19.62d → none | A2250, Review and Approval of Shop Drawing FF+21d, A1360 FF+21d, A1380 FF+21d, A1400 FF+21d, A1420 FF+21d, Review and Approval of Shop Drawing FF+21d, A1460 FF+21d, A1480 FF+21d, A1500 FF+21d, Review and Approval of Shop Drawing FF+21d, A5200 FF+21d, A5220 FF+21d, A5240 FF+21d, A5350 FF+21d, A5590 FF+21d → A5220 FF+21d, A1500 FF+21d, A5590 FF+21d, A5200 FF+21d, A1480 FF+21d, A1400 FF+21d, A1380 FF+21d, A1460 FF+21d, A2250, A5350 FF+21d, A1360 FF+21d, A1420 FF+21d, A5240 FF+21d | resources Procurement [77 h] → none |
| 7 | **Sanitary Appliances and Accessories** | 2016-09-17 → 2018-01-21 (+491d) | 2016-12-05 → 2018-02-06 (+428d) |  |  |  |  |  |
| A3000 | Fabrication and Delivery of Sanitary Equipment & Fixture | 2016-09-17 → 2018-01-21 A (+491d) | 2016-12-05 → 2018-02-06 A (+428d) |  | 0% → 100% | 56.62d → none | A2990, Review and Approval of Shop Drawing FF+21d, A1360 FF+21d, A1380 FF+21d, A1400 FF+21d, A1420 FF+21d, Review and Approval of Shop Drawing FF+21d, A1460 FF+21d, A1480 FF+21d, A1500 FF+21d, Review and Approval of Shop Drawing FF+21d, A5200 FF+21d, A5220 FF+21d, A5240 FF+21d, A5350 FF+21d, A5590 FF+21d → A1380 FF+21d, A1500 FF+21d, A5350 FF+21d, A2990, A1420 FF+21d, A5220 FF+21d, A5590 FF+21d, A5200 FF+21d, A1480 FF+21d, A1460 FF+21d, A1400 FF+21d, A1360 FF+21d, A5240 FF+21d | resources Procurement [77 h] → none |
| 4 | **Construction** | 2016-09-18 → 2017-01-26 (+130d) | 2017-02-15 → 2018-06-25 (+495d) |  |  |  |  |  |
| 2 | **BILL 17.2 - P1 - PUBLIC TOILETS** | 2016-10-03 → 2017-06-01 (+241d) | 2017-02-15 → 2018-05-07 (+446d) |  |  |  |  |  |
| A3240 | Measurement , Framing and Enabling Works | 2016-10-05 → 2017-06-01 A (+239d) | 2016-10-20 → 2017-06-12 A (+235d) | 14d → 14.22d | 0% → 100% | 2d → none |  | resources Steel [63 M3] → Bitumin Paint [2000 M2] |
| A3280 | Screed | 2016-11-20 → 2017-06-03 A (+195d) | 2016-11-24 → 2017-06-05 A (+193d) | 5d → 5.11d | 0% → 100% | 0d → none |  | resources none → Bitumin Paint [7000 M2] |
| A3220 | Prerequisite for Civil Works (MEP 1st , 2nd Fix and Block Works) | 2016-10-03 → 2017-06-08 A (+248d) | 2016-10-03 → 2017-06-08 A (+248d) |  | 0% → 100% | 2d → none |  |  |
| A3230 | Area Clearance Process | 2016-10-03 → 2017-06-10 A (+250d) | 2016-10-04 → 2017-07-15 A (+284d) | 2d → 2.11d | 0% → 100% | 2d → none |  | resources Steel [1.64 M3] → Bitumin Paint |
| A3310 | Floor Tiling | 2016-12-14 → 2017-06-10 A (+178d) | 2016-12-29 → 2017-08-08 A (+222d) | 14d → 14.22d | 0% → 100% | 0d → none |  | resources Steel [70 M3] → Bitumin Paint [1944 M2] |
| A3290 | Wall Cladding | 2016-11-26 → 2017-06-12 A (+198d) | 2016-12-13 → 2018-01-04 A (+387d) | 14d → 14.28d | 0% → 100% | 0d → none |  | resources Steel [70 M3] → Bitumin Paint [8880 M2] |
| A3340 | Joinery and Carpentry Works | 2016-12-31 → 2017-06-28 A (+179d) | 2017-01-15 → 2018-02-01 A (+382d) | 14d → 14.22d | 0% → 100% | 0d → none | A2730, A1120, A3310, A/C BILL 17 - P1 - FAMILY FRIENDLY RESTAURANT, A1220 → A1220, A1120, A2730, A3310 | resources Steel [70 M3] → Bitumin Paint [100171 M2] |
| A3260 | MEP Celing Closure Clearance | 2016-11-05 → 2017-07-22 A (+259d) | 2016-11-07 → 2017-07-24 A (+259d) | 3d → 3.06d | 0% → 100% | 0d → none |  | resources Steel [6 M3] → Bitumin Paint |
| A3250 | Installation of Ceiling System | 2016-10-24 → 2017-07-24 A (+273d) | 2016-11-03 → 2017-08-22 A (+292d) | 10d → 10.22d | 0% → 100% | 0d → none |  | resources Steel [80 M3] → Bitumin Paint [15313 M2] |
| A3270 | Ceiling Closure | 2016-11-08 → 2017-09-05 A (+301d) | 2016-11-19 → 2017-10-05 A (+320d) | 10d → 10.17d | 0% → 100% | 0d → none |  | resources Steel [80 M3] → Bitumin Paint [15313 M2] |
| A3300 | Paint Works | 2016-11-20 → 2017-11-14 A (+359d) | 2017-01-30 → 2018-04-29 (+454d) | 60d → 61.17d | 0% → 95% | 7d → -382d |  | resources Steel [60 M3] → Bitumin Paint [783 M2] |
| A3360 | Doors , Frames , Ironmongery and Hardware | 2017-01-28 → 2017-11-14 A (+290d) | 2017-01-30 → 2018-02-07 A (+373d) | 3d → 3.06d | 0% → 100% | 0d → none | A3370, A2720, A1120, A/C BILL 17 - P1 - FAMILY FRIENDLY RESTAURANT, A1220 → A1220, A3370, A1120, A2720 | resources Steel [15 M3] → Bitumin Paint [55285 M2] |
| A3350 | Aluminium and Glazing Works | 2017-01-16 → 2018-01-17 A (+366d) | 2017-01-23 → 2018-03-01 A (+402d) | 7d → 7.11d | 0% → 100% | 0d → none |  | resources Steel [30 M3] → Bitumin Paint [8550 M2] |
| A3380 | Lighting Points and Fittings | 2017-01-31 → 2018-03-01 A (+394d) | 2017-02-07 → 2018-04-26 (+443d) | 7d → 7.11d | 0% → 95% | 0d → -379.35d |  | resources Steel [14 M3] → Bitumin Paint [11532 M2] |
| A3390 | Sanitary Equipment & Fixture | 2017-01-26 → 2018-03-06 A (+404d) | 2017-02-02 → 2018-03-14 A (+405d) |  | 0% → 100% | 5.64d → none |  | resources Steel [14 M3] → Bitumin Paint [44055 M2] |
| A3370 | Wall Covering | 2017-01-24 → 2018-03-15 A (+415d) | 2017-01-26 → 2018-04-26 (+455d) | 3d → 3.06d | 0% → 90% | 0d → -372.3d |  | resources Steel [25 M3] → Bitumin Paint [27761 M2] |
| A3400 | Snagging and De-Snagging | 2017-02-08 → 2018-04-30 (+446d) | 2017-02-15 → 2018-05-07 (+446d) |  |  | 0d → -382d |  | resources Steel [28 M3] → none |
| 3 | **BILL 21 - P1 - KID'S CLUB** | 2016-10-03 → 2017-12-06 (+429d) | 2017-02-14 → 2017-12-07 (+296d) |  |  |  |  |  |
| A3420 | Area Clearance Process | 2016-10-03 → 2017-12-06 A (+429d) | 2016-10-04 → 2017-12-07 A (+429d) | 2d → 2.11d | 0% → 100% | 3d → none |  | resources Steel [1.64 M3] → Bitumin Paint |
| A3430 | Measurement , Framing and Enabling Works | 2016-10-05 → 2017-12-06 A (+427d) | 2016-10-20 → 2017-12-07 A (+413d) | 14d → 14.22d | 0% → 100% | 3d → none |  | resources Steel [63 M3] → Bitumin Paint |
| A3440 | Installation of Ceiling System | 2016-10-24 → 2017-12-06 A (+408d) | 2016-11-03 → 2017-12-07 A (+399d) | 10d → 10.22d | 0% → 100% | 1d → none |  | resources Steel [80 M3] → Bitumin Paint |
| A3450 | MEP Celing Closure Clearance | 2016-11-05 → 2017-12-06 A (+396d) | 2016-11-07 → 2017-12-07 A (+395d) |  | 0% → 100% | 1d → none |  | resources Steel [6 M3] → Bitumin Paint |
| A3460 | Ceiling Closure | 2016-11-08 → 2017-12-06 A (+393d) | 2016-11-19 → 2017-12-07 A (+383d) | 10d → 10.22d | 0% → 100% | 1d → none |  | resources Steel [80 M3] → Bitumin Paint |
| A3470 | Screed | 2016-11-20 → 2017-12-06 A (+381d) | 2016-11-22 → 2017-12-07 A (+380d) | 3d → 3.06d | 0% → 100% | 1d → none |  | resources none → Bitumin Paint |
| A3480 | Wall Cladding | 2016-11-23 → 2017-12-06 A (+378d) | 2016-12-05 → 2017-12-07 A (+367d) | 10d → 10.11d | 0% → 100% | 1d → none |  | resources Steel [50 M3] → Bitumin Paint |
| A3490 | Paint Works | 2016-11-20 → 2017-12-06 A (+381d) | 2017-01-30 → 2017-12-07 A (+311d) | 60d → 61.11d | 0% → 100% | 4d → none |  | resources Steel [60 M3] → Bitumin Paint |
| A3500 | Floor Tiling | 2016-12-06 → 2017-12-06 A (+365d) | 2016-12-14 → 2017-12-07 A (+358d) | 7d → 7.11d | 0% → 100% | 1d → none |  | resources Steel [50 M3] → Bitumin Paint |
| A3510 | Wooden Wall Panelling | 2016-12-15 → 2017-12-06 A (+356d) | 2016-12-26 → 2017-12-07 A (+346d) | 10d → 10.22d | 0% → 100% | 1d → none |  | resources Steel [50 M3] → Bitumin Paint |
| A3520 | Wooden Flooring | 2016-12-27 → 2017-12-06 A (+344d) | 2017-01-03 → 2017-12-07 A (+338d) | 7d → 7.11d | 0% → 100% | 1d → none |  | resources Steel [35 M3] → Bitumin Paint |
| A3530 | Joinery and Carpentry Works | 2017-01-04 → 2017-12-06 A (+336d) | 2017-01-19 → 2017-12-07 A (+322d) | 14d → 14.28d | 0% → 100% | 1d → none |  | resources Steel [70 M3] → Bitumin Paint |
| A3540 | Aluminium and Glazing Works | 2017-01-21 → 2017-12-06 A (+319d) | 2017-01-28 → 2017-12-07 A (+313d) | 7d → 7.11d | 0% → 100% | 1d → none |  | resources Steel [21 M3] → Bitumin Paint |
| A3550 | Doors , Frames , Ironmongery and Hardware | 2017-01-29 → 2017-12-06 A (+311d) | 2017-01-31 → 2017-12-07 A (+310d) | 3d → 3.11d | 0% → 100% | 1d → none |  | resources Steel [9 M3] → Bitumin Paint |
| A3560 | Wall Covering | 2017-01-29 → 2017-12-06 A (+311d) | 2017-02-01 → 2017-12-07 A (+309d) | 4d → 4.06d | 0% → 100% | 1d → none |  | resources Steel [25 M3] → Bitumin Paint |
| A3570 | Lighting Points and Fittings | 2017-01-29 → 2017-12-06 A (+311d) | 2017-02-02 → 2017-12-07 A (+308d) | 5d → 5.11d | 0% → 100% | 1d → none |  | resources Steel [14 M3] → Bitumin Paint |
| A3580 | Carpet / Vinyle / Rubber | 2017-02-04 → 2017-12-06 A (+305d) | 2017-02-06 → 2017-12-07 A (+304d) | 3d → 3.11d | 0% → 100% | 1d → none |  | resources Steel [12 M3] → Bitumin Paint |
| A3590 | Snagging and De-Snagging | 2017-02-07 → 2017-12-06 A (+302d) | 2017-02-14 → 2017-12-07 A (+296d) | 7d → 7.17d | 0% → 100% | 1d → none |  | resources Steel [28 M3] → Bitumin Paint |
| A5120 | Sanitary Equipment & Fixture | 2017-02-01 → 2017-12-06 A (+308d) | 2017-02-06 → 2017-12-07 A (+304d) |  | 0% → 100% | 1.64d → none |  | resources Steel [14 M3] → Bitumin Paint |
| A3410 | Prerequisite for Civil Works (MEP 1st , 2nd Fix and Block Works) | 2016-10-03 → 2017-12-07 A (+430d) | 2016-10-03 → 2017-12-07 A (+430d) |  | 0% → 100% | 3d → none |  |  |
| 4 | **BILL 24 - 8F - GYM - TOWER C** | 2016-10-03 → 2017-12-06 (+429d) | 2017-02-15 → 2017-12-07 (+295d) |  |  |  |  |  |
| A3610 | Area Clearance Process | 2016-10-03 → 2017-12-06 A (+429d) | 2016-10-04 → 2017-12-07 A (+429d) | 2d → 2.11d | 0% → 100% | 2d → none |  | resources Steel [1.64 M3] → Bitumin Paint |
| A3620 | Measurement , Framing and Enabling Works | 2016-10-05 → 2017-12-06 A (+427d) | 2016-10-20 → 2017-12-07 A (+413d) | 14d → 14.22d | 0% → 100% | 2d → none |  | resources Steel [63 M3] → Bitumin Paint |
| A3630 | Installation of Ceiling System | 2016-10-24 → 2017-12-06 A (+408d) | 2016-11-03 → 2017-12-07 A (+399d) | 10d → 10.22d | 0% → 100% | 0d → none |  | resources Steel [80 M3] → Bitumin Paint |
| A3640 | MEP Celing Closure Clearance | 2016-11-05 → 2017-12-06 A (+396d) | 2016-11-07 → 2017-12-07 A (+395d) |  | 0% → 100% | 0d → none |  | resources Steel [6 M3] → Bitumin Paint |
| A3650 | Ceiling Closure | 2016-11-08 → 2017-12-06 A (+393d) | 2016-11-19 → 2017-12-07 A (+383d) | 10d → 10.11d | 0% → 100% | 0d → none |  | resources Steel [80 M3] → Bitumin Paint |

| ID | Task | Start | Finish | Duration | Complete | Total float | Other |
| --- | --- | --- | --- | --- | --- | --- | --- |
| A3660 | Screed | 2016-11-20 → 2017-12-06 A (+381d) | 2016-11-22 → 2017-12-07 A (+380d) | 3d → 3.06d | 0% → 100% | 0d → none | resources none → Bitumin Paint |
| A3670 | Wall Cladding | 2016-11-23 → 2017-12-06 A (+378d) | 2016-12-05 → 2017-12-07 A (+367d) | 10d → 10.17d | 0% → 100% | 0d → none | resources Steel [50 M3] → Bitumin Paint |
| A3680 | Paint Works and Floor Painting | 2016-11-20 → 2017-12-06 A (+381d) | 2017-01-30 → 2017-12-07 A (+311d) | 60d → 61.17d | 0% → 100% | 4d → none | resources Steel [60 M3] → Bitumin Paint |
| A3690 | Floor Tiling | 2016-12-06 → 2017-12-06 A (+365d) | 2016-12-14 → 2017-12-07 A (+358d) | 7d → 7.11d | 0% → 100% | 0d → none | resources Steel [50 M3] → Bitumin Paint |
| A3700 | Wooden Wall Panelling | 2016-12-15 → 2017-12-06 A (+356d) | 2016-12-26 → 2017-12-07 A (+346d) | 10d → 10.22d | 0% → 100% | 0d → none | resources Steel [50 M3] → Bitumin Paint |
| A3710 | Wooden Flooring | 2016-12-27 → 2017-12-06 A (+344d) | 2017-01-03 → 2017-12-07 A (+338d) | 7d → 7.11d | 0% → 100% | 0d → none | resources Steel [35 M3] → Bitumin Paint |
| A3720 | Joinery and Carpentry Works | 2017-01-04 → 2017-12-06 A (+336d) | 2017-01-19 → 2017-12-07 A (+322d) | 14d → 14.28d | 0% → 100% | 0d → none | resources Steel [70 M3] → Bitumin Paint |
| A3730 | Aluminium and Glazing Works | 2017-01-21 → 2017-12-06 A (+319d) | 2017-01-31 → 2017-12-07 A (+310d) | 10d → 10.11d | 0% → 100% | 0d → none | resources Steel [30 M3] → Bitumin Paint |
| A3740 | Doors , Frames , Ironmongery and Hardware | 2017-02-01 → 2017-12-06 A (+308d) | 2017-02-04 → 2017-12-07 A (+306d) | 3d → 3.11d | 0% → 100% | 0d → none | resources Steel [9 M3] → Bitumin Paint |
| A3750 | Wall Covering | 2017-02-01 → 2017-12-06 A (+308d) | 2017-02-04 → 2017-12-07 A (+306d) | 3d → 3.11d | 0% → 100% | 0d → none | resources Steel [15 M3] → Bitumin Paint |
| A3760 | Lighting Points and Fittings | 2017-02-01 → 2017-12-06 A (+308d) | 2017-02-04 → 2017-12-07 A (+306d) | 3d → 3.11d | 0% → 100% | 0d → none | resources Steel [10 M3] → Bitumin Paint |
| A3770 | Carpet / Vinyle / Rubber | 2017-02-05 → 2017-12-06 A (+304d) | 2017-02-07 → 2017-12-07 A (+303d) |  | 0% → 100% | 0d → none | resources Steel [9 M3] → Bitumin Paint |
| A3780 | Snagging and De-Snagging | 2017-02-08 → 2017-12-06 A (+301d) | 2017-02-15 → 2017-12-07 A (+295d) | 7d → 7.17d | 0% → 100% | 0d → none | resources Steel [28 M3] → Bitumin Paint |
| A3600 | Prerequisite for Civil Works (MEP 1st , 2nd Fix and Block Works) | 2016-10-03 → 2017-12-07 A (+430d) | 2016-10-03 → 2017-12-07 A (+430d) |  | 0% → 100% | 2d → none |  |
| 5 | **BILL 25 - 8F - MALE AND FEMALE TOILETS FOR GYM - TOWER C** | 2016-10-03 → 2017-07-12 (+282d) | 2017-02-13 → 2018-05-09 (+450d) |  |  |  |  |
| A3800 | Area Clearance Process | 2016-10-03 → 2017-07-12 A (+282d) | 2016-10-04 → 2017-07-12 A (+281d) | 2d → 2.11d | 0% → 100% | 4d → none | resources Steel [1.64 M3] → Bitumin Paint |
| A3790 | Prerequisite for Civil Works (MEP 1st , 2nd Fix and Block Works) | 2016-10-03 → 2017-07-13 A (+283d) | 2016-10-03 → 2017-07-13 A (+283d) |  | 0% → 100% | 4d → none |  |
| A3810 | Measurement , Framing and Enabling Works | 2016-10-05 → 2017-07-23 A (+291d) | 2016-10-20 → 2017-08-02 A (+286d) | 14d → 14.22d | 0% → 100% | 4d → none | resources Steel [63 M3] → Bitumin Paint [2000 M2] |
| A3830 | MEP Celing Closure Clearance | 2016-11-05 → 2017-07-31 A (+268d) | 2016-11-07 → 2017-08-01 A (+267d) | 3d → 3.06d | 0% → 100% | 2d → none | resources Steel [6 M3] → Bitumin Paint |
| A3820 | Installation of Ceiling System | 2016-10-24 → 2017-08-02 A (+282d) | 2016-11-03 → 2017-10-01 A (+332d) | 10d → 10.22d | 0% → 100% | 2d → none | resources Steel [80 M3] → Bitumin Paint [3059 M2] |
| A3850 | Screed | 2016-11-20 → 2017-08-27 A (+280d) | 2016-11-22 → 2017-08-28 A (+279d) | 3d → 3.11d | 0% → 100% | 2d → none | resources none → Bitumin Paint [6919 M2] |
| A3840 | Ceiling Closure | 2016-11-08 → 2017-08-29 A (+294d) | 2016-11-19 → 2017-10-12 A (+327d) | 10d → 10.11d | 0% → 100% | 2d → none | resources Steel [80 M3] → Bitumin Paint [3059 M2] |
| A3860 | Wall Cladding | 2016-11-23 → 2017-10-16 A (+327d) | 2016-12-05 → 2018-03-15 A (+465d) | 10d → 10.11d | 0% → 100% | 2d → none | resources Steel [50 M3] → Bitumin Paint [32213 M2] |
| A3880 | Floor Tiling | 2016-12-06 → 2017-10-19 A (+317d) | 2016-12-14 → 2017-10-29 A (+319d) | 7d → 7.17d | 0% → 100% | 2d → none | resources Steel [50 M3] → Bitumin Paint [8508 M2] |
| A3930 | Doors , Frames , Ironmongery and Hardware | 2017-02-01 → 2017-12-19 A (+321d) | 2017-02-06 → 2018-03-08 A (+395d) | 5d → 5.06d | 0% → 100% | 2d → none | resources Steel [21 M3] → Bitumin Paint [11388 M2] |
| A3870 | Paint Works | 2016-11-20 → 2018-03-08 A (+473d) | 2017-01-30 → 2018-03-29 A (+423d) | 60d → 61.17d | 0% → 100% | 7d → none | resources Steel [60 M3] → Bitumin Paint [270 M2] |
| A3890 | Wooden Wall Panelling | 2016-12-15 → 2018-03-08 A (+448d) | 2016-12-26 → 2018-03-26 A (+455d) | 10d → 10.22d | 0% → 100% | 2d → none | resources Steel [50 M3] → Bitumin Paint [9390 M2] |
| A3920 | Aluminium and Glazing Works | 2017-01-21 → 2018-03-13 A (+416d) | 2017-01-31 → 2018-05-01 (+455d) | 10d → 10.17d | 0% → 90% | 2d → -376.15d | resources Steel [30 M3] → Bitumin Paint [5666 M2] |
| A3910 | Joinery and Carpentry Works | 2017-01-04 → 2018-03-22 A (+442d) | 2017-01-19 → 2018-04-30 (+466d) | 14d → 14.22d | 0% → 90% | 2d → -375.15d | resources Steel [70 M3] → Bitumin Paint [35008 M2] |
| A3900 | Wooden Flooring | 2016-12-27 → 2018-03-29 A (+457d) | 2017-01-03 → 2018-04-28 (+480d) | 7d → 7.17d | 0% → 76% | 2d → -373.75d | resources Steel [35 M3] → Bitumin Paint [15600 M2] |
| A3940 | Wall Covering | 2017-02-01 → 2018-04-02 A (+425d) | 2017-02-06 → 2018-05-05 (+453d) | 5d → 5.06d | 0% → 36% | 2d → -379.4d | resources Steel [25 M3] → Bitumin Paint [2000 M2] |
| A3950 | Lighting Points and Fittings | 2017-02-01 → 2018-04-26 (+449d) | 2017-02-05 → 2018-04-30 (+449d) |  |  | 2d → -383.11d | resources Steel [14 M3] → Bitumin Paint [2418 M2] |
| A3970 | Snagging and De-Snagging | 2017-02-06 → 2018-05-01 (+449d) | 2017-02-13 → 2018-05-09 (+450d) | 7d → 7.11d |  | 2d → -383.11d | resources Steel [28 M3] → Bitumin Paint |
| 7 | **BILL 27.1 - 8F - GYM - TOWER A** | 2016-10-03 → 2017-07-26 (+296d) | 2017-02-15 → 2018-05-06 (+445d) |  |  |  |  |
| A4170 | Prerequisite for Civil Works (MEP 1st , 2nd Fix and Block Works) | 2016-10-03 → 2017-07-26 A (+296d) | 2016-10-03 → 2017-07-26 A (+296d) |  | 0% → 100% | 2d → none |  |
| A4180 | Area Clearance Process | 2016-10-03 → 2017-07-29 A (+299d) | 2016-10-04 → 2017-09-19 A (+350d) | 2d → 2.11d | 0% → 100% | 2d → none | resources Steel [1.64 M3] → Bitumin Paint |
| A4190 | Measurement , Framing and Enabling Works | 2016-10-05 → 2017-07-31 A (+299d) | 2016-10-20 → 2017-09-16 A (+331d) | 14d → 14.22d | 0% → 100% | 2d → none | resources Steel [63 M3] → Bitumin Paint [2000 M2] |
| A4230 | Screed | 2016-11-20 → 2017-08-01 A (+254d) | 2016-11-22 → 2017-08-02 A (+253d) | 3d → 3.06d | 0% → 100% | 0d → none | resources none → Bitumin Paint [7000 M2] |
| A4260 | Floor Tiling | 2016-12-06 → 2017-08-03 A (+240d) | 2016-12-18 → 2017-12-20 A (+367d) | 10d → 10.22d | 0% → 100% | 0d → none | resources Steel [50 M3] → Bitumin Paint [35174 M2] |
| A4200 | Installation of Ceiling System | 2016-10-24 → 2017-08-14 A (+294d) | 2016-11-03 → 2017-11-09 A (+371d) | 10d → 10.22d | 0% → 100% | 0d → none | resources Steel [80 M3] → Bitumin Paint [24871 M2] |
| A4210 | MEP Celing Closure Clearance | 2016-11-05 → 2017-09-02 A (+301d) | 2016-11-07 → 2017-09-03 A (+300d) | 3d → 3.06d | 0% → 100% | 0d → none | resources Steel [6 M3] → Bitumin Paint |
| A4220 | Ceiling Closure | 2016-11-08 → 2017-09-27 A (+323d) | 2016-11-19 → 2017-12-28 A (+404d) | 10d → 10.17d | 0% → 100% | 0d → none | resources Steel [80 M3] → Bitumin Paint [24873 M2] |
| A4270 | Wooden Wall Panelling | 2016-12-19 → 2017-11-14 A (+330d) | 2016-12-29 → 2018-02-12 A (+410d) | 10d → 10.17d | 0% → 100% | 0d → none | resources Steel [50 M3] → Bitumin Paint [9000 M2] |
| A4340 | Carpet / Vinyle / Rubber | 2017-02-05 → 2017-11-18 A (+286d) | 2017-02-07 → 2018-04-28 (+445d) | 3d → 3.11d | 0% → 71% | 0d → -380.46d | resources Steel [9 M3] → Bitumin Paint [5000 M2] |
| A4290 | Joinery and Carpentry Works | 2017-01-08 → 2017-11-21 A (+317d) | 2017-01-23 → 2018-02-15 A (+388d) | 14d → 14.33d | 0% → 100% | 0d → none | resources Steel [70 M3] → Bitumin Paint [66133 M2] |
| A4310 | Doors , Frames , Ironmongery and Hardware | 2017-02-01 → 2017-11-22 A (+294d) | 2017-02-04 → 2018-03-13 A (+402d) |  | 0% → 100% | 0d → none | resources Steel [9 M3] → Bitumin Paint [44629 M2] |
| A4250 | Paint Works | 2016-11-20 → 2017-11-26 A (+371d) | 2017-01-30 → 2018-03-15 A (+409d) | 60d → 61.11d | 0% → 100% | 4d → none | resources Steel [60 M3] → Bitumin Paint [4000 M2] |
| A4240 | Wall Cladding | 2016-11-23 → 2017-12-19 A (+391d) | 2016-12-05 → 2018-01-11 A (+402d) | 10d → 10.17d | 0% → 100% | 0d → none | resources Steel [50 M3] → Bitumin Paint [4000 M2] |
| A4300 | Aluminium and Glazing Works | 2017-01-24 → 2018-01-15 A (+356d) | 2017-01-31 → 2018-03-14 A (+407d) | 7d → 7.11d | 0% → 100% | 0d → none | resources Steel [30 M3] → Bitumin Paint [6657 M2] |
| A5140 | Sanitary Equipment & Fixture | 2017-02-05 → 2018-03-05 A (+393d) | 2017-02-07 → 2018-03-29 A (+415d) | 3d → 3.11d | 0% → 100% | 0d → none | resources Steel [10 M3] → Bitumin Paint [8960 M2] |
| A4330 | Lighting Points and Fittings | 2017-02-01 → 2018-04-03 A (+426d) | 2017-02-04 → 2018-04-26 (+446d) | 3d → 3.06d | 0% → 85% | 0d → -372.45d | resources Steel [10 M3] → Bitumin Paint [3868 M2] |
| A4280 | Wooden Flooring | 2016-12-31 → 2018-04-26 (+481d) | 2017-01-07 → 2018-05-03 (+481d) |  |  | 0d → -379d | resources Steel [35 M3] → Bitumin Paint [35174 M2] |
| A4320 | Wall Covering | 2017-02-01 → 2018-04-26 (+449d) | 2017-02-04 → 2018-04-29 (+449d) |  |  | 0d → -375d | resources Steel [15 M3] → Bitumin Paint [7000 M2] |
| A4350 | Snagging and De-Snagging | 2017-02-08 → 2018-04-28 (+444d) | 2017-02-15 → 2018-05-06 (+445d) | 7d → 7.11d |  | 0d → -380.46d | resources Steel [28 M3] → Bitumin Paint |
| 8 | **BILL 27.2 - 8F - GYM - TOWER B** | 2016-10-03 → 2017-08-24 (+325d) | 2017-02-15 → 2018-05-08 (+447d) |  |  |  |  |
| A4360 | Prerequisite for Civil Works (MEP 1st , 2nd Fix and Block Works) | 2016-10-03 → 2017-08-24 A (+325d) | 2016-10-03 → 2017-08-24 A (+325d) |  | 0% → 100% | 2d → none |  |
| A4370 | Area Clearance Process | 2016-10-03 → 2017-08-24 A (+325d) | 2016-10-04 → 2017-08-27 A (+327d) | 2d → 2.11d | 0% → 100% | 2d → none | resources Steel [1.64 M3] → Bitumin Paint |
| A4400 | MEP Celing Closure Clearance | 2016-11-05 → 2017-08-27 A (+295d) | 2016-11-07 → 2017-08-27 A (+293d) |  | 0% → 100% | 0d → none | resources Steel [6 M3] → Bitumin Paint |
| A4380 | Measurement , Framing and Enabling Works | 2016-10-05 → 2017-08-27 A (+326d) | 2016-10-20 → 2017-09-13 A (+328d) | 14d → 14.22d | 0% → 100% | 2d → none | resources Steel [63 M3] → Bitumin Paint [2000 M2] |
| A4390 | Installation of Ceiling System | 2016-10-24 → 2017-08-28 A (+308d) | 2016-11-03 → 2017-11-09 A (+371d) | 10d → 10.22d | 0% → 100% | 0d → none | resources Steel [80 M3] → Bitumin Paint [35000 M2] |
| A4410 | Ceiling Closure | 2016-11-08 → 2017-10-04 A (+330d) | 2016-11-19 → 2017-12-28 A (+404d) | 10d → 10.22d | 0% → 100% | 0d → none | resources Steel [80 M3] → Bitumin Paint [45001 M2] |
| A4420 | Screed | 2016-11-20 → 2017-11-01 A (+346d) | 2016-11-22 → 2017-11-02 A (+345d) |  | 0% → 100% | 0d → none | resources none → Bitumin Paint [7000 M2] |
| A4500 | Doors , Frames , Ironmongery and Hardware | 2017-02-01 → 2017-11-19 A (+291d) | 2017-02-04 → 2018-02-08 A (+369d) | 3d → 3.11d | 0% → 100% | 0d → none | resources Steel [9 M3] → Bitumin Paint [12541 M2] |
| A4460 | Wooden Wall Panelling | 2016-12-19 → 2017-11-20 A (+336d) | 2016-12-29 → 2018-02-12 A (+410d) | 10d → 10.22d | 0% → 100% | 0d → none | resources Steel [50 M3] → Bitumin Paint [84521 M2] |
| A4430 | Wall Cladding | 2016-11-23 → 2017-11-21 A (+363d) | 2016-12-05 → 2018-01-04 A (+395d) | 10d → 10.17d | 0% → 100% | 0d → none | resources Steel [50 M3] → Bitumin Paint [78541 M2] |
| A4440 | Paint Works | 2016-11-20 → 2017-12-10 A (+385d) | 2017-01-30 → 2018-03-15 A (+409d) | 60d → 61.11d | 0% → 100% | 4d → none | resources Steel [60 M3] → Bitumin Paint [2103 M2] |
| A4450 | Floor Tiling | 2016-12-06 → 2017-12-19 A (+378d) | 2016-12-18 → 2017-12-27 A (+374d) | 10d → 10.22d | 0% → 100% | 0d → none | resources Steel [50 M3] → Bitumin Paint [8200 M2] |
| A4480 | Joinery and Carpentry Works | 2017-01-08 → 2017-12-25 A (+351d) | 2017-01-23 → 2018-03-14 A (+415d) | 14d → 14.22d | 0% → 100% | 0d → none | resources Steel [70 M3] → Bitumin Paint [13000 M2] |
| A4470 | Wooden Flooring | 2016-12-31 → 2017-12-26 A (+360d) | 2017-01-07 → 2018-04-30 (+478d) | 7d → 7.11d | 0% → 51% | 0d → -375.5d | resources Steel [35 M3] → Bitumin Paint [8300 M2] |
| A4490 | Aluminium and Glazing Works | 2017-01-24 → 2018-01-16 A (+357d) | 2017-01-31 → 2018-03-29 A (+422d) | 7d → 7.11d | 0% → 100% | 0d → none | resources Steel [30 M3] → Bitumin Paint [15423 M2] |

| ID | Task | Start | Finish | Duration | Complete | Total float | Other |
| --- | --- | --- | --- | --- | --- | --- | --- |
| A5150 | Sanitary Equipment & Fixture | 2017-02-05 → 2018-03-06 A (+394d) | 2017-02-07 → 2018-03-29 A (+415d) | 3d → 3.11d | 0% → 100% | 0d → none | resources Steel [10 M3] → Bitumin Paint [25120 M2] |
| A4520 | Lighting Points and Fittings | 2017-02-01 → 2018-04-03 A (+426d) | 2017-02-04 → 2018-04-26 (+446d) | 3d → 3.11d | 0% → 86% | 0d → -382.62d | resources Steel [10 M3] → Bitumin Paint [12541 M2] |
| A4510 | Wall Covering | 2017-02-01 → 2018-04-18 A (+441d) | 2017-02-04 → 2018-04-29 (+449d) | 3d → 3.11d | 0% → 13% | 0d → -374.7d | resources Steel [15 M3] → Bitumin Paint [12541 M2] |
| A4530 | Carpet / Vinyle / Rubber | 2017-02-05 → 2018-04-26 (+445d) | 2017-02-07 → 2018-04-30 (+447d) |  |  | 0d → -382.62d | resources Steel [9 M3] → Bitumin Paint [16659 M2] |
| A4540 | Snagging and De-Snagging | 2017-02-08 → 2018-04-30 (+446d) | 2017-02-15 → 2018-05-08 (+447d) | 7d → 7.17d |  | 0d → -382.62d | resources Steel [28 M3] → Bitumin Paint |
| 9 | **BILL 27.3 - 8F - GYM - TOWER D** | 2016-10-03 → 2017-08-24 (+325d) | 2017-02-15 → 2018-05-07 (+446d) |  |  |  |  |
| A4550 | Prerequisite for Civil Works (MEP 1st , 2nd Fix and Block Works) | 2016-10-03 → 2017-08-24 A (+325d) | 2016-10-03 → 2017-08-24 A (+325d) |  | 0% → 100% | 2d → none |  |
| A4560 | Area Clearance Process | 2016-10-03 → 2017-08-24 A (+325d) | 2016-10-04 → 2017-08-27 A (+327d) | 2d → 2.11d | 0% → 100% | 2d → none | resources Steel [1.64 M3] → Bitumin Paint |
| A4590 | MEP Celing Closure Clearance | 2016-11-05 → 2017-08-27 A (+295d) | 2016-11-07 → 2017-08-27 A (+293d) |  | 0% → 100% | 0d → none | resources Steel [6 M3] → Bitumin Paint |
| A4570 | Measurement , Framing and Enabling Works | 2016-10-05 → 2017-08-27 A (+326d) | 2016-10-20 → 2017-09-13 A (+328d) | 14d → 14.22d | 0% → 100% | 2d → none | resources Steel [63 M3] → Bitumin Paint [2000 M2] |
| A4580 | Installation of Ceiling System | 2016-10-24 → 2017-08-28 A (+308d) | 2016-11-03 → 2017-11-09 A (+371d) | 10d → 10.22d | 0% → 100% | 0d → none | resources Steel [80 M3] → Bitumin Paint [24870 M2] |
| A4600 | Ceiling Closure | 2016-11-08 → 2017-10-04 A (+330d) | 2016-11-19 → 2017-12-28 A (+404d) | 10d → 10.22d | 0% → 100% | 0d → none | resources Steel [80 M3] → Bitumin Paint [24872 M2] |
| A4610 | Screed | 2016-11-20 → 2017-11-01 A (+346d) | 2016-11-22 → 2017-11-01 A (+344d) |  | 0% → 100% | 0d → none | resources none → Bitumin Paint [7000 M2] |
| A5160 | Carpet / Vinyle / Rubber | 2017-02-05 → 2017-11-02 A (+270d) | 2017-02-07 → 2018-04-28 (+445d) |  | 0% → 50% | 0d → -381.06d | resources Steel [9 M3] → Bitumin Paint [5000 M2] |
| A4620 | Wall Cladding | 2016-11-23 → 2017-11-20 A (+362d) | 2016-12-05 → 2018-01-04 A (+395d) | 10d → 10.17d | 0% → 100% | 0d → none | resources Steel [50 M3] → Bitumin Paint [23040 M2] |
| A4650 | Wooden Wall Panelling | 2016-12-19 → 2017-11-22 A (+338d) | 2016-12-29 → 2018-02-12 A (+410d) | 10d → 10.22d | 0% → 100% | 0d → none | resources Steel [50 M3] → Bitumin Paint [47307 M2] |
| A4690 | Doors , Frames , Ironmongery and Hardware | 2017-02-01 → 2017-11-22 A (+294d) | 2017-02-04 → 2018-02-07 A (+368d) | 3d → 3.11d | 0% → 100% | 0d → none | resources Steel [9 M3] → Bitumin Paint [44629 M2] |
| A4630 | Paint Works | 2016-11-20 → 2017-11-27 A (+372d) | 2017-01-30 → 2018-03-14 A (+408d) | 60d → 61.11d | 0% → 100% | 4d → none | resources Steel [60 M3] → Bitumin Paint [4000 M2] |
| A4640 | Floor Tiling | 2016-12-06 → 2017-12-19 A (+378d) | 2016-12-18 → 2017-12-28 A (+375d) | 10d → 10.22d | 0% → 100% | 0d → none | resources Steel [50 M3] → Bitumin Paint [12901 M2] |
| A4670 | Joinery and Carpentry Works | 2017-01-08 → 2017-12-24 A (+350d) | 2017-01-23 → 2018-03-15 A (+416d) | 14d → 14.22d | 0% → 100% | 0d → none | resources Steel [70 M3] → Bitumin Paint [86134 M2] |
| A4680 | Aluminium and Glazing Works | 2017-01-24 → 2018-01-16 A (+357d) | 2017-01-31 → 2018-03-29 A (+422d) | 7d → 7.17d | 0% → 100% | 0d → none | resources Steel [30 M3] → Bitumin Paint [6657 M2] |
| A5170 | Sanitary Equipment & Fixture | 2017-02-05 → 2018-03-06 A (+394d) | 2017-02-07 → 2018-04-05 A (+422d) | 3d → 3.11d | 0% → 100% | 0d → none | resources Steel [10 M3] → Bitumin Paint [8960 M2] |
| A4710 | Lighting Points and Fittings | 2017-02-01 → 2018-04-03 A (+426d) | 2017-02-04 → 2018-04-26 (+446d) | 3d → 3.06d | 0% → 85% | 0d → -379.56d | resources Steel [10 M3] → Bitumin Paint [8570 M2] |
| A4660 | Wooden Flooring | 2016-12-31 → 2018-04-26 (+481d) | 2017-01-07 → 2018-05-03 (+481d) |  |  | 0d → -379d | resources Steel [35 M3] → Bitumin Paint [12901 M2] |
| A4730 | Snagging and De-Snagging | 2017-02-08 → 2018-04-28 (+444d) | 2017-02-15 → 2018-05-07 (+446d) | 7d → 7.11d |  | 0d → -381.06d | resources Steel [20 M3] → Bitumin Paint |
| 13 | **Bill 14-P1-PRE-FUNCTION** | 2016-09-18 → 2017-03-14 (+177d) | 2017-02-12 → 2018-05-16 (+458d) |  |  |  |  |
| B14-P1PF-1stP001 | Prerequisite for Civil Works (MEP 1st , 2nd Fix and Block Works) | 2016-09-18 → 2017-03-14 A (+177d) | 2016-09-18 → 2017-03-14 A (+177d) |  | 0% → 100% | 3d → none |  |
| B14-P1PF-C001 | Installation of Celling System | 2016-10-17 → 2017-03-26 A (+160d) | 2016-11-01 → 2017-06-15 A (+226d) | 14d → 14.22d | 0% → 100% | 3d → none | resources Steel [11.45 M3]; Steel [80 M3] → Bitumin Paint [245798 M2] |
| B5-UPSD-C191 | Area Preparation and Enabling Works | 2016-09-21 → 2017-04-11 A (+202d) | 2016-10-16 → 2017-04-23 A (+189d) | 21d → 21.33d | 0% → 100% | 3d → none | resources Steel [17.18 M3] → Bitumin Paint |
| B14-P1PF-2ndP002 | MEP Ceiling Closure Clearance | 2016-11-02 → 2017-05-01 A (+180d) | 2016-11-09 → 2017-05-01 A (+173d) | 7d → 7.17d | 0% → 100% | 3d → none | resources Steel [5.73 M3] → Bitumin Paint |
| B14-P1PF-C003 | Paint Works | 2016-12-06 → 2017-06-05 A (+181d) | 2017-01-10 → 2017-09-12 A (+245d) | 30d → 30.56d | 0% → 100% | 3d → none | resources Steel [24.55 M3]; Steel [63 M3] → Bitumin Paint [25759 M2] |
| B14-P1PF-C002 | Ceiling Closure | 2016-11-10 → 2017-06-29 A (+231d) | 2016-11-26 → 2017-07-31 A (+247d) | 14d → 14.28d | 0% → 100% | 3d → none | resources Steel [11.45 M3]; Steel [76 M3] → Bitumin Paint [245798 M2] |
| B14-P1PF-C005 | Installation of Wooden wall panelling | 2016-12-10 → 2017-07-03 A (+205d) | 2016-12-26 → 2018-01-24 A (+394d) | 14d → 14.22d | 0% → 100% | 9d → none | resources Steel [11.45 M3]; Steel [10 M3] → Bitumin Paint [172310 M2] |
| B5-UPSD-C181 | Handing Over Process | 2016-09-18 → 2017-08-09 A (+325d) | 2016-09-20 → 2017-08-10 A (+324d) | 3d → 3.11d | 0% → 100% | 3d → none | resources Steel [5.73 M3] → Bitumin Paint |
| B14-P1PF-3rdP003 | Flooring | 2016-11-27 → 2017-12-06 A (+374d) | 2016-12-05 → 2017-12-19 A (+379d) | 7d → 7.17d | 0% → 100% | 3d → none | resources Steel [5.73 M3] → Bitumin Paint [10000 M2] |
| B14-P1PF-C006 | Installation of Light Fittings | 2017-01-19 → 2018-02-19 A (+396d) | 2017-02-04 → 2018-03-06 A (+395d) | 14d → 14.28d | 0% → 100% | 3d → none | resources Steel [11.45 M3]; Steel [15 M3] → Bitumin Paint [20636 M2] |
| B14-P1PF-C011 | Aluminium Works | 2016-12-15 → 2018-03-01 A (+441d) | 2016-12-31 → 2018-03-14 A (+438d) | 14d → 14.28d | 0% → 100% | 5d → none | resources Steel [11.45 M3]; Steel [6 M3] → Bitumin Paint [12000 M2] |
| B14-P1PF-C004 | Installation of Metal Skirting | 2016-12-15 → 2018-03-14 A (+454d) | 2016-12-22 → 2018-04-12 A (+476d) | 7d → 7.17d | 0% → 100% | 12d → none | resources Steel [5.73 M3]; Steel [6 M3] → Bitumin Paint [7095 M2] |
| B14-P1PF-C007 | Installation of Metal panelling | 2016-12-06 → 2018-03-15 A (+464d) | 2016-12-14 → 2018-03-24 A (+465d) | 7d → 7.17d | 0% → 100% | 5d → none | resources Steel [5.73 M3]; Steel [6 M3] → Bitumin Paint [43652 M2] |
| B14-P1PF-C008 | Installation of Wall Covering | 2017-01-01 → 2018-03-29 A (+452d) | 2017-01-08 → 2018-04-26 (+473d) | 7d → 7.17d | 0% → 90% | 5d → -372.7d | resources Steel [5.73 M3]; Steel [6 M3] → Bitumin Paint [48276 M2] |
| B14-P1PF-C009 | Installation of Glazing Works | 2017-01-11 → 2018-04-04 A (+448d) | 2017-01-18 → 2018-04-30 (+467d) | 7d → 7.17d | 0% → 61% | 3d → -389.61d | resources Steel [5.73 M3]; Steel [6 M3] → Bitumin Paint [105858 M2] |
| B14-P1PF-C010 | Installation of Carpet | 2017-01-19 → 2018-04-30 (+466d) | 2017-01-26 → 2018-05-08 (+467d) |  |  | 10d → -389.61d | resources Steel [5.73 M3]; Steel [6 M3] → Bitumin Paint [240198 M2] |
| B14-P1PF-S012 | Snagging and De-Snagging | 2017-02-05 → 2018-05-08 (+457d) | 2017-02-12 → 2018-05-16 (+458d) | 7d → 7.11d |  | 3d → -389.61d | resources Steel [5.73 M3]; Steel [14 M3] → Bitumin Paint |
| 14 | **Bill 15-P1-REST ROOMS (PRE-FUNTION)** | 2016-09-18 → 2017-04-10 (+204d) | 2017-02-12 → 2018-05-05 (+447d) |  |  |  |  |
| B15-P1RPF-1stP001 | Prerequisite for Civil Works (MEP 1st , 2nd Fix and Block Works) | 2016-09-18 → 2017-04-10 A (+204d) | 2016-09-18 → 2017-04-10 A (+204d) |  | 0% → 100% | 3d → none |  |
| B5-UPSD-C211 | Area Preparation and Enabling Works | 2016-09-21 → 2017-04-18 A (+209d) | 2016-10-08 → 2017-04-30 A (+204d) | 14d → 14.22d | 0% → 100% | 3d → none | resources Steel [11.45 M3] → Bitumin Paint |
| B5-UPSD-C201 | Handing Over Process | 2016-09-18 → 2017-05-01 A (+225d) | 2016-09-20 → 2017-05-01 A (+223d) | 3d → 3.11d | 0% → 100% | 3d → none | resources Steel [5.73 M3] → Bitumin Paint |
| B15-P1RPF-2ndP002 | MEP Ceiling Closure Clearance | 2016-11-02 → 2017-05-08 A (+187d) | 2016-11-09 → 2017-05-09 A (+181d) | 7d → 7.11d | 0% → 100% | 3d → none | resources Steel [5.73 M3] → Bitumin Paint |
| B15-P1RPF-C001 | Installation of Celling System | 2016-10-09 → 2017-05-09 A (+212d) | 2016-11-01 → 2017-09-10 A (+313d) | 21d → 21.44d | 0% → 100% | 3d → none | resources Steel [17.18 M3]; Steel [14 M3] → Bitumin Paint [3640 M2] |
| B15-P1RPF-C003 | Paint Works | 2016-12-15 → 2017-06-03 A (+170d) | 2017-01-18 → 2018-02-12 A (+390d) | 30d → 30.56d | 0% → 100% | 3d → none | resources Steel [24.55 M3]; Steel [28 M3] → Bitumin Paint [1512 M2] |
| B15-P1RPF-C002 | Ceiling Closure | 2016-11-10 → 2017-09-19 A (+313d) | 2016-11-26 → 2017-10-01 A (+309d) | 14d → 14.33d | 0% → 100% | 3d → none | resources Steel [11.45 M3]; Steel [14 M3] → Bitumin Paint [3640 M2] |
| B15-P1RPF-3rdP003 | Flooring | 2016-11-27 → 2017-11-02 A (+340d) | 2016-12-14 → 2017-11-15 A (+336d) | 14d → 14.33d | 0% → 100% | 3d → none | resources Steel [11.45 M3] → Bitumin Paint [5000 M2] |
| B15-P1RPF-C005 | Installation of Doors & Ironmongery | 2017-01-11 → 2017-11-23 A (+316d) | 2017-01-18 → 2018-01-11 A (+358d) | 7d → 7.17d | 0% → 100% | 10d → none | resources Steel [5.73 M3]; Steel [6 M3] → Bitumin Paint [28251 M2] |
| B15-P1RPF-C007 | Installation of Wall Covering | 2017-01-28 → 2017-12-18 A (+324d) | 2017-02-04 → 2018-04-02 A (+422d) | 7d → 7.11d | 0% → 100% | 3d → none | resources Steel [4.09 M3]; Steel [6 M3] → Bitumin Paint [14924 M2] |
| B15-P1RPF-C008 | Apply of Sibu Finish | 2016-11-27 → 2017-12-21 A (+389d) | 2016-12-05 → 2018-04-16 A (+497d) | 7d → 7.17d | 0% → 100% | 33d → none | resources Steel [5.73 M3]; Steel [6 M3] → Bitumin Paint [34331 M2] |
| B15-P1RPF-C004 | Installation of Mirror | 2017-01-28 → 2017-12-26 A (+332d) | 2017-02-04 → 2018-01-17 A (+347d) | 7d → 7.11d | 0% → 100% | 4d → none | resources Steel [5.73 M3]; Steel [6 M3] → Bitumin Paint [39331 M2] |
| B15-P1RPF-C009 | Installation of Sanitary Ware | 2017-01-19 → 2018-02-15 A (+392d) | 2017-01-26 → 2018-03-12 A (+410d) | 7d → 7.17d | 0% → 100% | 3d → none | resources Steel [5.73 M3]; Steel [6 M3] → Bitumin Paint [16498 M2] |
| B15-P1RPF-C006 | Installation of Light Fittings | 2016-12-06 → 2018-03-11 A (+460d) | 2016-12-22 → 2018-04-26 (+490d) | 14d → 14.22d | 0% → 95% | 33d → -372.7d | resources Steel [11.45 M3]; Steel [6 M3] → Bitumin Paint [2720 M2] |
| B15-P1RPF-C010 | Snagging and De-Snagging | 2017-02-05 → 2018-04-26 (+445d) | 2017-02-12 → 2018-05-05 (+447d) | 7d → 7.17d |  | 3d → -379.17d | resources Steel [11.45 M3]; Steel [6 M3] → Bitumin Paint |
| 15 | **Bill 32 Work Play Suite** | 2016-10-16 → 2017-12-06 (+416d) | 2017-02-15 → 2017-12-07 (+295d) |  |  |  |  |
| A5860 | Area Clearance Process | 2016-10-16 → 2017-12-06 A (+416d) | 2016-10-17 → 2017-12-07 A (+416d) | 2d → 2.11d | 0% → 100% | 0d → none | resources Steel [1.64 M3] → Bitumin Paint |
| A5870 | Measurement , Framing and Enabling Works | 2016-10-18 → 2017-12-06 A (+414d) | 2016-11-02 → 2017-12-07 A (+400d) | 14d → 14.28d | 0% → 100% | 0d → none | resources Steel [63 M3] → Bitumin Paint |
| A5880 | Installation of Ceiling System | 2016-11-03 → 2017-12-06 A (+398d) | 2016-11-10 → 2017-12-07 A (+392d) | 7d → 7.17d | 0% → 100% | 0d → none | resources Steel [80 M3] → Bitumin Paint |
| A5890 | MEP Celing Closure Clearance | 2016-11-12 → 2017-12-06 A (+389d) | 2016-11-14 → 2017-12-07 A (+388d) |  | 0% → 100% | 0d → none | resources Steel [6 M3] → Bitumin Paint |
| A5900 | Ceiling Closure | 2016-11-15 → 2017-12-06 A (+386d) | 2016-11-22 → 2017-12-07 A (+380d) | 7d → 7.17d | 0% → 100% | 0d → none | resources Steel [70 M3] → Bitumin Paint |
| A5910 | Screed | 2016-11-23 → 2017-12-06 A (+378d) | 2016-11-26 → 2017-12-07 A (+376d) | 3d → 3.06d | 0% → 100% | 0d → none | resources none → Bitumin Paint |
| A5920 | Wall Cladding | 2016-11-27 → 2017-12-06 A (+374d) | 2016-12-05 → 2017-12-07 A (+367d) | 7d → 7.11d | 0% → 100% | 0d → none | resources Steel [50 M3] → Bitumin Paint |
| A5930 | Floor Tiling | 2016-12-06 → 2017-12-06 A (+365d) | 2016-12-14 → 2017-12-07 A (+358d) | 7d → 7.11d | 0% → 100% | 0d → none | resources Steel [60 M3] → Bitumin Paint |
| A5940 | Wooden Wall Panelling | 2016-12-15 → 2017-12-06 A (+356d) | 2016-12-22 → 2017-12-07 A (+350d) | 7d → 7.17d | 0% → 100% | 0d → none | resources Steel [50 M3] → Bitumin Paint |
| A5950 | Wooden Flooring | 2016-12-24 → 2017-12-06 A (+347d) | 2016-12-31 → 2017-12-07 A (+341d) | 7d → 7.17d | 0% → 100% | 0d → none | resources Steel [35 M3] → Bitumin Paint |

| ID | Task | Start | Finish | Duration | Complete | Total float | Other |
| --- | --- | --- | --- | --- | --- | --- | --- |
| A5960 | Joinery and Carpentry Works | 2017-01-01 → 2017-12-06 A (+339d) | 2017-01-16 → 2017-12-07 A (+325d) | 14d → 14.22d | 0% → 100% | 0d → none | resources Steel [70 M3] → Bitumin Paint |
| A5970 | Aluminium and Glazing Works | 2017-01-17 → 2017-12-06 A (+323d) | 2017-01-28 → 2017-12-07 A (+313d) | 10d → 10.22d | 0% → 100% | 0d → none | resources Steel [30 M3] → Bitumin Paint |
| A5980 | Doors , Frames , Ironmongery and Hardware | 2017-01-29 → 2017-12-06 A (+311d) | 2017-01-31 → 2017-12-07 A (+310d) |  | 0% → 100% | 0d → none | resources Steel [9 M3] → Bitumin Paint |
| A5990 | Wall Covering | 2017-01-29 → 2017-12-06 A (+311d) | 2017-01-31 → 2017-12-07 A (+310d) |  | 0% → 100% | 0d → none | resources Steel [15 M3] → Bitumin Paint |
| A6000 | Lighting Points and Fittings | 2017-01-29 → 2017-12-06 A (+311d) | 2017-02-02 → 2017-12-07 A (+308d) | 5d → 5.11d | 0% → 100% | 0d → none | resources Steel [10 M3] → Bitumin Paint |
| A6010 | Paint Works | 2016-11-23 → 2017-12-06 A (+378d) | 2017-02-02 → 2017-12-07 A (+308d) | 60d → 61.17d | 0% → 100% | 0d → none | resources Steel [120 M3] → Bitumin Paint |
| A6020 | Sanitary Equipment & Fixture | 2017-02-01 → 2017-12-06 A (+308d) | 2017-02-06 → 2017-12-07 A (+304d) | 5d → 5.11d | 0% → 100% | 1d → none | resources Steel [10 M3] → Bitumin Paint |
| A6030 | Carpet / Vinyle / Rubber | 2017-02-04 → 2017-12-06 A (+305d) | 2017-02-07 → 2017-12-07 A (+303d) |  | 0% → 100% | 0d → none | resources Steel [9 M3] → Bitumin Paint |
| A6040 | Snagging and De-Snagging | 2017-02-08 → 2017-12-06 A (+301d) | 2017-02-15 → 2017-12-07 A (+295d) | 7d → 7.17d | 0% → 100% | 0d → none | resources Steel [28 M3] → Bitumin Paint |
| A5850 | Prerequisite for Civil Works (MEP 1st , 2nd Fix and Block Works) | 2016-10-16 → 2017-12-07 A (+417d) | 2016-10-16 → 2017-12-07 A (+417d) |  | 0% → 100% | 0d → none |  |
| 19 | **Bill 33-P1-SCREENING ROOM** | 2016-09-18 → 2017-01-26 (+130d) | 2017-02-13 → 2018-06-25 (+497d) |  |  |  |  |
| B33-P1SR-1stP001 | Prerequisite for Civil Works (MEP 1st , 2nd Fix and Block Works) | 2016-09-18 → 2017-01-26 A (+130d) | 2016-09-18 → 2017-01-26 A (+130d) |  | 0% → 100% | 2d → none |  |
| B33-P1SR-C001 | Installation of Celling System | 2016-10-09 → 2017-01-31 A (+114d) | 2016-11-01 → 2017-12-18 A (+412d) | 21d → 21.39d | 0% → 100% | 2d → none | resources Steel [17.18 M3]; Steel [182 M3] → Bitumin Paint [117473 M2] |
| B5-UPSD-C291 | Area Preparation and Enabling Works | 2016-09-21 → 2017-01-31 A (+132d) | 2016-10-08 → 2017-03-01 A (+144d) | 14d → 14.28d | 0% → 100% | 2d → none | resources Steel [11.45 M3] → Bitumin Paint |
| B33-P1SR-2ndP002 | MEP Ceiling Closure Clearance | 2016-11-02 → 2017-07-30 A (+270d) | 2016-11-05 → 2017-07-31 A (+268d) | 3d → 3.06d | 0% → 100% | 2d → none | resources Steel [2.45 M3] → Bitumin Paint |
| B33-P1SR-C002 | Ceiling Closure | 2016-11-06 → 2017-07-30 A (+266d) | 2016-11-21 → 2018-01-15 A (+420d) | 14d → 14.28d | 0% → 100% | 2d → none | resources Steel [200 M3] → Bitumin Paint [117473 M2] |
| B33-P1SR-C017 | Installation of Steel wall panelling | 2016-12-03 → 2017-09-02 A (+273d) | 2016-12-19 → 2017-12-28 A (+374d) | 14d → 14.22d | 0% → 100% | 20d → none | resources Steel [11.45 M3]; Steel [28 M3] → Bitumin Paint [6000 M2] |
| B33-P1SR-C007 | Installation of Doors & Ironmongery | 2017-01-04 → 2017-11-21 A (+321d) | 2017-01-09 → 2018-02-08 A (+395d) | 5d → 5.11d | 0% → 100% | 2d → none | resources Steel [5.73 M3]; Steel [30 M3] → Bitumin Paint [55414 M2] |
| B33-P1SR-C003 | Paint Works | 2016-11-28 → 2017-12-26 A (+393d) | 2017-01-03 → 2018-05-05 (+487d) | 30d → 30.56d | 0% → 90% | 2d → -431.11d | resources Steel [24.55 M3]; Steel [152 M3] → Bitumin Paint [27500 M2] |
| B33-P1SR-3rdP003 | Flooring | 2016-11-22 → 2018-04-26 (+520d) | 2016-11-27 → 2018-05-01 (+520d) |  |  | 2d → -377d | resources Steel [4.09 M3] → Bitumin Paint [5000 M2] |
| B33-P1SR-C004 | Installation of Wall Tiling | 2016-12-03 → 2018-04-26 (+509d) | 2016-12-10 → 2018-05-03 (+509d) |  |  | 13d → -423.11d | resources Steel [5.73 M3]; Steel [60 M3] → Bitumin Paint [7000 M2] |
| B33-P1SR-C011 | Installation of Wooden wall panelling | 2016-12-03 → 2018-04-26 (+509d) | 2016-12-19 → 2018-05-12 (+509d) |  |  | 20d → -416.11d | resources Steel [11.45 M3]; Steel [28 M3] → Bitumin Paint [6000 M2] |
| B5-UPSD-C281 | Handing Over Process | 2016-09-18 → 2018-04-26 (+585d) | 2016-09-20 → 2018-04-30 (+587d) | 3d → 3.11d |  | 2d → -389.11d | resources Steel [5.73 M3] → Bitumin Paint |
| B33-P1SR-C015 | Installation of Joinery Works | 2016-12-12 → 2018-05-05 (+509d) | 2016-12-27 → 2018-05-20 (+509d) |  |  | 13d → -423.11d | resources Steel [11.45 M3]; Steel [28 M3] → Bitumin Paint [288781 M2] |
| B33-P1SR-C005 | Installation of Metal Skirting | 2017-01-10 → 2018-05-21 (+496d) | 2017-01-15 → 2018-05-26 (+496d) |  |  | 11d → -414.11d | resources Steel [5.73 M3]; Steel [28 M3] → Bitumin Paint [1397 M2] |
| B33-P1SR-C006 | Installation of Mirror | 2017-01-10 → 2018-05-21 (+496d) | 2017-01-15 → 2018-05-26 (+496d) |  |  | 11d → -414.11d | resources Steel [5.73 M3]; Steel [12 M3] → Bitumin Paint [4000 M2] |
| B33-P1SR-C008 | Installation of Light Fittings | 2017-01-10 → 2018-05-21 (+496d) | 2017-01-17 → 2018-05-28 (+496d) |  |  | 2d → -423.11d | resources Steel [5.73 M3]; Steel [50 M3] → Bitumin Paint [16224 M2] |
| B33-P1SR-C009 | Installation of Timber Flooring | 2017-01-18 → 2018-05-29 (+496d) | 2017-01-25 → 2018-06-05 (+496d) |  |  | 2d → -423.11d | resources Steel [5.73 M3]; Steel [42 M3] → Bitumin Paint [2000 M2] |
| B33-P1SR-C012 | Installation of Floor Tiling | 2017-01-18 → 2018-05-29 (+496d) | 2017-01-25 → 2018-06-05 (+496d) |  |  | 2d → -423.11d | resources Steel [5.73 M3]; Steel [28 M3] → Bitumin Paint [31299 M2] |
| B33-P1SR-C010 | Installation of Wall Covering | 2017-01-26 → 2018-06-06 (+496d) | 2017-01-31 → 2018-06-11 (+496d) |  |  | 2d → -423.11d | resources Steel [4.09 M3]; Steel [20 M3] → Bitumin Paint [5000 M2] |
| B33-P1SR-C013 | Installation of Glazing Works | 2017-01-26 → 2018-06-06 (+496d) | 2017-01-31 → 2018-06-11 (+496d) |  |  | 2d → -423.11d | resources Steel [4.09 M3]; Steel [28 M3] → Bitumin Paint [15523 M2] |
| B33-P1SR-C014 | Installation of Sanitary Ware | 2017-01-26 → 2018-06-06 (+496d) | 2017-01-31 → 2018-06-11 (+496d) |  |  | 2d → -423.11d | resources Steel [4.09 M3]; Steel [35 M3] → Bitumin Paint [5000 M2] |
| B33-P1SR-C018 | Installation of Carpet | 2017-02-01 → 2018-06-12 (+496d) | 2017-02-05 → 2018-06-16 (+496d) |  |  | 2d → -423.11d | resources Steel [2.45 M3]; Steel [4 M3] → Bitumin Paint [167858 M2] |
| B33-P1SR-C019 | Installation of Vinyl | 2017-02-01 → 2018-06-12 (+496d) | 2017-02-05 → 2018-06-16 (+496d) |  |  | 2d → -423.11d | resources Steel [2.45 M3]; Steel [2 M3] → Bitumin Paint [2000 M2] |
| B33-P1SR-S020 | Snagging and De-Snagging | 2017-02-06 → 2018-06-17 (+496d) | 2017-02-13 → 2018-06-25 (+497d) | 7d → 7.11d |  | 2d → -423.11d | resources Steel [5.73 M3]; Steel [14 M3] → Bitumin Paint |
| 11 | **BILL 37 - 7F - PUBLIC TOILETS** | 2016-10-03 → 2017-06-22 (+262d) | 2017-02-15 → 2018-06-12 (+482d) |  |  |  |  |
| A5360 | Prerequisite for Civil Works (MEP 1st , 2nd Fix and Block Works) | 2016-10-03 → 2017-06-22 A (+262d) | 2016-10-03 → 2017-06-22 A (+262d) |  | 0% → 100% | 2d → none |  |
| A5380 | Measurement , Framing and Enabling Works | 2016-10-05 → 2017-06-25 A (+263d) | 2016-10-20 → 2017-08-05 A (+289d) | 14d → 14.22d | 0% → 100% | 2d → none | resources Steel [63 M3] → Bitumin Paint [2000 M2] |
| A5420 | Screed | 2016-11-20 → 2017-07-06 A (+228d) | 2016-11-24 → 2017-07-30 A (+248d) | 5d → 5.11d | 0% → 100% | 0d → none | resources none → Bitumin Paint [7000 M2] |
| A5440 | Floor Tiling | 2016-12-08 → 2017-07-09 A (+213d) | 2016-12-20 → 2017-09-14 A (+268d) | 10d → 10.17d | 0% → 100% | 0d → none | resources Steel [50 M3] → Bitumin Paint [14507 M2] |
| A5430 | Wall Cladding | 2016-11-26 → 2017-07-10 A (+226d) | 2016-12-07 → 2018-04-26 (+505d) | 10d → 10.17d | 0% → 95% | 0d → -372.5d | resources Steel [60 M3] → Bitumin Paint [34125 M2] |
| A5390 | Installation of Ceiling System | 2016-10-24 → 2017-07-11 A (+260d) | 2016-11-03 → 2018-03-01 A (+483d) | 10d → 10.17d | 0% → 100% | 0d → none | resources Steel [80 M3] → Bitumin Paint [24075 M2] |
| A5370 | Area Clearance Process | 2016-10-03 → 2017-07-12 A (+282d) | 2016-10-04 → 2017-07-24 A (+293d) | 2d → 2.11d | 0% → 100% | 2d → none | resources Steel [1.64 M3] → Bitumin Paint |
| A5400 | MEP Celing Closure Clearance | 2016-11-05 → 2017-07-22 A (+259d) | 2016-11-07 → 2017-07-27 A (+262d) |  | 0% → 100% | 0d → none | resources Steel [4.09 M3] → Bitumin Paint |
| A5410 | Ceiling Closure | 2016-11-08 → 2017-08-28 A (+293d) | 2016-11-19 → 2018-03-04 A (+470d) | 10d → 10.22d | 0% → 100% | 0d → none | resources Steel [80 M3] → Bitumin Paint [24075 M2] |
| A5490 | Aluminium and Glazing Works | 2017-01-26 → 2017-11-06 A (+284d) | 2017-02-02 → 2018-05-14 (+466d) | 7d → 7.11d | 0% → 95% | 0d → -390.65d | resources Steel [30 M3] → Bitumin Paint [18036 M2] |
| A5500 | Doors , Frames , Ironmongery and Hardware | 2017-02-04 → 2018-03-07 A (+396d) | 2017-02-06 → 2018-03-15 A (+402d) | 3d → 3.11d | 0% → 100% | 0d → none | resources Steel [9 M3] → Bitumin Paint [14172 M2] |
| A5470 | Joinery and Carpentry Works | 2017-01-10 → 2018-03-26 A (+440d) | 2017-01-25 → 2018-05-14 (+474d) | 14d → 14.33d | 0% → 80% | 0d → -387.3d | resources Steel [70 M3] → Bitumin Paint [134302 M2] |
| A5450 | Wooden Wall Panelling | 2016-12-21 → 2018-04-05 A (+470d) | 2017-01-01 → 2018-05-02 (+486d) | 10d → 10.22d | 0% → 46% | 0d → -384.5d | resources Steel [50 M3] → Bitumin Paint [20291 M2] |
| A5480 | Paint Works | 2016-11-20 → 2018-04-08 A (+504d) | 2017-01-30 → 2018-06-03 (+489d) | 60d → 61.17d | 0% → 46% | 7d → -412.11d | resources Steel [60 M3] → Bitumin Paint [25000 M2] |
| A5520 | Lighting Points and Fittings | 2017-02-04 → 2018-04-26 (+446d) | 2017-02-07 → 2018-04-30 (+447d) |  |  | 0d → -383.11d | resources Steel [14 M3] → Bitumin Paint [14068 M2] |
| A5460 | Wooden Flooring | 2017-01-02 → 2018-05-02 (+485d) | 2017-01-09 → 2018-05-10 (+486d) |  |  | 0d → -384.5d | resources Steel [35 M3] → Bitumin Paint [14507 M2] |
| A5510 | Wall Covering | 2017-02-04 → 2018-05-14 (+464d) | 2017-02-06 → 2018-05-17 (+465d) |  |  | 0d → -390.65d | resources Steel [15 M3] → Bitumin Paint [20000 M2] |
| A5530 | Snagging and De-Snagging | 2017-02-08 → 2018-06-04 (+481d) | 2017-02-15 → 2018-06-12 (+482d) | 7d → 7.11d |  | 0d → -412.11d | resources Steel [28 M3] → Bitumin Paint |
| 12 | **BILL 38 - UG - GROCERY - TOWER A** | 2016-10-16 → 2017-07-01 (+258d) | 2017-02-15 → 2018-05-20 (+459d) |  |  |  |  |
| A5600 | Prerequisite for Civil Works (MEP 1st , 2nd Fix and Block Works) | 2016-10-16 → 2017-07-01 A (+258d) | 2016-10-16 → 2017-07-01 A (+258d) |  | 0% → 100% | 0d → none |  |
| A5610 | Area Clearance Process | 2016-10-16 → 2017-07-29 A (+286d) | 2016-10-17 → 2017-11-02 A (+381d) | 2d → 2.11d | 0% → 100% | 0d → none | resources Steel [1.64 M3] → Bitumin Paint |
| A5620 | Measurement , Framing and Enabling Works | 2016-10-18 → 2017-08-24 A (+310d) | 2016-11-02 → 2017-10-29 A (+361d) | 14d → 14.22d | 0% → 100% | 0d → none | resources Steel [63 M3] → Bitumin Paint [2000 M2] |
| A5660 | Screed | 2016-11-23 → 2017-09-27 A (+308d) | 2016-11-26 → 2017-10-01 A (+309d) |  | 0% → 100% | 0d → none | resources none → Bitumin Paint [7000 M2] |
| A5670 | Wall Cladding | 2016-11-27 → 2017-09-27 A (+304d) | 2016-12-05 → 2017-10-04 A (+303d) | 7d → 7.11d | 0% → 100% | 0d → none | resources Steel [50 M3] → Bitumin Paint [4000 M2] |
| A5640 | MEP Celing Closure Clearance | 2016-11-12 → 2017-10-01 A (+323d) | 2016-11-14 → 2017-10-01 A (+321d) | 3d → 3.06d | 0% → 100% | 0d → none | resources Steel [6 M3] → Bitumin Paint |
| A5630 | Installation of Ceiling System | 2016-11-03 → 2017-10-03 A (+334d) | 2016-11-10 → 2017-10-21 A (+345d) | 7d → 7.11d | 0% → 100% | 0d → none | resources Steel [80 M3] → Bitumin Paint [35001 M2] |
| A5650 | Ceiling Closure | 2016-11-15 → 2017-10-24 A (+343d) | 2016-11-22 → 2017-11-19 A (+362d) | 7d → 7.17d | 0% → 100% | 0d → none | resources Steel [70 M3] → Bitumin Paint [35001 M2] |
| A5710 | Joinery and Carpentry Works | 2017-01-01 → 2017-11-21 A (+324d) | 2017-01-16 → 2018-03-15 A (+423d) | 14d → 14.28d | 0% → 100% | 0d → none | resources Steel [70 M3] → Bitumin Paint [162754 M2] |
| A5730 | Doors , Frames , Ironmongery and Hardware | 2017-01-29 → 2017-11-22 A (+297d) | 2017-01-31 → 2018-03-14 A (+407d) | 3d → 3.11d | 0% → 100% | 0d → none | resources Steel [9 M3] → Bitumin Paint [73609 M2] |
| A5680 | Floor Tiling | 2016-12-06 → 2017-12-07 A (+366d) | 2016-12-14 → 2017-12-21 A (+372d) | 7d → 7.17d | 0% → 100% | 0d → none | resources Steel [60 M3] → Bitumin Paint [12451 M2] |
| A5780 | Paint Works | 2016-11-23 → 2018-02-15 A (+449d) | 2017-02-02 → 2018-04-29 (+451d) | 60d → 61.17d | 0% → 95% | 0d → -386.17d | resources Steel [120 M3] → Bitumin Paint [15241 M2] |
| A5740 | Lighting Points and Fittings | 2017-01-29 → 2018-03-18 A (+413d) | 2017-02-02 → 2018-04-26 (+448d) | 5d → 5.11d | 0% → 90% | 0d → -383.67d | resources Steel [10 M3] → Bitumin Paint [4272 M2] |
| A5690 | Wooden Wall Panelling | 2016-12-15 → 2018-03-22 A (+462d) | 2016-12-22 → 2018-04-05 A (+469d) | 7d → 7.17d | 0% → 100% | 0d → none | resources Steel [50 M3] → Bitumin Paint [12451 M2] |
| A5700 | Wooden Flooring | 2016-12-24 → 2018-03-22 A (+453d) | 2016-12-31 → 2018-03-29 A (+453d) | 7d → 7.17d | 0% → 100% | 0d → none | resources Steel [35 M3] → Bitumin Paint [12451 M2] |

| ID | Task | Start | Finish | Duration | Complete | Total float | Predecessors | Other |
| --- | --- | --- | --- | --- | --- | --- | --- | --- |
| A5720 | Aluminium and Glazing Works | 2017-01-17 → 2018-03-28 A (+435d) | 2017-01-28 → 2018-05-03 (+460d) | 10d → 10.11d | 0% → 60% | 0d → -378.5d |  | resources Steel [30 M3] → Bitumin Paint [35124 M2] |
| A5760 | Wall Covering | 2017-01-29 → 2018-04-17 A (+443d) | 2017-01-31 → 2018-05-06 (+460d) | 3d → 3.11d | 0% → 37% | 0d → -392.62d |  | resources Steel [15 M3] → Bitumin Paint [25413 M2] |
| A5750 | Carpet / Vinyle / Rubber | 2017-02-04 → 2018-04-30 (+450d) | 2017-02-07 → 2018-05-03 (+450d) |  |  | 0d → -386.17d |  | resources Steel [9 M3] → Bitumin Paint [21882 M2] |
| A5790 | Sanitary Equipment & Fixture | 2017-02-01 → 2018-05-06 (+459d) | 2017-02-06 → 2018-05-12 (+460d) |  |  | 1d → -392.62d |  | resources Steel [10 M3] → Bitumin Paint [8719 M2] |
| A5770 | Snagging and De-Snagging | 2017-02-08 → 2018-05-12 (+458d) | 2017-02-15 → 2018-05-20 (+459d) | 7d → 7.17d |  | 0d → -392.62d |  | resources Steel [28 M3] → Bitumin Paint |
| 6 | **Variation No,009 Milestones** | 2016-07-04 → 2016-07-03 (-1d) | 2016-11-27 → 2018-04-26 (+515d) |  |  |  |  |  |
| A1000 | Reciept of Engineering Instruction | 2016-07-04 A → 2016-07-03 A (-1d) | 2016-07-04 A → 2016-07-03 A (-1d) |  |  |  |  |  |
| 1 | **Design Freeze** | 2016-07-05 → 2016-08-21 (+47d) | 2016-07-05 → 2016-08-28 (+54d) |  |  |  |  |  |
| A2260 | Design Freeze & Receipt of IFC Drawing Bill 15-P1-REST ROOMS (PRE-FUNTION) | 2016-07-05 → 2016-08-21 A (+47d) | 2016-07-05 → 2016-08-21 A (+47d) |  | 0% → 100% | 27.3d → none |  |  |
| A2270 | Design Freeze & Receipt of IFC DrawingBill 33-P1-SCREENING ROOM | 2016-07-05 → 2016-08-21 A (+47d) | 2016-07-05 → 2016-08-21 A (+47d) |  | 0% → 100% | 16.3d → none |  |  |
| A1020 | Design Freeze & Receipt of IFC Drawing BILL 17.2 - P1 - PUBLIC TOILETS | 2016-07-05 → 2016-08-28 A (+54d) | 2016-07-05 → 2016-08-28 A (+54d) |  | 0% → 100% | 16.3d → none |  |  |
| A1030 | Design Freeze & Receipt of IFC Drawing BILL 21 - P1 - KID'S CLUB | 2016-07-05 → 2016-08-28 A (+54d) | 2016-07-05 → 2016-08-28 A (+54d) |  | 0% → 100% | 16.3d → none |  |  |
| A1040 | Design Freeze & Receipt of IFC Drawing BILL 24 - 8F - GYM - TOWER C | 2016-07-05 → 2016-08-28 A (+54d) | 2016-07-05 → 2016-08-28 A (+54d) |  | 0% → 100% | 7.3d → none |  |  |
| A1050 | Design Freeze & Receipt of IFC Drawing BILL 25 - 8F - MALE AND FEMALE TOILETS FOR GYM - TOWER C | 2016-07-05 → 2016-08-28 A (+54d) | 2016-07-05 → 2016-08-28 A (+54d) |  | 0% → 100% | 7.3d → none |  |  |
| A1070 | Design Freeze & Receipt of IFC Drawing BILL 27.1 - 8F - GYM - TOWER A | 2016-07-05 → 2016-08-28 A (+54d) | 2016-07-05 → 2016-08-28 A (+54d) |  | 0% → 100% | 7.3d → none |  |  |
| A1080 | Design Freeze & Receipt of IFC Drawing BILL 27.2 - 8F - GYM - TOWER B | 2016-07-05 → 2016-08-28 A (+54d) | 2016-07-05 → 2016-08-28 A (+54d) |  | 0% → 100% | 7.3d → none |  |  |
| A1090 | Design Freeze & Receipt of IFC Drawing BILL 27.3 - 8F - GYM - TOWER D | 2016-07-05 → 2016-08-28 A (+54d) | 2016-07-05 → 2016-08-28 A (+54d) |  | 0% → 100% | 7.3d → none |  |  |
| A1880 | Design Freeze & Receipt of IFC Drawing Bill 14-P1-PRE-FUNCTION | 2016-07-05 → 2016-08-28 A (+54d) | 2016-07-05 → 2016-08-28 A (+54d) |  | 0% → 100% | 27.3d → none |  |  |
| A5310 | Design Freeze & Receipt of IFC Drawing BILL 37 - 7F - PUBLIC TOILETS | 2016-07-05 → 2016-08-28 A (+54d) | 2016-07-05 → 2016-08-28 A (+54d) |  | 0% → 100% | 16.3d → none |  |  |
| A5540 | Design Freeze & Receipt of IFC Drawing BILL 38 - UG - GROCERY - TOWER A | 2016-07-05 → 2016-08-28 A (+54d) | 2016-07-05 → 2016-08-28 A (+54d) |  | 0% → 100% | 7.3d → none |  |  |
| A5800 | Design Freeze & Receipt of IFC Drawing BILL 32 - Work Play Suite | 2016-07-05 → 2016-08-28 A (+54d) | 2016-07-05 → 2016-08-28 A (+54d) |  | 0% → 100% | 56.3d → none |  |  |
| 2 | **Site Access** | 2016-09-18 → 2016-12-28 (+101d) | 2016-10-16 → 2017-12-07 (+417d) |  |  |  |  |  |
| A1120 | Site Access BILL 17.2 - P1 - PUBLIC TOILETS | 2016-10-02 → 2016-12-28 A (+87d) | 2016-10-02 → 2016-12-28 A (+87d) |  | 0% → 100% | 2.66d → none |  | constraint start on or after 2016-10-02 → start on or after 2016-11-13 |
| A1130 | Site Access BILL 21 - P1 - KID'S CLUB | 2016-10-02 → 2016-12-28 A (+87d) | 2016-10-02 → 2016-12-28 A (+87d) |  | 0% → 100% | 3.66d → none |  | constraint start on or after 2016-10-02 → start on or after 2016-11-13 |
| A5250 | Site Access Bill 14-P1-PRE-FUNCTION | 2016-09-18 → 2016-12-28 A (+101d) | 2016-09-18 → 2016-12-28 A (+101d) |  | 0% → 100% | 2.66d → none |  | constraint start on or after 2016-09-18 → start on or after 2016-11-13 |
| A5260 | Site Access Bill 15-P1-REST ROOMS (PRE-FUNTION) | 2016-09-18 → 2016-12-28 A (+101d) | 2016-09-18 → 2016-12-28 A (+101d) |  | 0% → 100% | 2.66d → none |  | constraint start on or after 2016-09-18 → start on or after 2016-11-13 |
| A5270 | Site Access Bill 33-P1-SCREENING ROOM | 2016-09-18 → 2016-12-28 A (+101d) | 2016-09-18 → 2016-12-28 A (+101d) |  | 0% → 100% | 1.66d → none |  | constraint start on or after 2016-09-18 → start on or after 2016-11-13 |
| A5550 | Site Access BILL 38 - UG - GROCERY - TOWER A | 2016-10-16 → 2016-12-28 A (+73d) | 2016-10-16 → 2016-12-28 A (+73d) |  | 0% → 100% | -0.34d → none |  | constraint start on or after 2016-10-16 → start on or after 2016-11-13 |
| A1150 | Site Access BILL 25 - 8F - MALE AND FEMALE TOILETS FOR GYM - TOWER C | 2016-10-02 → 2017-07-10 A (+281d) | 2016-10-02 → 2017-07-10 A (+281d) |  | 0% → 100% | 4.66d → none |  | constraint start on or after 2016-10-02 → start on or after 2016-11-13 |
| A5320 | Site Access BILL 37 - 7F - PUBLIC TOILETS | 2016-10-02 → 2017-07-20 A (+291d) | 2016-10-02 → 2017-07-20 A (+291d) |  | 0% → 100% | 2.66d → none |  | constraint start on or after 2016-10-02 → start on or after 2016-11-13 |
| A1170 | Site Access BILL 27.1 - 8F - GYM - TOWER A | 2016-10-02 → 2017-08-27 A (+329d) | 2016-10-02 → 2017-08-27 A (+329d) |  | 0% → 100% | 2.66d → none |  | constraint start on or after 2016-10-02 → start on or after 2016-11-13 |
| A1180 | Site Access BILL 27.2 - 8F - GYM - TOWER B | 2016-10-02 → 2017-08-27 A (+329d) | 2016-10-02 → 2017-08-27 A (+329d) |  | 0% → 100% | 2.66d → none |  | constraint start on or after 2016-10-02 → start on or after 2016-11-13 |
| A1190 | Site Access BILL 27.3 - 8F - GYM - TOWER D | 2016-10-02 → 2017-08-27 A (+329d) | 2016-10-02 → 2017-08-27 A (+329d) |  | 0% → 100% | 2.66d → none |  | constraint start on or after 2016-10-02 → start on or after 2016-11-13 |
| A1140 | Site Access BILL 24 - 8F - GYM - TOWER C | 2016-10-02 → 2017-12-07 A (+431d) | 2016-10-02 → 2017-12-07 A (+431d) |  | 0% → 100% | 2.66d → none |  | constraint start on or after 2016-10-02 → start on or after 2016-11-13 |
| A5810 | Site Access BILL 32 - Work Play Suite | 2016-10-16 → 2017-12-07 A (+417d) | 2016-10-16 → 2017-12-07 A (+417d) |  | 0% → 100% | -0.34d → none |  | constraint start on or after 2016-10-16 → start on or after 2016-11-13 |
| 3 | **Wild Air Milestones** | 2016-11-20 → 2018-04-26 (+522d) | 2016-11-27 → 2018-04-26 (+515d) |  |  |  |  |  |
| A1220 | A/C BILL 17.2 - P1 - PUBLIC TOILETS | 2016-11-27 → 2018-04-26 (+515d) | 2016-11-27 → 2018-04-26 (+515d) |  |  | 34.3d → -515d |  | constraint start on or after 2016-11-27 → start on 2016-11-27 |
| A1230 | A/C BILL 21 - P1 - KID'S CLUB | 2016-11-27 → 2018-04-26 (+515d) | 2016-11-27 → 2018-04-26 (+515d) |  |  | 20.3d → -515d |  | constraint start on or after 2016-11-27 → start on 2016-11-27 |
| A1240 | A/C BILL 24 - 8F - GYM - TOWER C | 2016-11-27 → 2018-04-26 (+515d) | 2016-11-27 → 2018-04-26 (+515d) |  |  | 18.3d → -515d |  | constraint start on or after 2016-11-27 → start on 2016-11-27 |
| A1250 | A/C BILL 25 - 8F - MALE AND FEMALE TOILETS FOR GYM - TOWER C | 2016-11-27 → 2018-04-26 (+515d) | 2016-11-27 → 2018-04-26 (+515d) |  |  | 21.3d → -515d |  | constraint start on or after 2016-11-27 → start on 2016-11-27 |
| A1270 | A/C BILL 27.1 - 8F - GYM - TOWER A | 2016-11-27 → 2018-04-26 (+515d) | 2016-11-27 → 2018-04-26 (+515d) |  |  | 22.3d → -515d |  | constraint start on or after 2016-11-27 → start on 2016-11-27 |
| A1280 | A/C BILL 27.2 - 8F - GYM - TOWER B | 2016-11-27 → 2018-04-26 (+515d) | 2016-11-27 → 2018-04-26 (+515d) |  |  | 22.3d → -515d |  | constraint start on or after 2016-11-27 → start on 2016-11-27 |
| A1290 | A/C BILL 27.3 - 8F - GYM - TOWER D | 2016-11-27 → 2018-04-26 (+515d) | 2016-11-27 → 2018-04-26 (+515d) |  |  | 22.3d → -515d |  | constraint start on or after 2016-11-27 → start on 2016-11-27 |
| A5280 | A/C Bill 14-P1-PRE-FUNCTION | 2016-11-27 → 2018-04-26 (+515d) | 2016-11-27 → 2018-04-26 (+515d) |  |  | 24.3d → -515d |  | constraint start on or after 2016-11-27 → start on 2016-11-27 |
| A5290 | A/C Bill 15-P1-REST ROOMS (PRE-FUNTION) | 2016-11-20 → 2018-04-26 (+522d) | 2016-11-20 → 2018-04-26 (+522d) |  |  | 48.3d → -522d |  | constraint start on or after 2016-11-20 → start on 2016-11-20 |
| A5300 | A/C Bill 33-P1-SCREENING ROOM | 2016-11-27 → 2018-04-26 (+515d) | 2016-11-27 → 2018-04-26 (+515d) |  |  | 30.3d → -515d |  | constraint start on or after 2016-11-27 → start on 2016-11-27 |
| A5330 | A/C BILL 25 - BILL37 - 7F - PUBLIC TOILETS | 2016-11-27 → 2018-04-26 (+515d) | 2016-11-27 → 2018-04-26 (+515d) |  |  | 24.3d → -515d |  | constraint start on or after 2016-11-27 → start on 2016-11-27 |
| A5560 | A/C BILL 25 - 8F - MALE AND FEMALE TOILETS FOR GYM - TOWER C | 2016-11-27 → 2018-04-26 (+515d) | 2016-11-27 → 2018-04-26 (+515d) |  |  | 21.3d → -515d |  | constraint start on or after 2016-11-27 → start on 2016-11-27 |
| A5570 | A/C BILL 38 - UG - GROCERY - TOWER A | 2016-11-27 → 2018-04-26 (+515d) | 2016-11-27 → 2018-04-26 (+515d) |  |  | 18.3d → -515d |  | constraint start on or after 2016-11-27 → start on 2016-11-27 |
| A5820 | A/C BILL 32 Work Play Suite | 2016-11-27 → 2018-04-26 (+515d) | 2016-11-27 → 2018-04-26 (+515d) |  |  | 18.3d → -515d |  | constraint start on or after 2016-11-27 → start on 2016-11-27 |
| B12-UPPR-C9 | Installation of Celling System | 2016-08-29 → 2017-06-27 A (+302d) | 2016-09-25 → 2017-07-15 A (+293d) | 21d → 22d | 0% → 100% | 3d → none | B2-UPHL-1stP001, RM-SA-001, Con000, B2-UPHL-C031 → B12-UPPR-PR280, B5-UPSD-C371 | resources Steel [46 M3] → none |
| B12-UPPR-C49 | Ceiling Closure | 2016-11-08 → 2017-07-04 A (+238d) | 2016-11-19 → 2017-07-22 A (+245d) | 10d → 20d | 0% → 100% | 0d → none | MEP Celing Closure Clearance, A2640, Site Access BILL 17 - P1 - FAMILY FRIENDLY RESTAURANT → B12-UPPR-2ndP2 | resources Steel [80 M3] → none |
| B12-UPPR-C19 | Paint Works | 2016-11-20 → 2017-11-23 A (+368d) | 2017-01-30 → 2018-02-06 A (+372d) | 60d → 15d | 0% → 100% | 7d → none | B12-UPPR-C49, A2510, A2650, Site Access BILL 17 - P1 - FAMILY FRIENDLY RESTAURANT → B12-UPPR-3rdP3 | resources Steel [60 M3] → none |
| B12-UPPR-S10 | Snagging and De-Snagging | 2017-02-08 → 2018-04-29 (+445d) | 2017-02-15 → 2018-05-10 (+449d) | 7d → 10d |  | 0d → -384.1d | B12-UPPR-C19, Lighting Points and Fittings, A2380, A2340, Site Access BILL 17 - P1 - FAMILY FRIENDLY RESTAURANT → B12-UPPR-C89, B12-UPPR-C59, B12-UPPR-C29, B12-UPPR-C19 | resources Steel [28 M3] → none |
